# 住宅建设

Schedule from MS Project XML, 2004-01-01 to 2004-07-30.

## Calendars

- 标准: Mon-Fri 08:00-12:00, 13:00-17:00; Sat-Sun off.

## Resources

| Resource |
| --- |
| 混凝土承包商 |
| 精细木工承包商 |
| 围栏承包商 |
| 砖石工程承包商 |
| 总承包商 |
| 建筑师 |
| 业主 |
| 抵押贷款放款人 |
| 检查人员 |
| 电气公司 |
| 场地挖掘承包商 |
| 电气承包商 |
| 管道工程承包商 |
| 框架工程承包商 |
| 屋顶工程承包商 |
| 取暖和空调承包商 |
| 保温承包商 |
| 干饰面内墙承包商 |
| 油漆承包商 |
| 地板承包商 |
| 器具承包商 |
| 绿化承包商 |
| 家政服务 |

## Schedule

| ID | WBS | Task | Type | Duration | Start | Finish | Predecessors | Total slack | Resources | Work |
| --- | --- | --- | --- | --- | --- | --- | --- | --- | --- | --- |
| 1 | 1 | **单户住宅: 建筑师设计(280 平方米，并带有完整地下室)** |  | 152d | 2004-01-01 | 2004-07-30 |  | 0d |  | 1782.4h |
| 2 | 1.1 | **一般要求** |  | 21d | 2004-01-01 | 2004-01-29 |  | 0d |  | 230.4h |
| 3 | 1.1.1 | 最终确定计划并与业主和建筑师一起确定估计值 |  | 20d | 2004-01-01 | 2004-01-28 |  | 0d | 总承包商 [50%]; 建筑师 [50%]; 业主 [12.08%]; 抵押贷款放款人 [12.08%] | 198.42h |
| 4 | 1.1.2 | 签定合同和通知以继续进行 |  | 1d | 2004-01-29 | 2004-01-29 | 3 | 0d | 总承包商; 建筑师; 业主; 抵押贷款放款人 | 32h |
| 5 | 1.1.3 | **申请许可** |  | 0d | 2004-01-29 | 2004-01-29 |  | 0d |  |  |
| 6 | 1.1.3.1 | 获得地基许可 | milestone | 0d | 2004-01-29 | 2004-01-29 | 4 | 0d | 总承包商 |  |
| 7 | 1.1.3.2 | 获得框架许可 | milestone | 0d | 2004-01-29 | 2004-01-29 | 4 | 0d | 总承包商 |  |
| 8 | 1.1.3.3 | 获得电气许可 | milestone | 0d | 2004-01-29 | 2004-01-29 | 4 | 0d | 总承包商 |  |
| 9 | 1.1.3.4 | 获得管道许可 | milestone | 0d | 2004-01-29 | 2004-01-29 | 4 | 0d | 总承包商 |  |
| 10 | 1.1.3.5 | 获得取暖、通风和空调许可 | milestone | 0d | 2004-01-29 | 2004-01-29 | 4 | 0d | 总承包商 |  |
| 11 | 1.1.3.6 | 获得其他许可 | milestone | 0d | 2004-01-29 | 2004-01-29 | 4 | 0d | 总承包商 |  |
| 12 | 1.2 | **现场工作** |  | 3d | 2004-01-30 | 2004-02-03 |  | 0d |  | 32h |
| 13 | 1.2.1 | 清理和挖掘场地 |  | 1d | 2004-01-30 | 2004-01-30 | 6, 7, 8, 9, 11, 10 | 0d | 场地挖掘承包商 | 8h |
| 14 | 1.2.2 | 安装临时供电设施 |  | 1d | 2004-02-02 | 2004-02-02 | 13 | 0d | 电气公司 | 8h |
| 15 | 1.2.3 | 安装地下设施 |  | 1d | 2004-02-03 | 2004-02-03 | 14 | 0d | 电气承包商; 管道工程承包商 | 16h |
| 16 | 1.3 | **地基** |  | 42d | 2004-02-04 | 2004-04-01 |  | 0d |  | 280h |
| 17 | 1.3.1 | 挖掘地基 |  | 3d | 2004-02-04 | 2004-02-06 | 15 | 0d | 场地挖掘承包商 | 24h |
| 18 | 1.3.2 | 为地下室墙搭建模板 |  | 13d | 2004-02-09 | 2004-02-25 | 17 | 0d | 混凝土承包商 | 104h |
| 19 | 1.3.3 | 为地基和地下室墙浇筑混凝土 |  | 12d | 2004-02-26 | 2004-03-12 | 18 | 0d | 混凝土承包商 | 96h |
| 20 | 1.3.4 | 对地下室墙进行 7 天硬化 |  | 7d | 2004-03-15 | 2004-03-23 | 19 | 0d |  |  |
| 21 | 1.3.5 | 拆除地下室墙的模板 |  | 2d | 2004-03-24 | 2004-03-25 | 20 | 0d | 混凝土承包商 | 16h |
| 22 | 1.3.6 | 对地下室墙进行防水和保温处理 |  | 2d | 2004-03-26 | 2004-03-29 | 21 | 0d | 混凝土承包商 | 16h |
| 23 | 1.3.7 | 进行地基检查 |  | 1d | 2004-03-30 | 2004-03-30 | 22, 17 | 0d | 检查人员 | 8h |
| 24 | 1.3.8 | 回填地基 |  | 2d | 2004-03-31 | 2004-04-01 | 23 | 0d | 场地挖掘承包商 | 16h |

Notes:
- 3: AAAAAAAAAAAAAA

| ID | WBS | Task | Duration | Start | Finish | Predecessors | Total slack | Free slack | Resources | Work |
| --- | --- | --- | --- | --- | --- | --- | --- | --- | --- | --- |
| 25 | 1.4 | **搭建框架** | 22d | 2004-04-02 | 2004-05-03 |  | 0d |  |  | 176h |
| 26 | 1.4.1 | 安装第一层楼板托梁 | 2d | 2004-04-02 | 2004-04-05 | 24 | 0d |  | 框架工程承包商 | 16h |
| 27 | 1.4.2 | 安装第一层楼板 | 2d | 2004-04-06 | 2004-04-07 | 26 | 0d |  | 框架工程承包商 | 16h |
| 28 | 1.4.3 | 搭建第一层墙壁的框架 | 4d | 2004-04-08 | 2004-04-13 | 27 | 0d |  | 框架工程承包商 | 32h |
| 29 | 1.4.4 | 搭建第一层转角的框架 | 1d | 2004-04-14 | 2004-04-14 | 28 | 0d |  | 框架工程承包商 | 8h |
| 30 | 1.4.5 | 安装第二层楼板托梁 | 2d | 2004-04-15 | 2004-04-16 | 29 | 0d |  | 框架工程承包商 | 16h |
| 31 | 1.4.6 | 安装第二层楼板 | 2d | 2004-04-19 | 2004-04-20 | 30 | 0d |  | 框架工程承包商 | 16h |
| 32 | 1.4.7 | 搭建第二层墙壁的框架 | 3d | 2004-04-21 | 2004-04-23 | 31 | 0d |  | 框架工程承包商 | 24h |
| 33 | 1.4.8 | 搭建第二层转角的框架 | 2d | 2004-04-26 | 2004-04-27 | 32 | 0d |  | 框架工程承包商 | 16h |
| 34 | 1.4.9 | 完成屋顶框架的搭建 | 3d | 2004-04-28 | 2004-04-30 | 33 | 0d |  | 框架工程承包商 | 24h |
| 35 | 1.4.10 | 进行框架检查 | 1d | 2004-05-03 | 2004-05-03 | 34 | 0d |  | 检查人员 | 8h |
| 36 | 1.5 | **干燥内部** | 22d | 2004-05-03 | 2004-06-01 |  | 0d |  |  | 152h |
| 37 | 1.5.1 | 安装第一层模板 | 3d | 2004-05-04 | 2004-05-06 | 35 | 0d |  | 框架工程承包商 | 24h |
| 38 | 1.5.2 | 安装第二层模板 | 3d | 2004-05-07 | 2004-05-11 | 37 | 0d |  | 框架工程承包商 | 24h |
| 39 | 1.5.3 | 安装屋顶盖板 | 3d | 2004-05-03 | 2004-05-05 | 34 | 0d |  | 框架工程承包商 | 24h |
| 40 | 1.5.4 | 安装油毡、遮雨板和砾石 | 3d | 2004-05-19 | 2004-05-21 | 48 | 0d |  | 屋顶工程承包商 | 24h |
| 41 | 1.5.5 | 安装第一层的户门 | 1d | 2004-05-24 | 2004-05-24 | 40 | 0d |  | 框架工程承包商 | 8h |
| 42 | 1.5.6 | 安装第一层的窗户 | 3d | 2004-05-25 | 2004-05-27 | 41 | 0d |  | 框架工程承包商 | 24h |
| 43 | 1.5.7 | 安装第二层的窗户 | 3d | 2004-05-28 | 2004-06-01 | 42 | 0d |  | 框架工程承包商 | 24h |
| 44 | 1.6 | **外部完成** | 19d | 2004-06-02 | 2004-06-28 |  | 0d | 5d |  | 152h |
| 45 | 1.6.1 | 完成外部砖墙 | 16d | 2004-06-02 | 2004-06-23 | 43 | 0d |  | 砖石工程承包商 | 128h |
| 46 | 1.6.2 | 完成外部侧线 | 3d | 2004-06-24 | 2004-06-28 | 45 | 0d |  | 框架工程承包商 | 24h |
| 47 | 1.7 | **工具 Rough-Ins 及完成混凝土浇注** | 21d | 2004-05-06 | 2004-06-03 |  | 0d | 4d |  | 232h |
| 48 | 1.7.1 | 安装管道 | 5d | 2004-05-12 | 2004-05-18 | 39, 38 | 0d |  | 管道工程承包商 | 40h |
| 49 | 1.7.2 | 对安装的管道进行检查 | 1d | 2004-05-19 | 2004-05-19 | 48 | 0d |  | 检查人员 | 8h |
| 50 | 1.7.3 | 为地下室地面浇筑混凝土 | 11d | 2004-05-20 | 2004-06-03 | 49 | 0d | 33d | 混凝土承包商 | 88h |
| 51 | 1.7.4 | 安装电气设备 | 5d | 2004-05-12 | 2004-05-18 | 39, 38 | 0d |  | 电气承包商 | 40h |
| 52 | 1.7.5 | 对安装的电气设备进行检查 | 1d | 2004-05-19 | 2004-05-19 | 51 | 0d |  | 检查人员 | 8h |
| 53 | 1.7.6 | 安装取暖、通风和空调设备 | 3d | 2004-05-20 | 2004-05-24 | 52 | 0d |  | 取暖和空调承包商 | 24h |
| 54 | 1.7.7 | 对安装的取暖、通风和空调设备进行检查 | 1d | 2004-05-25 | 2004-05-25 | 53 | 0d | 24d | 检查人员 | 8h |
| 55 | 1.7.8 | 安装通讯设备(电话、电缆、计算机和报警设备等) | 2d | 2004-05-06 | 2004-05-07 | 39 | 0d | 17d | 电气承包商 | 16h |

| ID | WBS | Task | Duration | Start | Finish | Predecessors | Total slack | Free slack | Resources | Work |
| --- | --- | --- | --- | --- | --- | --- | --- | --- | --- | --- |
| 56 | 1.8 | **完成内部工作** | 30d | 2004-06-02 | 2004-07-13 |  | 0d |  |  | 408h |
| 57 | 1.8.1 | **保温** | 11d | 2004-06-02 | 2004-06-16 |  | 0d |  |  | 32h |
| 58 | 1.8.1.1 | 安装墙壁保温材料: 一层 | 1d | 2004-06-02 | 2004-06-02 | 37, 43, 55, 53, 51, 38 | 0d |  | 保温承包商 | 8h |
| 59 | 1.8.1.2 | 安装墙壁保温材料: 二层 | 1d | 2004-06-03 | 2004-06-03 | 58 | 0d | 3d | 保温承包商 | 8h |
| 60 | 1.8.1.3 | 安装屋顶保温材料: 二层 | 1d | 2004-06-15 | 2004-06-15 | 66, 59 | 0d |  | 保温承包商 | 8h |
| 61 | 1.8.1.4 | 进行保温检查 | 1d | 2004-06-16 | 2004-06-16 | 60 | 0d | 24d | 检查人员 | 8h |
| 62 | 1.8.2 | **干饰面内墙** | 9d | 2004-06-03 | 2004-06-15 |  | 0d |  |  | 80h |
| 63 | 1.8.2.1 | 安装干饰面内墙: 一层墙壁 | 2d | 2004-06-03 | 2004-06-04 | 58 | 0d |  | 干饰面内墙承包商 | 16h |
| 64 | 1.8.2.2 | 安装干饰面内墙: 一层天花板 | 2d | 2004-06-07 | 2004-06-08 | 63 | 0d |  | 干饰面内墙承包商 | 16h |
| 65 | 1.8.2.3 | 安装干饰面内墙: 二层墙壁 | 2d | 2004-06-09 | 2004-06-10 | 64, 59 | 0d |  | 干饰面内墙承包商 | 16h |
| 66 | 1.8.2.4 | 安装干饰面内墙: 二层天花板 | 2d | 2004-06-11 | 2004-06-14 | 65 | 0d |  | 干饰面内墙承包商 | 16h |
| 67 | 1.8.2.5 | 测量并抹平一层的干饰面内墙 | 1d | 2004-06-09 | 2004-06-09 | 64 | 0d |  | 干饰面内墙承包商 | 8h |
| 68 | 1.8.2.6 | 测量并抹平二层的干饰面内墙 | 1d | 2004-06-15 | 2004-06-15 | 66, 67 | 0d | 33d | 干饰面内墙承包商 | 8h |
| 69 | 1.8.3 | **刷油漆及贴墙纸** | 17d | 2004-06-10 | 2004-07-02 |  | 0d |  |  | 72h |
| 70 | 1.8.3.1 | 为一层除了入口和厨房以外的所有部分添加表面纹理 | 1d | 2004-06-10 | 2004-06-10 | 67 | 0d |  | 油漆承包商 | 8h |
| 71 | 1.8.3.2 | 为一层除了入口和厨房以外的所有部分刷油漆 | 1d | 2004-06-11 | 2004-06-11 | 70 | 0d |  | 油漆承包商 | 8h |
| 72 | 1.8.3.3 | 为一层的入口和厨房贴墙纸 | 1d | 2004-06-14 | 2004-06-14 | 71 | 0d |  | 油漆承包商 | 8h |
| 73 | 1.8.3.4 | 为二层的所有部分添加表面纹理 | 1d | 2004-06-11 | 2004-06-11 | 70 | 0d |  | 油漆承包商 | 8h |
| 74 | 1.8.3.5 | 为二层的所有部分刷油漆 | 1d | 2004-06-14 | 2004-06-14 | 73 | 0d | 34d | 油漆承包商 | 8h |
| 75 | 1.8.3.6 | 油漆外部侧线和装饰物 | 4d | 2004-06-29 | 2004-07-02 | 46 | 0d |  | 油漆承包商 | 32h |
| 76 | 1.8.4 | **橱柜** | 6d | 2004-06-15 | 2004-06-22 |  | 0d |  |  | 48h |
| 77 | 1.8.4.1 | 一层安装: 厨房橱柜 | 2d | 2004-06-15 | 2004-06-16 | 72 | 0d |  | 精细木工承包商 | 16h |
| 78 | 1.8.4.2 | 一层安装: 主卫生间和客人用卫生间橱柜 | 1d | 2004-06-17 | 2004-06-17 | 77 | 0d |  | 精细木工承包商 | 8h |
| 79 | 1.8.4.3 | 二层安装: 主卫生间和私人卫生间橱柜 | 1d | 2004-06-18 | 2004-06-18 | 78 | 0d |  | 精细木工承包商 | 8h |
| 80 | 1.8.4.4 | 安装护墙板、装饰线和装饰物 | 2d | 2004-06-21 | 2004-06-22 | 79 | 0d | 20d | 精细木工承包商 | 16h |

| ID | WBS | Task | Duration | Start | Finish | Predecessors | Total slack | Free slack | Resources | Work |
| --- | --- | --- | --- | --- | --- | --- | --- | --- | --- | --- |
| 81 | 1.8.5 | **完成管道安装** | 6d | 2004-06-17 | 2004-06-24 |  | 0d |  |  | 48h |
| 82 | 1.8.5.1 | 完成一层: 厨房管道 | 1d | 2004-06-17 | 2004-06-17 | 77, 49 | 0d |  | 管道工程承包商 | 8h |
| 83 | 1.8.5.2 | 完成一层: 主卫生间和客人用卫生间管道 | 2d | 2004-06-18 | 2004-06-21 | 82, 78 | 0d |  | 管道工程承包商 | 16h |
| 84 | 1.8.5.3 | 完成二层: 主卫生间和私人卫生间管道 | 2d | 2004-06-22 | 2004-06-23 | 83, 79 | 0d |  | 管道工程承包商 | 16h |
| 85 | 1.8.5.4 | 进行管道安装完成后的检查 | 1d | 2004-06-24 | 2004-06-24 | 84 | 0d |  | 检查人员 | 8h |
| 86 | 1.8.6 | **完成电气安装** | 3d | 2004-06-24 | 2004-06-28 |  | 0d | 1d |  | 40h |
| 87 | 1.8.6.1 | 完成一层与维护面板间的电路 | 1d | 2004-06-24 | 2004-06-24 | 84, 52 | 0d |  | 电气承包商 | 8h |
| 88 | 1.8.6.2 | 完成二层与维护面板间的电路 | 1d | 2004-06-25 | 2004-06-25 | 87 | 0d |  | 电气承包商 | 8h |
| 89 | 1.8.6.3 | 进行电气安装完成后的检查 | 1d | 2004-06-28 | 2004-06-28 | 88 | 0d | 3d | 检查人员 | 8h |
| 90 | 1.8.6.4 | 完成通讯系统的布线(包括电话、电缆、计算机和报警系统等) | 2d | 2004-06-25 | 2004-06-28 | 85 | 0d |  | 电气承包商 | 16h |
| 91 | 1.8.7 | **完成取暖、通风和空调系统的安装** | 3d | 2004-06-29 | 2004-07-01 |  | 0d |  |  | 24h |
| 92 | 1.8.7.1 | 完成一层安装: 区域 1 的取暖、通风和空调系统 | 1d | 2004-06-29 | 2004-06-29 | 90, 54 | 0d |  | 取暖和空调承包商 | 8h |
| 93 | 1.8.7.2 | 完成二层安装: 区域 2 的取暖、通风和空调系统 | 1d | 2004-06-30 | 2004-06-30 | 92 | 0d |  | 取暖和空调承包商 | 8h |
| 94 | 1.8.7.3 | 对取暖、通风和空调系统进行检查 | 1d | 2004-07-01 | 2004-07-01 | 93 | 0d |  | 检查人员 | 8h |
| 95 | 1.8.8 | **地毯、磁砖和器具** | 8d | 2004-07-02 | 2004-07-13 |  | 0d |  |  | 64h |
| 96 | 1.8.8.1 | 入口、厨房和卫生间 | 3d | 2004-07-02 | 2004-07-06 | 89, 94 | 0d |  | 地板承包商 | 24h |
| 97 | 1.8.8.2 | 铺一层的地毯 | 2d | 2004-07-07 | 2004-07-08 | 96 | 0d |  | 地板承包商 | 16h |
| 98 | 1.8.8.3 | 铺二层的地毯 | 2d | 2004-07-09 | 2004-07-12 | 97 | 0d |  | 地板承包商 | 16h |
| 99 | 1.8.8.4 | 安装器具 | 1d | 2004-07-13 | 2004-07-13 | 98 | 0d |  | 器具承包商 | 8h |
| 100 | 1.9 | **绿化和土方工作** | 12d | 2004-07-05 | 2004-07-20 |  | 0d |  |  | 56h |
| 101 | 1.9.1 | 浇注混凝土车道和人行道 | 2d | 2004-07-05 | 2004-07-06 | 75 | 0d | 5d | 混凝土承包商 | 16h |
| 102 | 1.9.2 | 安装后院围栏 | 2d | 2004-07-14 | 2004-07-15 | 99, 101 | 0d |  | 围栏承包商 | 16h |
| 103 | 1.9.3 | 铺草皮和完成绿化工作: 前院 | 2d | 2004-07-16 | 2004-07-19 | 102 | 0d |  | 绿化承包商 | 16h |
| 104 | 1.9.4 | 铺草皮和完成绿化工作: 后院 | 1d | 2004-07-20 | 2004-07-20 | 103 | 0d |  | 绿化承包商 | 8h |

| ID | WBS | Task | Duration | Start | Finish | Predecessors | Total slack | Resources | Work |
| --- | --- | --- | --- | --- | --- | --- | --- | --- | --- |
| 105 | 1.10 | **最终认可** | 8d | 2004-07-21 | 2004-07-30 |  | 0d |  | 64h |
| 106 | 1.10.1 | 为获得居住许可进行最后的检查 | 1d | 2004-07-21 | 2004-07-21 | 104, 94, 89, 85, 61, 80, 50 | 0d | 检查人员 | 8h |
| 107 | 1.10.2 | 进行清理以便入住 | 1d | 2004-07-22 | 2004-07-22 | 99, 106 | 0d | 家政服务 | 8h |
| 108 | 1.10.3 | 进行最后的浏览检查 | 1d | 2004-07-23 | 2004-07-23 | 107 | 0d | 业主 | 8h |
| 109 | 1.10.4 | 完成逐项检查清单 | 5d | 2004-07-26 | 2004-07-30 | 108 | 0d | 总承包商 | 40h |
