Schedule from MS Project XML, 2007-12-11 to 2009-02-09.

## Resources

| Resource |
| --- |
| 16协作 |
| 备料中心 |
| 导弹单元64V |
| 导弹单元FFZ200 |
| 二工段立加三轴64V |
| 工具铣床 |
| 检验 |
| 金刚镗床2A716 |
| 立式钻床 |
| 立铣 |
| 六角车床 |
| 六角车床1336P |
| 毛刺台二 |
| 毛刺台一 |
| 毛刺研磨 |
| 平面磨 |
| 钳工台 |
| 三工段车工班 |
| 三工段钳工 |
| 试验工作中心 |
| 试验间 |
| 数控车 |
| 双头仿型铣 |
| 斯贝单元80P-1（五） |
| 斯贝单元80U-1（四） |
| 斯贝单元80U-2（五） |
| 斯贝单元立车 |
| 四轴立卧加 |
| 四轴卧加 |
| 外协 |
| 万能磨OC |
| 万能铣床 |
| 卧式双轴钻床AC-02 |
| 卧铣X6H81 |
| 无设备 |
| 五轴立卧加 |
| 小型普车 |
| 肖布林150A |
| 研磨台 |
| 一工段立加三轴64V(V600) |
| 一工段数控车班 |
| 一工段四轴卧加 |
| 一工段五轴 |
| 中型普车 |
| 坐标磨 |
| 坐标镗 |

## Schedule

| ID | Task | Start | Finish | Predecessors | Complete | Resources |
| --- | --- | --- | --- | --- | --- | --- |
| 1 | 调节器内壳体 | 2008-05-30 | 2008-07-21 |  |  |  |
| 2 | 去毛刺 | 2008-06-15 | 2008-06-15 |  |  | 毛刺台二 |
| 3 | 清洗 | 2008-06-15 | 2008-06-15 | 2 |  | 毛刺台二 |
| 4 | 已完成任务 | 2008-05-30 | 2008-05-30 | 3 | 100% |  |
| 5 | 萤检 | 2008-06-15 | 2008-06-16 | 4 |  | 外协 |
| 6 | 已完成任务 | 2008-06-02 | 2008-06-02 | 5 | 100% |  |
| 7 | 铣面 钻镗孔 | 2008-06-14 | 2008-06-16 | 6 |  | 二工段立加三轴64V |
| 8 | 切槽 | 2008-06-16 | 2008-06-17 | 6, 7 |  | 五轴立卧加 |
| 9 | 铣面 钻镗孔 | 2008-06-17 | 2008-06-19 | 7, 8 |  | 五轴立卧加 |
| 10 | 研磨平面 | 2008-06-19 | 2008-06-19 | 9 |  | 研磨台 |
| 11 | 浸泡 | 2008-06-19 | 2008-06-19 | 10 |  | 试验间 |
| 12 | 超声波清洗 | 2008-06-19 | 2008-06-20 | 11 |  | 试验间 |
| 13 | 铣面钻镗孔 | 2008-06-20 | 2008-06-22 | 10, 12 |  | 五轴立卧加 |
| 14 | 铣面钻镗孔 | 2008-06-22 | 2008-06-24 | 10, 13 |  | 五轴立卧加 |
| 15 | 铣面 钻镗孔 | 2008-06-24 | 2008-06-26 | 10, 14 |  | 五轴立卧加 |
| 16 | 切槽 | 2008-06-26 | 2008-06-27 | 13, 14, 15 |  | 数控车 |
| 17 | 钻镗孔 | 2008-06-27 | 2008-06-28 | 16 |  | 五轴立卧加 [100.03%] |
| 18 | 钻镗孔 | 2008-06-28 | 2008-06-30 | 16, 17 |  | 五轴立卧加 [100.18%] |
| 19 | 铣面 | 2008-06-30 | 2008-07-01 | 16, 18 |  | 五轴立卧加 |
| 20 | 划面 | 2008-07-01 | 2008-07-02 | 16, 19 |  | 五轴立卧加 |
| 21 | 反划 | 2008-07-02 | 2008-07-02 | 16, 20 |  | 立式钻床 |
| 22 | 打磨修锉 | 2008-07-02 | 2008-07-02 | 17, 18, 19, 20, 21 |  | 钳工台 |
| 23 | 电化学去毛刺 | 2008-07-02 | 2008-07-03 | 22 |  | 毛刺台二 |
| 24 | 去毛刺 | 2008-07-03 | 2008-07-03 | 23 |  | 毛刺台二 |
| 25 | 清洗 | 2008-07-03 | 2008-07-03 | 24 |  | 毛刺台二 |
| 26 | 检验 | 2008-07-04 | 2008-07-04 | 25 |  | 检验 |
| 27 | 研磨平面 | 2008-07-06 | 2008-07-06 | 26 |  | 研磨台 |
| 28 | 浸泡 | 2008-07-06 | 2008-07-07 | 27 |  | 试验间 |
| 29 | 超声波清洗 | 2008-07-07 | 2008-07-07 | 28 |  | 试验间 |
| 30 | 清洗 | 2008-07-08 | 2008-07-08 | 27, 29 |  | 毛刺台一 |
| 31 | 镗孔 | 2008-07-08 | 2008-07-10 | 30 |  | 五轴立卧加 |
| 32 | 镗孔 | 2008-07-10 | 2008-07-10 | 27, 30, 31 |  | 五轴立卧加 |
| 33 | 镗孔 | 2008-07-10 | 2008-07-11 | 30, 32 |  | 五轴立卧加 |
| 34 | 镗孔 | 2008-07-11 | 2008-07-11 | 30, 33 |  | 五轴立卧加 |
| 35 | 倒角 | 2008-07-12 | 2008-07-12 | 27, 30, 34 |  | 立式钻床 [99.1%] |
| 36 | 攻螺纹 | 2008-07-12 | 2008-07-12 | 27, 30, 35 |  | 立式钻床 [100.26%] |
| 37 | 去毛刺 | 2008-07-12 | 2008-07-13 | 31, 32, 33, 34, 35, 36 |  | 毛刺台一 |
| 38 | 清洗 | 2008-07-13 | 2008-07-13 | 37 |  | 毛刺台一 |
| 39 | 检验 | 2008-07-14 | 2008-07-14 | 38 |  | 检验 |
| 40 | 清洗 | 2008-07-15 | 2008-07-15 | 39 |  | 毛刺台一 |
| 41 | 铰锥孔 | 2008-07-15 | 2008-07-15 | 40 |  | 立式钻床 |
| 42 | 去毛刺 | 2008-07-16 | 2008-07-16 | 41 |  | 毛刺台一 |
| 43 | 清洗 | 2008-07-16 | 2008-07-16 | 42 |  | 毛刺台一 |
| 44 | 检验 | 2008-07-16 | 2008-07-17 | 43 |  | 检验 |
| 45 | 单孔滑油冲洗 | 2008-07-17 | 2008-07-17 | 44 |  | 试验间 |
| 46 | 浸泡 | 2008-07-17 | 2008-07-18 | 45 |  | 试验间 |
| 47 | 超声波清洗 | 2008-07-18 | 2008-07-18 | 46 |  | 试验间 |
| 48 | 油气交替冲洗 | 2008-07-18 | 2008-07-19 | 47 |  | 试验间 |
| 49 | 检验 | 2008-07-19 | 2008-07-20 | 48 |  | 检验 |
| 50 | 清洗包装 | 2008-07-20 | 2008-07-21 | 49 |  | 试验间 |
| 51 | 调节器内壳体 | 2008-06-15 | 2008-07-30 |  |  |  |
| 52 | 去毛刺 | 2008-06-15 | 2008-06-15 |  |  | 毛刺台二 |
| 53 | 清洗 | 2008-06-15 | 2008-06-15 | 52 |  | 毛刺台二 |
| 54 | 检验 | 2008-06-16 | 2008-06-16 | 53 |  | 检验 |
| 55 | 萤检 | 2008-06-19 | 2008-06-20 | 54 |  | 外协 |
| 56 | 清洗 | 2008-06-20 | 2008-06-20 | 55 |  | 毛刺台二 |
| 57 | 铣面 钻镗孔 | 2008-06-20 | 2008-06-22 | 56 |  | 二工段立加三轴64V |
| 58 | 切槽 | 2008-06-22 | 2008-06-23 | 57 |  | 五轴立卧加 |
| 59 | 铣面 钻镗孔 | 2008-06-23 | 2008-06-25 | 58 |  | 五轴立卧加 |
| 60 | 研磨平面 | 2008-06-26 | 2008-06-26 | 59 |  | 研磨台 |
| 61 | 浸泡 | 2008-06-26 | 2008-06-26 | 60 |  | 试验间 |
| 62 | 超声波清洗 | 2008-06-26 | 2008-06-27 | 61 |  | 试验间 |
| 63 | 铣面钻镗孔 | 2008-06-27 | 2008-06-29 | 62 |  | 五轴立卧加 |
| 64 | 铣面钻镗孔 | 2008-06-29 | 2008-07-02 | 63 |  | 五轴立卧加 |
| 65 | 铣面 钻镗孔 | 2008-07-02 | 2008-07-04 | 64 |  | 五轴立卧加 |
| 66 | 切槽 | 2008-07-04 | 2008-07-05 | 65 |  | 数控车 |
| 67 | 钻镗孔 | 2008-07-05 | 2008-07-07 | 66 |  | 五轴立卧加 |
| 68 | 钻镗孔 | 2008-07-07 | 2008-07-07 | 67 |  | 五轴立卧加 |
| 69 | 铣面 | 2008-07-07 | 2008-07-08 | 68 |  | 五轴立卧加 |
| 70 | 划面 | 2008-07-08 | 2008-07-09 | 69 |  | 五轴立卧加 |

| ID | Task | Start | Finish | Predecessors | Resources |
| --- | --- | --- | --- | --- | --- |
| 71 | 反划 | 2008-07-10 | 2008-07-10 | 70 | 立式钻床 |
| 72 | 打磨修锉 | 2008-07-10 | 2008-07-10 | 71 | 钳工台 |
| 73 | 电化学去毛刺 | 2008-07-10 | 2008-07-11 | 72 | 毛刺台二 |
| 74 | 去毛刺 | 2008-07-11 | 2008-07-11 | 73 | 毛刺台二 |
| 75 | 清洗 | 2008-07-11 | 2008-07-11 | 74 | 毛刺台二 |
| 76 | 检验 | 2008-07-12 | 2008-07-13 | 75 | 检验 |
| 77 | 研磨平面 | 2008-07-15 | 2008-07-15 | 76 | 研磨台 |
| 78 | 浸泡 | 2008-07-15 | 2008-07-15 | 77 | 试验间 |
| 79 | 超声波清洗 | 2008-07-15 | 2008-07-16 | 78 | 试验间 |
| 80 | 清洗 | 2008-07-16 | 2008-07-16 | 79 | 毛刺台一 |
| 81 | 镗孔 | 2008-07-16 | 2008-07-18 | 80 | 五轴立卧加 |
| 82 | 镗孔 | 2008-07-18 | 2008-07-18 | 81 | 五轴立卧加 |
| 83 | 镗孔 | 2008-07-18 | 2008-07-20 | 82 | 五轴立卧加 |
| 84 | 镗孔 | 2008-07-20 | 2008-07-21 | 83 | 五轴立卧加 |
| 85 | 倒角 | 2008-07-21 | 2008-07-21 | 84 | 立式钻床 |
| 86 | 攻螺纹 | 2008-07-21 | 2008-07-21 | 85 | 立式钻床 |
| 87 | 去毛刺 | 2008-07-21 | 2008-07-21 | 86 | 毛刺台一 |
| 88 | 清洗 | 2008-07-21 | 2008-07-22 | 87 | 毛刺台一 |
| 89 | 检验 | 2008-07-23 | 2008-07-23 | 88 | 检验 |
| 90 | 清洗 | 2008-07-24 | 2008-07-24 | 89 | 毛刺台一 |
| 91 | 铰锥孔 | 2008-07-24 | 2008-07-25 | 90 | 立式钻床 |
| 92 | 去毛刺 | 2008-07-25 | 2008-07-25 | 91 | 毛刺台一 |
| 93 | 清洗 | 2008-07-25 | 2008-07-25 | 92 | 毛刺台一 |
| 94 | 检验 | 2008-07-26 | 2008-07-27 | 93 | 检验 |
| 95 | 单孔滑油冲洗 | 2008-07-27 | 2008-07-28 | 94 | 试验间 |
| 96 | 浸泡 | 2008-07-28 | 2008-07-28 | 95 | 试验间 |
| 97 | 超声波清洗 | 2008-07-28 | 2008-07-28 | 96 | 试验间 |
| 98 | 油气交替冲洗 | 2008-07-28 | 2008-07-29 | 97 | 试验间 |
| 99 | 检验 | 2008-07-29 | 2008-07-30 | 98 | 检验 |
| 100 | 清洗包装 | 2008-07-30 | 2008-07-30 | 99 | 试验间 |
| 101 | 调节器内壳体 | 2008-06-14 | 2008-08-10 |  |  |
| 102 | 铣面 钻镗孔 | 2008-06-14 | 2008-06-17 |  | 五轴立卧加 |
| 103 | 铣面 钻镗孔 | 2008-06-17 | 2008-06-18 | 102 | 五轴立卧加 |
| 104 | 铣面 钻镗孔 | 2008-06-18 | 2008-06-19 | 103 | 五轴立卧加 |
| 105 | 铣面 钻镗孔 | 2008-06-19 | 2008-06-20 | 104 | 斯贝单元80U-2（五） |
| 106 | 铣型腔 划窝 | 2008-06-20 | 2008-06-22 | 105 | 斯贝单元80U-2（五） |
| 107 | 去毛刺 | 2008-06-22 | 2008-06-22 | 106 | 毛刺台二 |
| 108 | 铣面 钻镗孔 | 2008-06-22 | 2008-06-24 | 107 | 五轴立卧加 |
| 109 | 铣槽 | 2008-06-24 | 2008-06-25 | 108 | 五轴立卧加 |
| 110 | 去毛刺 | 2008-06-25 | 2008-06-25 | 109 | 毛刺台二 |
| 111 | 清洗 | 2008-06-25 | 2008-06-25 | 110 | 毛刺台二 |
| 112 | 检验 | 2008-06-26 | 2008-06-26 | 111 | 检验 |
| 113 | 萤检 | 2008-06-29 | 2008-06-30 | 112 | 外协 |
| 114 | 清洗 | 2008-06-30 | 2008-07-01 | 113 | 毛刺台二 |
| 115 | 铣面 钻镗孔 | 2008-07-01 | 2008-07-02 | 114 | 二工段立加三轴64V |
| 116 | 切槽 | 2008-07-02 | 2008-07-03 | 115 | 五轴立卧加 |
| 117 | 铣面 钻镗孔 | 2008-07-03 | 2008-07-06 | 116 | 五轴立卧加 |
| 118 | 研磨平面 | 2008-07-06 | 2008-07-06 | 117 | 毛刺台二 |
| 119 | 浸泡 | 2008-07-06 | 2008-07-07 | 118 | 试验间 |
| 120 | 超声波清洗 | 2008-07-07 | 2008-07-07 | 119 | 试验间 |
| 121 | 铣面钻镗孔 | 2008-07-07 | 2008-07-09 | 120 | 五轴立卧加 |
| 122 | 铣面钻镗孔 | 2008-07-09 | 2008-07-11 | 121 | 五轴立卧加 |
| 123 | 铣面 钻镗孔 | 2008-07-11 | 2008-07-14 | 122 | 五轴立卧加 |
| 124 | 切槽 | 2008-07-14 | 2008-07-15 | 123 | 数控车 |
| 125 | 钻镗孔 | 2008-07-15 | 2008-07-16 | 124 | 五轴立卧加 |
| 126 | 钻镗孔 | 2008-07-16 | 2008-07-17 | 125 | 五轴立卧加 |
| 127 | 铣面 | 2008-07-17 | 2008-07-18 | 126 | 五轴立卧加 |
| 128 | 划面 | 2008-07-18 | 2008-07-19 | 127 | 五轴立卧加 |
| 129 | 反划 | 2008-07-20 | 2008-07-20 | 128 | 立式钻床 |
| 130 | 打磨修锉 | 2008-07-20 | 2008-07-21 | 129 | 钳工台 |
| 131 | 电化学去毛刺 | 2008-07-21 | 2008-07-21 | 130 | 毛刺台二 |
| 132 | 去毛刺 | 2008-07-21 | 2008-07-21 | 131 | 毛刺台二 |
| 133 | 清洗 | 2008-07-21 | 2008-07-22 | 132 | 毛刺台二 |
| 134 | 检验 | 2008-07-22 | 2008-07-23 | 133 | 检验 |
| 135 | 研磨平面 | 2008-07-25 | 2008-07-25 | 134 | 研磨台 |
| 136 | 浸泡 | 2008-07-25 | 2008-07-25 | 135 | 试验间 |
| 137 | 超声波清洗 | 2008-07-25 | 2008-07-26 | 136 | 试验间 |
| 138 | 清洗 | 2008-07-26 | 2008-07-26 | 137 | 毛刺台一 |
| 139 | 镗孔 | 2008-07-26 | 2008-07-29 | 138 | 五轴立卧加 |
| 140 | 镗孔 | 2008-07-29 | 2008-07-29 | 139 | 五轴立卧加 |

| ID | Task | Start | Finish | Predecessors | Resources |
| --- | --- | --- | --- | --- | --- |
| 141 | 镗孔 | 2008-07-29 | 2008-07-30 | 140 | 五轴立卧加 |
| 142 | 镗孔 | 2008-07-30 | 2008-07-31 | 141 | 五轴立卧加 |
| 143 | 倒角 | 2008-07-31 | 2008-07-31 | 142 | 立式钻床 |
| 144 | 攻螺纹 | 2008-07-31 | 2008-07-31 | 143 | 立式钻床 |
| 145 | 去毛刺 | 2008-07-31 | 2008-07-31 | 144 | 毛刺台一 |
| 146 | 清洗 | 2008-07-31 | 2008-08-01 | 145 | 毛刺台一 |
| 147 | 检验 | 2008-08-02 | 2008-08-03 | 146 | 检验 |
| 148 | 清洗 | 2008-08-03 | 2008-08-03 | 147 | 毛刺台一 |
| 149 | 铰锥孔 | 2008-08-04 | 2008-08-04 | 148 | 立式钻床 |
| 150 | 去毛刺 | 2008-08-04 | 2008-08-05 | 149 | 毛刺台一 |
| 151 | 清洗 | 2008-08-05 | 2008-08-05 | 150 | 毛刺台一 |
| 152 | 检验 | 2008-08-06 | 2008-08-06 | 151 | 检验 |
| 153 | 单孔滑油冲洗 | 2008-08-06 | 2008-08-07 | 152 | 试验间 |
| 154 | 浸泡 | 2008-08-07 | 2008-08-07 | 153 | 试验间 |
| 155 | 超声波清洗 | 2008-08-07 | 2008-08-07 | 154 | 试验间 |
| 156 | 油气交替冲洗 | 2008-08-07 | 2008-08-08 | 155 | 试验间 |
| 157 | 检验 | 2008-08-08 | 2008-08-09 | 156 | 检验 |
| 158 | 清洗包装 | 2008-08-09 | 2008-08-10 | 157 | 试验间 |
| 159 | 调节器内壳体 | 2008-06-15 | 2008-08-10 |  |  |
| 160 | 研磨平面 | 2008-06-15 | 2008-06-15 |  | 研磨台 |
| 161 | 铣面 钻镗孔 | 2008-06-15 | 2008-06-17 | 160 | 五轴立卧加 |
| 162 | 铣面 钻镗孔 | 2008-06-17 | 2008-06-18 | 161 | 五轴立卧加 |
| 163 | 铣面 钻镗孔 | 2008-06-18 | 2008-06-19 | 162 | 五轴立卧加 |
| 164 | 铣面 钻镗孔 | 2008-06-19 | 2008-06-20 | 163 | 斯贝单元80U-2（五） |
| 165 | 铣型腔 划窝 | 2008-06-20 | 2008-06-22 | 164 | 斯贝单元80U-2（五） |
| 166 | 去毛刺 | 2008-06-23 | 2008-06-23 | 165 | 毛刺台二 |
| 167 | 铣面 钻镗孔 | 2008-06-23 | 2008-06-25 | 166 | 五轴立卧加 |
| 168 | 铣槽 | 2008-06-25 | 2008-06-26 | 167 | 五轴立卧加 |
| 169 | 去毛刺 | 2008-06-26 | 2008-06-26 | 168 | 毛刺台二 |
| 170 | 清洗 | 2008-06-26 | 2008-06-26 | 169 | 毛刺台二 |
| 171 | 检验 | 2008-06-27 | 2008-06-27 | 170 | 检验 |
| 172 | 萤检 | 2008-06-30 | 2008-07-01 | 171 | 外协 |
| 173 | 清洗 | 2008-07-01 | 2008-07-01 | 172 | 毛刺台二 |
| 174 | 铣面 钻镗孔 | 2008-07-01 | 2008-07-02 | 173 | 二工段立加三轴64V |
| 175 | 切槽 | 2008-07-02 | 2008-07-03 | 174 | 五轴立卧加 |
| 176 | 铣面 钻镗孔 | 2008-07-03 | 2008-07-06 | 175 | 五轴立卧加 |
| 177 | 研磨平面 | 2008-07-07 | 2008-07-07 | 176 | 毛刺台二 |
| 178 | 浸泡 | 2008-07-07 | 2008-07-07 | 177 | 试验间 |
| 179 | 超声波清洗 | 2008-07-07 | 2008-07-08 | 178 | 试验间 |
| 180 | 铣面钻镗孔 | 2008-07-08 | 2008-07-09 | 179 | 五轴立卧加 |
| 181 | 铣面钻镗孔 | 2008-07-09 | 2008-07-12 | 180 | 五轴立卧加 |
| 182 | 铣面 钻镗孔 | 2008-07-12 | 2008-07-15 | 181 | 五轴立卧加 |
| 183 | 切槽 | 2008-07-15 | 2008-07-16 | 182 | 数控车 |
| 184 | 钻镗孔 | 2008-07-16 | 2008-07-17 | 183 | 五轴立卧加 |
| 185 | 钻镗孔 | 2008-07-17 | 2008-07-17 | 184 | 五轴立卧加 |
| 186 | 铣面 | 2008-07-17 | 2008-07-18 | 185 | 五轴立卧加 |
| 187 | 划面 | 2008-07-18 | 2008-07-20 | 186 | 五轴立卧加 |
| 188 | 反划 | 2008-07-21 | 2008-07-21 | 187 | 立式钻床 |
| 189 | 打磨修锉 | 2008-07-21 | 2008-07-21 | 188 | 钳工台 |
| 190 | 电化学去毛刺 | 2008-07-21 | 2008-07-22 | 189 | 毛刺台二 |
| 191 | 去毛刺 | 2008-07-22 | 2008-07-22 | 190 | 毛刺台二 |
| 192 | 清洗 | 2008-07-22 | 2008-07-22 | 191 | 毛刺台二 |
| 193 | 检验 | 2008-07-23 | 2008-07-23 | 192 | 检验 |
| 194 | 研磨平面 | 2008-07-25 | 2008-07-25 | 193 | 研磨台 |
| 195 | 浸泡 | 2008-07-25 | 2008-07-25 | 194 | 试验间 |
| 196 | 超声波清洗 | 2008-07-25 | 2008-07-26 | 195 | 试验间 |
| 197 | 清洗 | 2008-07-26 | 2008-07-26 | 196 | 毛刺台一 |
| 198 | 镗孔 | 2008-07-26 | 2008-07-29 | 197 | 五轴立卧加 |
| 199 | 镗孔 | 2008-07-29 | 2008-07-29 | 198 | 五轴立卧加 |
| 200 | 镗孔 | 2008-07-29 | 2008-07-30 | 199 | 五轴立卧加 |
| 201 | 镗孔 | 2008-07-30 | 2008-07-31 | 200 | 五轴立卧加 |
| 202 | 倒角 | 2008-07-31 | 2008-07-31 | 201 | 立式钻床 |
| 203 | 攻螺纹 | 2008-07-31 | 2008-07-31 | 202 | 立式钻床 |
| 204 | 去毛刺 | 2008-07-31 | 2008-07-31 | 203 | 毛刺台一 |
| 205 | 清洗 | 2008-07-31 | 2008-08-01 | 204 | 毛刺台一 |
| 206 | 检验 | 2008-08-02 | 2008-08-03 | 205 | 检验 |
| 207 | 清洗 | 2008-08-03 | 2008-08-03 | 206 | 毛刺台一 |
| 208 | 铰锥孔 | 2008-08-04 | 2008-08-04 | 207 | 立式钻床 |
| 209 | 去毛刺 | 2008-08-04 | 2008-08-05 | 208 | 毛刺台一 |
| 210 | 清洗 | 2008-08-05 | 2008-08-05 | 209 | 毛刺台一 |

| ID | Task | Start | Finish | Predecessors | Complete | Resources |
| --- | --- | --- | --- | --- | --- | --- |
| 211 | 检验 | 2008-08-06 | 2008-08-06 | 210 |  | 检验 |
| 212 | 单孔滑油冲洗 | 2008-08-06 | 2008-08-07 | 211 |  | 试验间 |
| 213 | 浸泡 | 2008-08-07 | 2008-08-07 | 212 |  | 试验间 |
| 214 | 超声波清洗 | 2008-08-07 | 2008-08-07 | 213 |  | 试验间 |
| 215 | 油气交替冲洗 | 2008-08-07 | 2008-08-08 | 214 |  | 试验间 |
| 216 | 检验 | 2008-08-08 | 2008-08-09 | 215 |  | 检验 |
| 217 | 清洗包装 | 2008-08-09 | 2008-08-10 | 216 |  | 试验间 |
| 218 | 壳体 | 2008-04-25 | 2008-06-24 |  |  |  |
| 219 | 研磨平面 | 2008-06-15 | 2008-06-15 |  |  | 研磨台 |
| 220 | 清洗 | 2008-06-15 | 2008-06-16 | 219 |  | 毛刺台二 |
| 221 | 已完成任务 | 2008-05-15 | 2008-05-15 | 219, 220 | 100% |  |
| 222 | 清洗 | 2008-06-15 | 2008-06-15 | 221 |  | 试验间 |
| 223 | 检验 | 2008-06-15 | 2008-06-16 | 222 |  | 检验 |
| 224 | 研平面 | 2008-06-19 | 2008-06-19 | 223 |  | 研磨台 |
| 225 | 清洗 | 2008-06-19 | 2008-06-19 | 224 |  | 毛刺台二 |
| 226 | 镗孔 | 2008-06-19 | 2008-06-19 | 224, 225 |  | 二工段立加三轴64V |
| 227 | 去毛刺 | 2008-06-20 | 2008-06-20 | 226 |  | 毛刺台二 |
| 228 | 攻螺纹 | 2008-06-20 | 2008-06-21 | 227 |  | 毛刺台二 |
| 229 | 研孔 | 2008-06-21 | 2008-06-22 | 228 |  | 研磨台 |
| 230 | 研平面 | 2008-06-22 | 2008-06-22 | 229 |  | 研磨台 |
| 231 | fg | 2008-06-22 | 2008-06-23 | 230 |  | 毛刺台一 |
| 232 | 超声波清洗 | 2008-06-23 | 2008-06-23 | 231 |  | 试验间 |
| 233 | 浸泡 | 2008-06-23 | 2008-06-24 | 232 |  | 试验间 |
| 234 | 检验 | 2008-06-24 | 2008-06-24 | 233 |  | 检验 |
| 235 | 已完成任务 | 2008-04-25 | 2008-04-25 | 234 | 100% |  |
| 236 | 清洗 | 2008-06-15 | 2008-06-15 | 235 |  | 试验间 |
| 237 | 检验 | 2008-06-15 | 2008-06-16 | 236 |  | 检验 |
| 238 | 壳体 | 2008-04-28 | 2008-06-16 |  |  |  |
| 239 | 已完成任务 | 2008-04-28 | 2008-04-28 | 222 | 100% |  |
| 240 | 检验 | 2008-06-15 | 2008-06-16 | 239 |  | 检验 |
| 241 | 壳体 | 2008-06-14 | 2008-07-05 |  |  |  |
| 242 | 电火花加工槽 | 2008-06-14 | 2008-06-15 |  |  |  |
| 243 | 去毛刺 | 2008-06-16 | 2008-06-16 | 242 |  | 毛刺台二 |
| 244 | 电化学去毛刺 | 2008-06-16 | 2008-06-17 | 243 |  | 毛刺台二 |
| 245 | 清洗 | 2008-06-17 | 2008-06-17 | 244 |  | 毛刺台二 |
| 246 | 检验 | 2008-06-17 | 2008-06-18 | 245 |  | 检验 |
| 247 | 镗孔，倒角 | 2008-06-18 | 2008-06-18 | 246 |  | 二工段立加三轴64V |
| 248 | 去毛刺 | 2008-06-19 | 2008-06-19 | 247 |  | 毛刺台二 |
| 249 | 清洗 | 2008-06-19 | 2008-06-20 | 248 |  | 毛刺台二 |
| 250 | 气密试验 | 2008-06-20 | 2008-06-20 | 249 |  | 试验间 |
| 251 | 强度试验 | 2008-06-20 | 2008-06-21 | 250 |  | 试验间 |
| 252 | 冲洗 | 2008-06-21 | 2008-06-22 | 251 |  | 试验间 |
| 253 | 清洗 | 2008-06-22 | 2008-06-22 | 252 |  | 试验间 |
| 254 | 检验 | 2008-06-22 | 2008-06-23 | 253 |  | 检验 |
| 255 | 研平面 | 2008-06-26 | 2008-06-26 | 254 |  | 研磨台 |
| 256 | 清洗 | 2008-06-26 | 2008-06-26 | 255 |  | 毛刺台二 |
| 257 | 镗孔 | 2008-06-26 | 2008-06-26 | 255, 256 |  | 二工段立加三轴64V |
| 258 | 去毛刺 | 2008-06-27 | 2008-06-27 | 257 |  | 毛刺台二 |
| 259 | 攻螺纹 | 2008-06-27 | 2008-06-29 | 258 |  | 毛刺台二 |
| 260 | 研孔 | 2008-06-29 | 2008-06-29 | 259 |  | 研磨台 |
| 261 | 研平面 | 2008-06-29 | 2008-06-30 | 260 |  | 研磨台 |
| 262 | 浸泡 | 2008-06-30 | 2008-07-01 | 261 |  | 毛刺台二 |
| 263 | 超声波清洗 | 2008-07-01 | 2008-07-01 | 262 |  | 试验间 |
| 264 | 清洗 | 2008-07-01 | 2008-07-01 | 263 |  | 试验间 |
| 265 | 检验 | 2008-07-02 | 2008-07-02 | 264 |  | 检验 |
| 266 | 单孔滑油冲洗 | 2008-07-02 | 2008-07-03 | 265 |  | 试验间 |
| 267 | 浸泡 | 2008-07-03 | 2008-07-03 | 266 |  | 试验间 |
| 268 | 超声波冲洗 | 2008-07-03 | 2008-07-03 | 267 |  | 试验间 |
| 269 | 冲洗 | 2008-07-03 | 2008-07-04 | 268 |  | 试验间 |
| 270 | 清洗 | 2008-07-04 | 2008-07-04 | 269 |  | 试验间 |
| 271 | 检验 | 2008-07-04 | 2008-07-05 | 270 |  | 检验 |
| 272 | 壳体 | 2008-06-15 | 2008-09-07 |  |  |  |
| 273 | 去毛刺 | 2008-06-15 | 2008-06-15 |  |  | 毛刺台一 |
| 274 | 钻镗孔，铣平面 | 2008-06-15 | 2008-06-17 | 273 |  | 五轴立卧加 |
| 275 | 钻镗孔，铣平面 | 2008-06-17 | 2008-06-19 | 274 |  | 五轴立卧加 |
| 276 | 铣型腔 | 2008-06-19 | 2008-06-21 | 275 |  | 二工段立加三轴64V |
| 277 | 去毛刺 | 2008-06-21 | 2008-06-22 | 276 |  | 毛刺台一 |
| 278 | 清洗 | 2008-06-22 | 2008-06-23 | 277 |  | 毛刺台一 |
| 279 | 研磨平面 | 2008-06-25 | 2008-06-25 | 278 |  | 研磨台 |
| 280 | 清洗 | 2008-06-25 | 2008-06-26 | 279 |  | 毛刺台二 |

| ID | Task | Start | Finish | Predecessors | Resources |
| --- | --- | --- | --- | --- | --- |
| 281 | 铣平面，精镗孔 | 2008-06-26 | 2008-06-27 | 280 | 二工段立加三轴64V |
| 282 | 铣平面，钻镗孔 | 2008-06-27 | 2008-06-30 | 281 | 五轴立卧加 |
| 283 | 钻镗孔 | 2008-06-30 | 2008-07-02 | 282 | 四轴卧加 |
| 284 | 钻镗孔 | 2008-07-02 | 2008-07-03 | 283 | 五轴立卧加 |
| 285 | 铣平面，钻镗孔 | 2008-07-03 | 2008-07-04 | 284 | 四轴卧加 |
| 286 | 铣平面，钻镗孔 | 2008-07-04 | 2008-07-07 | 285 | 五轴立卧加 |
| 287 | 钻镗孔 | 2008-07-07 | 2008-07-11 | 286 | 五轴立卧加 |
| 288 | 钻镗孔，铣槽 | 2008-07-11 | 2008-07-14 | 287 | 五轴立卧加 |
| 289 | 去毛刺，抛光打圆弧 | 2008-07-14 | 2008-07-14 | 288 | 毛刺台二 |
| 290 | 铣面，钻镗孔 | 2008-07-14 | 2008-07-18 | 289 | 五轴立卧加 |
| 291 | 铣面，钻镗孔 | 2008-07-18 | 2008-07-22 | 290 | 五轴立卧加 |
| 292 | 去毛刺，打字母 | 2008-07-22 | 2008-07-22 | 291 | 毛刺台二 |
| 293 | 钻镗孔，攻螺纹 | 2008-07-22 | 2008-07-24 | 292 | 五轴立卧加 |
| 294 | 去毛刺 | 2008-07-24 | 2008-07-25 | 293 | 毛刺台二 |
| 295 | 清洗 | 2008-07-25 | 2008-07-25 | 294 | 毛刺台一 |
| 296 | 高压试验 | 2008-07-27 | 2008-07-27 | 295 | 试验间 |
| 297 | 铣面，钻孔 | 2008-07-27 | 2008-07-29 | 296 | 五轴立卧加 |
| 298 | 铣面，钻镗孔 | 2008-07-29 | 2008-07-31 | 297 | 五轴立卧加 |
| 299 | 钻镗孔 | 2008-07-31 | 2008-07-31 | 298 | 五轴立卧加 |
| 300 | 铣面，钻镗孔 | 2008-07-31 | 2008-08-04 | 299 | 五轴立卧加 |
| 301 | 钻镗孔，铣型面 | 2008-08-04 | 2008-08-08 | 300 | 斯贝单元80U-2（五） |
| 302 | 去毛刺 | 2008-08-08 | 2008-08-08 | 301 | 毛刺台二 |
| 303 | 研磨平面 | 2008-08-08 | 2008-08-09 | 302 | 研磨台 |
| 304 | 清洗 | 2008-08-09 | 2008-08-09 | 303 | 毛刺台二 |
| 305 | 钻镗孔，铣型面 | 2008-08-09 | 2008-08-12 | 304 | 二工段立加三轴64V |
| 306 | 铣型面 | 2008-08-12 | 2008-08-14 | 305 | 五轴立卧加 |
| 307 | 去毛刺 | 2008-08-14 | 2008-08-14 | 306 | 毛刺台二 |
| 308 | 清洗 | 2008-08-14 | 2008-08-15 | 307 | 毛刺台二 |
| 309 | 去毛刺 | 2008-08-16 | 2008-08-17 | 308 | 毛刺台二 |
| 310 | 电化学去毛刺 | 2008-08-17 | 2008-08-18 | 309 | 毛刺台二 |
| 311 | 清洗 | 2008-08-18 | 2008-08-18 | 310 | 毛刺台二 |
| 312 | 检验 | 2008-08-18 | 2008-08-19 | 311 | 检验 |
| 313 | 镗孔，倒角 | 2008-08-19 | 2008-08-19 | 312 | 二工段立加三轴64V [100.14%] |
| 314 | 去毛刺 | 2008-08-20 | 2008-08-20 | 313 | 毛刺台二 |
| 315 | 清洗 | 2008-08-20 | 2008-08-21 | 314 | 毛刺台二 |
| 316 | 气密试验 | 2008-08-21 | 2008-08-21 | 315 | 试验间 |
| 317 | 强度试验 | 2008-08-21 | 2008-08-22 | 316 | 试验间 |
| 318 | 冲洗 | 2008-08-22 | 2008-08-22 | 317 | 试验间 |
| 319 | 清洗 | 2008-08-22 | 2008-08-22 | 318 | 试验间 |
| 320 | 检验 | 2008-08-23 | 2008-08-24 | 319 | 检验 |
| 321 | 研平面 | 2008-08-27 | 2008-08-28 | 320 | 研磨台 |
| 322 | 清洗 | 2008-08-28 | 2008-08-28 | 321 | 毛刺台二 |
| 323 | 镗孔 | 2008-08-28 | 2008-08-28 | 322 | 二工段立加三轴64V |
| 324 | 去毛刺 | 2008-08-29 | 2008-08-29 | 323 | 毛刺台二 |
| 325 | 攻螺纹 | 2008-08-29 | 2008-08-31 | 324 | 毛刺台二 |
| 326 | 研孔 | 2008-08-31 | 2008-09-01 | 325 | 研磨台 |
| 327 | 研平面 | 2008-09-01 | 2008-09-01 | 326 | 研磨台 |
| 328 | 浸泡 | 2008-09-01 | 2008-09-02 | 327 | 毛刺台二 |
| 329 | 超声波清洗 | 2008-09-02 | 2008-09-02 | 328 | 试验间 |
| 330 | 清洗 | 2008-09-02 | 2008-09-03 | 329 | 试验间 |
| 331 | 检验 | 2008-09-03 | 2008-09-04 | 330 | 检验 |
| 332 | 单孔滑油冲洗 | 2008-09-04 | 2008-09-04 | 331 | 试验间 |
| 333 | 浸泡 | 2008-09-04 | 2008-09-04 | 332 | 试验间 |
| 334 | 超声波冲洗 | 2008-09-04 | 2008-09-05 | 333 | 试验间 |
| 335 | 冲洗 | 2008-09-05 | 2008-09-05 | 334 | 试验间 |
| 336 | 清洗 | 2008-09-05 | 2008-09-05 | 335 | 试验间 |
| 337 | 检验 | 2008-09-06 | 2008-09-07 | 336 | 检验 |
| 338 | 壳体 | 2008-06-15 | 2008-09-08 |  |  |
| 339 | 去毛刺 | 2008-06-15 | 2008-06-15 |  | 毛刺台一 |
| 340 | 钻镗孔，铣平面 | 2008-06-15 | 2008-06-17 | 339 | 五轴立卧加 |
| 341 | 钻镗孔，铣平面 | 2008-06-17 | 2008-06-19 | 340 | 五轴立卧加 |
| 342 | 铣型腔 | 2008-06-19 | 2008-06-21 | 341 | 二工段立加三轴64V |
| 343 | 去毛刺 | 2008-06-22 | 2008-06-22 | 342 | 毛刺台一 |
| 344 | 清洗 | 2008-06-22 | 2008-06-23 | 343 | 毛刺台一 |
| 345 | 研磨平面 | 2008-06-25 | 2008-06-25 | 344 | 研磨台 |
| 346 | 清洗 | 2008-06-25 | 2008-06-26 | 345 | 毛刺台二 |
| 347 | 铣平面，精镗孔 | 2008-06-26 | 2008-06-27 | 346 | 二工段立加三轴64V |
| 348 | 铣平面，钻镗孔 | 2008-06-27 | 2008-06-30 | 347 | 五轴立卧加 |
| 349 | 钻镗孔 | 2008-06-30 | 2008-07-02 | 348 | 四轴卧加 |
| 350 | 钻镗孔 | 2008-07-02 | 2008-07-03 | 349 | 五轴立卧加 |

| ID | Task | Start | Finish | Predecessors | Resources |
| --- | --- | --- | --- | --- | --- |
| 351 | 铣平面，钻镗孔 | 2008-07-03 | 2008-07-04 | 350 | 四轴卧加 |
| 352 | 铣平面，钻镗孔 | 2008-07-04 | 2008-07-07 | 351 | 五轴立卧加 |
| 353 | 钻镗孔 | 2008-07-07 | 2008-07-11 | 352 | 五轴立卧加 |
| 354 | 钻镗孔，铣槽 | 2008-07-11 | 2008-07-14 | 353 | 五轴立卧加 |
| 355 | 去毛刺，抛光打圆弧 | 2008-07-14 | 2008-07-14 | 354 | 毛刺台二 |
| 356 | 铣面，钻镗孔 | 2008-07-14 | 2008-07-18 | 355 | 五轴立卧加 |
| 357 | 铣面，钻镗孔 | 2008-07-18 | 2008-07-22 | 356 | 五轴立卧加 |
| 358 | 去毛刺，打字母 | 2008-07-22 | 2008-07-22 | 357 | 毛刺台二 |
| 359 | 钻镗孔，攻螺纹 | 2008-07-22 | 2008-07-24 | 358 | 五轴立卧加 |
| 360 | 去毛刺 | 2008-07-24 | 2008-07-25 | 359 | 毛刺台二 |
| 361 | 清洗 | 2008-07-25 | 2008-07-25 | 360 | 毛刺台一 |
| 362 | 高压试验 | 2008-07-27 | 2008-07-27 | 361 | 试验间 |
| 363 | 铣面，钻孔 | 2008-07-27 | 2008-07-29 | 362 | 五轴立卧加 |
| 364 | 铣面，钻镗孔 | 2008-07-29 | 2008-07-31 | 363 | 五轴立卧加 |
| 365 | 钻镗孔 | 2008-07-31 | 2008-07-31 | 364 | 五轴立卧加 |
| 366 | 铣面，钻镗孔 | 2008-07-31 | 2008-08-04 | 365 | 五轴立卧加 |
| 367 | 钻镗孔，铣型面 | 2008-08-04 | 2008-08-08 | 366 | 斯贝单元80U-2（五） |
| 368 | 去毛刺 | 2008-08-08 | 2008-08-08 | 367 | 毛刺台二 |
| 369 | 研磨平面 | 2008-08-08 | 2008-08-09 | 368 | 研磨台 |
| 370 | 清洗 | 2008-08-09 | 2008-08-09 | 369 | 毛刺台二 |
| 371 | 钻镗孔，铣型面 | 2008-08-09 | 2008-08-13 | 370 | 二工段立加三轴64V |
| 372 | 铣型面 | 2008-08-13 | 2008-08-14 | 371 | 五轴立卧加 |
| 373 | 去毛刺 | 2008-08-14 | 2008-08-15 | 372 | 毛刺台二 |
| 374 | 清洗 | 2008-08-15 | 2008-08-15 | 373 | 毛刺台二 |
| 375 | 去毛刺 | 2008-08-17 | 2008-08-17 | 374 | 毛刺台二 |
| 376 | 电化学去毛刺 | 2008-08-17 | 2008-08-18 | 375 | 毛刺台二 |
| 377 | 清洗 | 2008-08-18 | 2008-08-19 | 376 | 毛刺台二 |
| 378 | 检验 | 2008-08-19 | 2008-08-20 | 377 | 检验 |
| 379 | 镗孔，倒角 | 2008-08-20 | 2008-08-20 | 378 | 二工段立加三轴64V |
| 380 | 去毛刺 | 2008-08-20 | 2008-08-21 | 379 | 毛刺台二 |
| 381 | 清洗 | 2008-08-21 | 2008-08-21 | 380 | 毛刺台二 |
| 382 | 气密试验 | 2008-08-21 | 2008-08-21 | 381 | 试验间 |
| 383 | 强度试验 | 2008-08-21 | 2008-08-22 | 382 | 试验间 |
| 384 | 冲洗 | 2008-08-22 | 2008-08-22 | 383 | 试验间 |
| 385 | 清洗 | 2008-08-22 | 2008-08-22 | 384 | 试验间 |
| 386 | 检验 | 2008-08-23 | 2008-08-24 | 385 | 检验 |
| 387 | 研平面 | 2008-08-27 | 2008-08-28 | 386 | 研磨台 |
| 388 | 清洗 | 2008-08-28 | 2008-08-28 | 387 | 毛刺台二 |
| 389 | 镗孔 | 2008-08-28 | 2008-08-28 | 388 | 二工段立加三轴64V |
| 390 | 去毛刺 | 2008-08-29 | 2008-08-29 | 389 | 毛刺台二 |
| 391 | 攻螺纹 | 2008-08-29 | 2008-08-31 | 390 | 毛刺台二 |
| 392 | 研孔 | 2008-08-31 | 2008-09-01 | 391 | 研磨台 |
| 393 | 研平面 | 2008-09-01 | 2008-09-01 | 392 | 研磨台 |
| 394 | 浸泡 | 2008-09-01 | 2008-09-02 | 393 | 毛刺台二 |
| 395 | 超声波清洗 | 2008-09-02 | 2008-09-02 | 394 | 试验间 |
| 396 | 清洗 | 2008-09-02 | 2008-09-03 | 395 | 试验间 |
| 397 | 检验 | 2008-09-03 | 2008-09-04 | 396 | 检验 |
| 398 | 单孔滑油冲洗 | 2008-09-04 | 2008-09-04 | 397 | 试验间 |
| 399 | 浸泡 | 2008-09-04 | 2008-09-04 | 398 | 试验间 |
| 400 | 超声波冲洗 | 2008-09-04 | 2008-09-05 | 399 | 试验间 |
| 401 | 冲洗 | 2008-09-05 | 2008-09-05 | 400 | 试验间 |
| 402 | 清洗 | 2008-09-05 | 2008-09-06 | 401 | 试验间 |
| 403 | 检验 | 2008-09-07 | 2008-09-08 | 402 | 检验 |
| 404 | 壳体 | 2008-06-15 | 2008-07-01 |  |  |
| 405 | 划面 | 2008-06-15 | 2008-06-15 |  | 毛刺台二 |
| 406 | 去毛刺 | 2008-06-15 | 2008-06-16 | 405 | 毛刺台二 |
| 407 | 电化学去毛刺 | 2008-06-16 | 2008-06-16 | 406 | 毛刺台二 |
| 408 | 清洗 | 2008-06-16 | 2008-06-17 | 407 | 毛刺台二 |
| 409 | 强度试验 | 2008-06-17 | 2008-06-17 | 408 | 试验间 |
| 410 | 钻孔 | 2008-06-18 | 2008-06-18 | 409 | 毛刺台二 |
| 411 | 去毛刺 | 2008-06-18 | 2008-06-18 | 410 | 毛刺台二 |
| 412 | 清洗 | 2008-06-18 | 2008-06-19 | 411 | 毛刺台二 |
| 413 | 强度试验 | 2008-06-19 | 2008-06-19 | 412 | 试验间 |
| 414 | 气密试验 | 2008-06-19 | 2008-06-20 | 413 | 试验间 |
| 415 | 研平面 | 2008-06-20 | 2008-06-20 | 414 | 研磨台 |
| 416 | 研平面 | 2008-06-20 | 2008-06-20 | 414 | 研磨台 [99.7%] |
| 417 | 研平面 | 2008-06-20 | 2008-06-20 | 414 | 研磨台 |
| 418 | 浸泡 | 2008-06-20 | 2008-06-20 | 415, 416, 417 | 试验间 |
| 419 | 超声波清洗 | 2008-06-20 | 2008-06-21 | 418 | 试验间 |
| 420 | 冲洗 | 2008-06-21 | 2008-06-22 | 419 | 试验间 |

| ID | Task | Start | Finish | Predecessors | Resources |
| --- | --- | --- | --- | --- | --- |
| 421 | 检验 | 2008-06-23 | 2008-06-23 | 420 | 检验 |
| 422 | 单孔滑油冲洗 | 2008-06-26 | 2008-06-27 | 421 | 试验间 |
| 423 | 浸泡 | 2008-06-27 | 2008-06-27 | 422 | 试验间 |
| 424 | 超声波清洗 | 2008-06-27 | 2008-06-28 | 423 | 试验间 |
| 425 | 清洗 | 2008-06-28 | 2008-06-29 | 424 | 试验间 |
| 426 | 油气交替冲洗 | 2008-06-29 | 2008-06-30 | 425 | 试验间 |
| 427 | 分组 | 2008-06-30 | 2008-06-30 | 426 | 毛刺台二 |
| 428 | 检验 | 2008-07-01 | 2008-07-01 | 427 | 检验 |
| 429 | 壳体 | 2008-06-15 | 2008-09-02 |  |  |
| 430 | 铣平面 | 2008-06-15 | 2008-06-15 |  | 立式钻床 |
| 431 | 铣平面钻镗孔 | 2008-06-15 | 2008-06-16 | 430 | 二工段立加三轴64V |
| 432 | 铣平面钻镗孔 | 2008-06-16 | 2008-06-19 | 431 | 四轴卧加 |
| 433 | 铣平面钻镗孔 | 2008-06-19 | 2008-06-21 | 432 | 五轴立卧加 |
| 434 | 铣平面钻镗孔 | 2008-06-21 | 2008-06-25 | 433 | 二工段立加三轴64V |
| 435 | 去毛刺打字 | 2008-06-25 | 2008-06-25 | 434 | 毛刺台二 |
| 436 | 清洗 | 2008-06-25 | 2008-06-25 | 435 | 毛刺台一 |
| 437 | 铣面钻镗孔 | 2008-06-27 | 2008-06-30 | 436 | 二工段立加三轴64V |
| 438 | 镗孔 切槽 | 2008-06-30 | 2008-07-01 | 437 | 数控车 |
| 439 | 镗孔 切槽 | 2008-07-01 | 2008-07-02 | 438 | 数控车 |
| 440 | 镗孔 切槽 | 2008-07-02 | 2008-07-04 | 439 | 数控车 |
| 441 | 铣面钻镗孔 | 2008-07-04 | 2008-07-05 | 440 | 四轴卧加 |
| 442 | 铣面钻镗孔 | 2008-07-05 | 2008-07-08 | 441 | 四轴卧加 |
| 443 | 镗孔 切槽 | 2008-07-08 | 2008-07-09 | 442 | 数控车 |
| 444 | 切槽 | 2008-07-09 | 2008-07-11 | 443 | 四轴立卧加 |
| 445 | 铣面钻镗孔 | 2008-07-11 | 2008-07-14 | 444 | 四轴卧加 |
| 446 | 铣面钻镗孔 | 2008-07-14 | 2008-07-16 | 445 | 四轴卧加 |
| 447 | 倒角去毛刺 | 2008-07-16 | 2008-07-17 | 446 | 毛刺台二 |
| 448 | 钻镗孔锪窝 | 2008-07-17 | 2008-07-23 | 447 | 五轴立卧加 |
| 449 | 钻镗孔切槽 | 2008-07-23 | 2008-07-25 | 448 | 四轴立卧加 |
| 450 | 车外圆端面 | 2008-07-25 | 2008-07-25 | 449 | 数控车 |
| 451 | 车外圆端面 | 2008-07-25 | 2008-07-26 | 450 | 数控车 |
| 452 | 铣面钻镗孔 | 2008-07-26 | 2008-07-30 | 451 | 五轴立卧加 |
| 453 | 铣面钻镗孔 | 2008-07-30 | 2008-08-01 | 452 | 五轴立卧加 |
| 454 | 倒角去毛刺 | 2008-08-01 | 2008-08-02 | 453 | 毛刺台二 |
| 455 | 镗孔倒角 | 2008-08-02 | 2008-08-02 | 454 | 数控车 |
| 456 | 镗孔攻螺纹 | 2008-08-03 | 2008-08-05 | 455 | 中型普车 |
| 457 | 镗孔切槽 | 2008-08-05 | 2008-08-05 | 456 | 数控车 |
| 458 | 攻螺纹 | 2008-08-06 | 2008-08-08 | 457 | 毛刺台二 |
| 459 | 去毛刺 | 2008-08-08 | 2008-08-09 | 458 | 毛刺台二 |
| 460 | 清洗 | 2008-08-09 | 2008-08-09 | 459 | 毛刺台二 |
| 461 | 检验 | 2008-08-10 | 2008-08-11 | 460 | 检验 |
| 462 | 铣面型槽 | 2008-08-11 | 2008-08-13 | 461 | 二工段立加三轴64V |
| 463 | 镗孔倒角 | 2008-08-13 | 2008-08-14 | 462 | 二工段立加三轴64V |
| 464 | 划面 | 2008-08-14 | 2008-08-15 | 463 | 毛刺台二 |
| 465 | 去毛刺 | 2008-08-15 | 2008-08-15 | 464 | 毛刺台二 |
| 466 | 电化学去毛刺 | 2008-08-15 | 2008-08-16 | 465 | 毛刺台二 |
| 467 | 清洗 | 2008-08-16 | 2008-08-17 | 466 | 毛刺台二 |
| 468 | 强度试验 | 2008-08-17 | 2008-08-18 | 467 | 试验间 |
| 469 | 钻孔 | 2008-08-18 | 2008-08-18 | 468 | 毛刺台二 |
| 470 | 去毛刺 | 2008-08-18 | 2008-08-18 | 469 | 毛刺台二 |
| 471 | 清洗 | 2008-08-18 | 2008-08-19 | 470 | 毛刺台二 |
| 472 | 强度试验 | 2008-08-19 | 2008-08-19 | 471 | 试验间 |
| 473 | 气密试验 | 2008-08-19 | 2008-08-20 | 472 | 试验间 |
| 474 | 研平面 | 2008-08-20 | 2008-08-21 | 473 | 研磨台 |
| 475 | 研平面 | 2008-08-21 | 2008-08-22 | 474 | 研磨台 |
| 476 | 研平面 | 2008-08-22 | 2008-08-22 | 475 | 研磨台 |
| 477 | 浸泡 | 2008-08-22 | 2008-08-22 | 476 | 试验间 |
| 478 | 超声波清洗 | 2008-08-22 | 2008-08-23 | 477 | 试验间 |
| 479 | 冲洗 | 2008-08-23 | 2008-08-24 | 478 | 试验间 |
| 480 | 检验 | 2008-08-25 | 2008-08-25 | 479 | 检验 |
| 481 | 单孔滑油冲洗 | 2008-08-28 | 2008-08-29 | 480 | 试验间 |
| 482 | 浸泡 | 2008-08-29 | 2008-08-29 | 481 | 试验间 |
| 483 | 超声波清洗 | 2008-08-29 | 2008-08-30 | 482 | 试验间 |
| 484 | 清洗 | 2008-08-30 | 2008-08-31 | 483 | 试验间 |
| 485 | 油气交替冲洗 | 2008-08-31 | 2008-09-01 | 484 | 试验间 |
| 486 | 分组 | 2008-09-01 | 2008-09-01 | 485 | 毛刺台二 |
| 487 | 检验 | 2008-09-02 | 2008-09-02 | 486 | 检验 |
| 488 | 壳体 | 2008-06-15 | 2008-09-02 |  |  |
| 489 | 铣平面 | 2008-06-15 | 2008-06-15 |  | 立式钻床 |
| 490 | 铣平面 | 2008-06-15 | 2008-06-16 | 489 | 立式钻床 |

| ID | Task | Start | Finish | Predecessors | Resources |
| --- | --- | --- | --- | --- | --- |
| 491 | 铣平面钻镗孔 | 2008-06-16 | 2008-06-17 | 490 | 二工段立加三轴64V |
| 492 | 铣平面钻镗孔 | 2008-06-17 | 2008-06-20 | 491 | 四轴卧加 |
| 493 | 铣平面钻镗孔 | 2008-06-20 | 2008-06-23 | 492 | 五轴立卧加 |
| 494 | 铣平面钻镗孔 | 2008-06-23 | 2008-06-26 | 493 | 二工段立加三轴64V |
| 495 | 去毛刺打字 | 2008-06-26 | 2008-06-26 | 494 | 毛刺台二 |
| 496 | 清洗 | 2008-06-26 | 2008-06-26 | 495 | 毛刺台一 |
| 497 | 铣面钻镗孔 | 2008-06-28 | 2008-07-01 | 496 | 二工段立加三轴64V |
| 498 | 镗孔 切槽 | 2008-07-01 | 2008-07-02 | 497 | 数控车 |
| 499 | 镗孔 切槽 | 2008-07-02 | 2008-07-03 | 498 | 数控车 |
| 500 | 镗孔 切槽 | 2008-07-03 | 2008-07-04 | 499 | 数控车 |
| 501 | 铣面钻镗孔 | 2008-07-04 | 2008-07-06 | 500 | 四轴卧加 |
| 502 | 铣面钻镗孔 | 2008-07-06 | 2008-07-08 | 501 | 四轴卧加 |
| 503 | 镗孔 切槽 | 2008-07-08 | 2008-07-10 | 502 | 数控车 |
| 504 | 切槽 | 2008-07-10 | 2008-07-11 | 503 | 四轴立卧加 |
| 505 | 铣面钻镗孔 | 2008-07-11 | 2008-07-15 | 504 | 四轴卧加 |
| 506 | 铣面钻镗孔 | 2008-07-15 | 2008-07-17 | 505 | 四轴卧加 |
| 507 | 倒角去毛刺 | 2008-07-17 | 2008-07-17 | 506 | 毛刺台二 |
| 508 | 钻镗孔锪窝 | 2008-07-17 | 2008-07-23 | 507 | 五轴立卧加 |
| 509 | 钻镗孔切槽 | 2008-07-23 | 2008-07-25 | 508 | 四轴立卧加 |
| 510 | 车外圆端面 | 2008-07-25 | 2008-07-25 | 509 | 数控车 |
| 511 | 车外圆端面 | 2008-07-25 | 2008-07-26 | 510 | 数控车 |
| 512 | 铣面钻镗孔 | 2008-07-26 | 2008-07-31 | 511 | 五轴立卧加 |
| 513 | 铣面钻镗孔 | 2008-07-31 | 2008-08-01 | 512 | 五轴立卧加 |
| 514 | 倒角去毛刺 | 2008-08-02 | 2008-08-02 | 513 | 毛刺台二 |
| 515 | 镗孔倒角 | 2008-08-02 | 2008-08-03 | 514 | 数控车 |
| 516 | 镗孔攻螺纹 | 2008-08-03 | 2008-08-05 | 515 | 中型普车 |
| 517 | 镗孔切槽 | 2008-08-05 | 2008-08-06 | 516 | 数控车 |
| 518 | 攻螺纹 | 2008-08-06 | 2008-08-08 | 517 | 毛刺台二 |
| 519 | 去毛刺 | 2008-08-08 | 2008-08-09 | 518 | 毛刺台二 |
| 520 | 清洗 | 2008-08-09 | 2008-08-09 | 519 | 毛刺台二 |
| 521 | 检验 | 2008-08-10 | 2008-08-11 | 520 | 检验 |
| 522 | 铣面型槽 | 2008-08-11 | 2008-08-13 | 521 | 二工段立加三轴64V |
| 523 | 镗孔倒角 | 2008-08-13 | 2008-08-14 | 522 | 二工段立加三轴64V |
| 524 | 划面 | 2008-08-14 | 2008-08-15 | 523 | 毛刺台二 |
| 525 | 去毛刺 | 2008-08-15 | 2008-08-15 | 524 | 毛刺台二 |
| 526 | 电化学去毛刺 | 2008-08-15 | 2008-08-16 | 525 | 毛刺台二 |
| 527 | 清洗 | 2008-08-16 | 2008-08-17 | 526 | 毛刺台二 |
| 528 | 强度试验 | 2008-08-17 | 2008-08-18 | 527 | 试验间 |
| 529 | 钻孔 | 2008-08-18 | 2008-08-18 | 528 | 毛刺台二 |
| 530 | 去毛刺 | 2008-08-18 | 2008-08-18 | 529 | 毛刺台二 |
| 531 | 清洗 | 2008-08-18 | 2008-08-19 | 530 | 毛刺台二 |
| 532 | 强度试验 | 2008-08-19 | 2008-08-19 | 531 | 试验间 |
| 533 | 气密试验 | 2008-08-19 | 2008-08-20 | 532 | 试验间 |
| 534 | 研平面 | 2008-08-20 | 2008-08-21 | 533 | 研磨台 |
| 535 | 研平面 | 2008-08-21 | 2008-08-22 | 534 | 研磨台 |
| 536 | 研平面 | 2008-08-22 | 2008-08-22 | 535 | 研磨台 |
| 537 | 浸泡 | 2008-08-22 | 2008-08-22 | 536 | 试验间 |
| 538 | 超声波清洗 | 2008-08-22 | 2008-08-23 | 537 | 试验间 |
| 539 | 冲洗 | 2008-08-23 | 2008-08-24 | 538 | 试验间 |
| 540 | 检验 | 2008-08-25 | 2008-08-25 | 539 | 检验 |
| 541 | 单孔滑油冲洗 | 2008-08-28 | 2008-08-29 | 540 | 试验间 |
| 542 | 浸泡 | 2008-08-29 | 2008-08-29 | 541 | 试验间 |
| 543 | 超声波清洗 | 2008-08-29 | 2008-08-30 | 542 | 试验间 |
| 544 | 清洗 | 2008-08-30 | 2008-08-31 | 543 | 试验间 |
| 545 | 油气交替冲洗 | 2008-08-31 | 2008-09-01 | 544 | 试验间 |
| 546 | 分组 | 2008-09-01 | 2008-09-01 | 545 | 毛刺台二 |
| 547 | 检验 | 2008-09-02 | 2008-09-02 | 546 | 检验 |
| 548 | 壳体 | 2008-06-15 | 2008-08-28 |  |  |
| 549 | 领取铸件 | 2008-06-15 | 2008-06-15 |  | 备料中心 |
| 550 | 打批次号 | 2008-06-15 | 2008-06-15 | 549 | 毛刺台一 |
| 551 | 铣浇冒口 | 2008-06-15 | 2008-06-16 | 550 | 立铣 |
| 552 | 划线 | 2008-06-16 | 2008-06-16 | 551 | 钳工台 |
| 553 | 铣平面划线 | 2008-06-16 | 2008-06-16 | 552 | 立铣 |
| 554 | 铣平面划线 | 2008-06-16 | 2008-06-16 | 553 | 立铣 |
| 555 | 去毛刺 | 2008-06-16 | 2008-06-17 | 554 | 毛刺台二 |
| 556 | 清洗 | 2008-06-17 | 2008-06-17 | 555 | 毛刺台二 |
| 557 | 铣平面钻镗孔 | 2008-06-17 | 2008-06-18 | 556 | 五轴立卧加 |
| 558 | 去毛刺打印 | 2008-06-18 | 2008-06-18 | 557 | 毛刺台二 |
| 559 | 钻镗孔 | 2008-06-18 | 2008-06-19 | 558 | 五轴立卧加 |
| 560 | 去毛刺 | 2008-06-19 | 2008-06-19 | 559 | 毛刺台二 |

| ID | Task | Start | Finish | Predecessors | Resources |
| --- | --- | --- | --- | --- | --- |
| 561 | 清洗 | 2008-06-19 | 2008-06-20 | 560 | 毛刺台二 |
| 562 | 气密试验 | 2008-06-20 | 2008-06-20 | 561 | 试验间 |
| 563 | 铣面钻镗孔 | 2008-06-20 | 2008-06-22 | 562 | 五轴立卧加 |
| 564 | 去毛刺打印 | 2008-06-22 | 2008-06-23 | 563 | 毛刺台二 |
| 565 | 清洗 | 2008-06-23 | 2008-06-24 | 564 | 毛刺台二 |
| 566 | 检验 | 2008-06-24 | 2008-06-25 | 565 | 检验 |
| 567 | 研磨 | 2008-06-27 | 2008-06-27 | 566 | 研磨台 |
| 568 | 清洗 | 2008-06-27 | 2008-06-28 | 567 | 毛刺台二 |
| 569 | 铣面钻镗孔 | 2008-06-28 | 2008-06-30 | 568 | 五轴立卧加 |
| 570 | 钻镗孔铣螺纹 | 2008-06-30 | 2008-06-30 | 569 | 五轴立卧加 |
| 571 | 清洗 | 2008-07-01 | 2008-07-01 | 570 | 毛刺台一 |
| 572 | 攻螺纹 | 2008-07-01 | 2008-07-01 | 571 | 立式钻床 |
| 573 | 去毛刺 | 2008-07-01 | 2008-07-02 | 572 | 毛刺台二 |
| 574 | 清洗 | 2008-07-02 | 2008-07-02 | 573 | 毛刺台二 |
| 575 | 铣面钻镗孔 | 2008-07-02 | 2008-07-03 | 574 | 五轴立卧加 |
| 576 | 清洗 | 2008-07-04 | 2008-07-04 | 575 | 毛刺台二 |
| 577 | 去毛刺 | 2008-07-04 | 2008-07-05 | 576 | 毛刺台二 |
| 578 | 锪平面 | 2008-07-05 | 2008-07-05 | 577 | 立式钻床 |
| 579 | 清洗 | 2008-07-05 | 2008-07-06 | 578 | 毛刺台二 |
| 580 | 铣面钻镗孔铣螺纹 | 2008-07-06 | 2008-07-07 | 579 | 五轴立卧加 |
| 581 | 镗孔切槽 | 2008-07-07 | 2008-07-07 | 580 | 数控车 |
| 582 | 镗孔切槽 | 2008-07-07 | 2008-07-07 | 581 | 数控车 |
| 583 | 切槽 | 2008-07-07 | 2008-07-07 | 582 | 数控车 |
| 584 | 切槽 | 2008-07-07 | 2008-07-07 | 583 | 数控车 |
| 585 | 钻镗孔切槽 | 2008-07-07 | 2008-07-08 | 584 | 五轴立卧加 |
| 586 | 切槽 | 2008-07-08 | 2008-07-08 | 585 | 数控车 |
| 587 | 切槽 | 2008-07-08 | 2008-07-08 | 586 | 数控车 |
| 588 | 车端面切槽 | 2008-07-08 | 2008-07-09 | 587 | 数控车 |
| 589 | 车端面切槽 | 2008-07-09 | 2008-07-10 | 588 | 数控车 |
| 590 | 钻孔攻螺纹 | 2008-07-10 | 2008-07-11 | 589 | 五轴立卧加 |
| 591 | 钻孔 | 2008-07-11 | 2008-07-11 | 590 | 立式钻床 |
| 592 | 攻螺纹 | 2008-07-11 | 2008-07-11 | 591 | 立式钻床 |
| 593 | 攻螺纹 | 2008-07-11 | 2008-07-11 | 592 | 立式钻床 |
| 594 | 攻螺纹 | 2008-07-11 | 2008-07-11 | 593 | 立式钻床 |
| 595 | 清洗 | 2008-07-11 | 2008-07-11 | 594 | 毛刺台一 |
| 596 | 去毛刺 | 2008-07-11 | 2008-07-12 | 595 | 毛刺台一 |
| 597 | 清洗 | 2008-07-12 | 2008-07-13 | 596 | 毛刺台一 |
| 598 | 去毛刺 | 2008-07-18 | 2008-07-18 | 597 | 毛刺台一 |
| 599 | 超声波清洗 | 2008-07-18 | 2008-07-18 | 598 | 试验间 |
| 600 | 铣面钻镗孔 | 2008-07-18 | 2008-07-20 | 599 | 五轴立卧加 |
| 601 | 清洗 | 2008-07-21 | 2008-07-21 | 600 | 毛刺台一 |
| 602 | 去毛刺 | 2008-07-21 | 2008-07-22 | 601 | 毛刺台一 |
| 603 | 清洗 | 2008-07-22 | 2008-07-22 | 602 | 毛刺台一 |
| 604 | 铣面钻镗孔 | 2008-07-22 | 2008-07-23 | 603 | 五轴立卧加 |
| 605 | 镗孔切槽 | 2008-07-23 | 2008-07-23 | 604 | 数控车 |
| 606 | 镗孔切槽 | 2008-07-23 | 2008-07-23 | 605 | 数控车 |
| 607 | 铣面钻镗孔 | 2008-07-23 | 2008-07-24 | 606 | 五轴立卧加 |
| 608 | 镗孔切槽 | 2008-07-24 | 2008-07-24 | 607 | 数控车 |
| 609 | 镗孔切槽 | 2008-07-24 | 2008-07-24 | 608 | 数控车 |
| 610 | 铣面钻镗孔 | 2008-07-24 | 2008-07-25 | 609 | 五轴立卧加 |
| 611 | 钻气孔 | 2008-07-26 | 2008-07-26 | 610 | 立式钻床 |
| 612 | 清洗 | 2008-07-26 | 2008-07-26 | 611 | 毛刺台二 |
| 613 | 去毛刺 | 2008-07-26 | 2008-07-27 | 612 | 毛刺台二 |
| 614 | 清洗 | 2008-07-27 | 2008-07-28 | 613 | 毛刺台二 |
| 615 | 钻斜孔 | 2008-07-28 | 2008-07-28 | 614 | 立式钻床 |
| 616 | 钻斜孔 | 2008-07-28 | 2008-07-29 | 615 | 五轴立卧加 |
| 617 | 钻斜孔 | 2008-07-29 | 2008-07-29 | 616 | 五轴立卧加 |
| 618 | 铣面钻镗孔 | 2008-07-29 | 2008-07-30 | 617 | 五轴立卧加 |
| 619 | 攻螺纹 | 2008-07-30 | 2008-07-30 | 618 | 立式钻床 |
| 620 | 清洗 | 2008-07-30 | 2008-07-31 | 619 | 毛刺台二 |
| 621 | 去毛刺 | 2008-07-31 | 2008-08-01 | 620 | 毛刺台二 |
| 622 | 清洗 | 2008-08-01 | 2008-08-01 | 621 | 毛刺台二 |
| 623 | 检验 | 2008-08-02 | 2008-08-03 | 622 | 检验 |
| 624 | 高压试验 | 2008-08-03 | 2008-08-04 | 623 | 试验间 |
| 625 | 钻孔攻螺纹 | 2008-08-04 | 2008-08-04 | 624 | 五轴立卧加 |
| 626 | 钻孔 | 2008-08-05 | 2008-08-05 | 625 | 立式钻床 |
| 627 | 钻斜孔 | 2008-08-05 | 2008-08-05 | 626 | 五轴立卧加 |
| 628 | 清洗 | 2008-08-06 | 2008-08-06 | 627 | 毛刺台二 |
| 629 | 去毛刺 | 2008-08-06 | 2008-08-07 | 628 | 毛刺台二 |
| 630 | 中压试验 | 2008-08-07 | 2008-08-07 | 629 | 试验间 |

| ID | Task | Start | Finish | Predecessors | Complete | Resources |
| --- | --- | --- | --- | --- | --- | --- |
| 631 | 低压试验 | 2008-08-07 | 2008-08-08 | 630 |  | 试验间 |
| 632 | 钻斜孔 | 2008-08-08 | 2008-08-08 | 631 |  | 五轴立卧加 |
| 633 | 钻斜孔 | 2008-08-08 | 2008-08-09 | 632 |  | 五轴立卧加 |
| 634 | 钻斜孔 | 2008-08-09 | 2008-08-10 | 633 |  | 五轴立卧加 |
| 635 | 攻螺纹 | 2008-08-11 | 2008-08-11 | 634 |  | 立式钻床 |
| 636 | 钻孔攻螺纹 | 2008-08-11 | 2008-08-12 | 635 |  | 五轴立卧加 |
| 637 | 钻斜孔 | 2008-08-12 | 2008-08-12 | 636 |  | 五轴立卧加 |
| 638 | 钻偏心孔 | 2008-08-12 | 2008-08-13 | 637 |  | 立式钻床 |
| 639 | 清洗 | 2008-08-13 | 2008-08-13 | 638 |  | 毛刺台二 |
| 640 | 去毛刺 | 2008-08-13 | 2008-08-14 | 639 |  | 毛刺台二 |
| 641 | 电化学去毛刺 | 2008-08-14 | 2008-08-14 | 640 |  | 毛刺台二 |
| 642 | 气密试验 | 2008-08-14 | 2008-08-14 | 641 |  | 试验间 |
| 643 | 研磨平面 | 2008-08-15 | 2008-08-15 | 642 |  | 研磨台 |
| 644 | 浸泡 | 2008-08-15 | 2008-08-15 | 643 |  | 试验间 |
| 645 | 超声波清洗 | 2008-08-15 | 2008-08-15 | 644 |  | 试验间 |
| 646 | 检验 | 2008-08-16 | 2008-08-17 | 645 |  | 检验 |
| 647 | 冲洗 | 2008-08-17 | 2008-08-18 | 646 |  | 试验间 |
| 648 | 捅油路 | 2008-08-21 | 2008-08-21 | 647 |  | 毛刺台二 |
| 649 | 钻孔攻螺纹 | 2008-08-21 | 2008-08-22 | 648 |  | 立式钻床 |
| 650 | 清洗 | 2008-08-22 | 2008-08-22 | 649 |  | 毛刺台二 |
| 651 | 镗内孔 | 2008-08-22 | 2008-08-22 | 650 |  | 坐标镗 |
| 652 | 去毛刺 | 2008-08-23 | 2008-08-23 | 651 |  | 毛刺台一 |
| 653 | 清洗 | 2008-08-23 | 2008-08-24 | 652 |  | 毛刺台一 |
| 654 | 检验 | 2008-08-25 | 2008-08-25 | 653 |  | 检验 |
| 655 | 高压试验 | 2008-08-25 | 2008-08-25 | 654 |  | 试验间 |
| 656 | 单孔滑油冲洗 | 2008-08-25 | 2008-08-26 | 655 |  | 试验间 |
| 657 | 浸泡 | 2008-08-26 | 2008-08-26 | 656 |  | 试验间 |
| 658 | 超声波清洗 | 2008-08-26 | 2008-08-26 | 657 |  | 试验间 |
| 659 | 冲洗 | 2008-08-26 | 2008-08-27 | 658 |  | 试验间 |
| 660 | 检验 | 2008-08-27 | 2008-08-28 | 659 |  | 检验 |
| 661 | 壳体 | 2008-06-02 | 2008-08-22 |  |  |  |
| 662 | 切槽 | 2008-06-14 | 2008-06-14 |  |  | 数控车 |
| 663 | 已完成任务 | 2008-06-02 | 2008-06-02 | 662 | 100% |  |
| 664 | 钻镗孔切槽 | 2008-06-14 | 2008-06-18 | 663 |  | 五轴立卧加 |
| 665 | 切槽 | 2008-06-18 | 2008-06-18 | 664 |  | 数控车 |
| 666 | 切槽 | 2008-06-18 | 2008-06-18 | 665 |  | 数控车 |
| 667 | 车端面切槽 | 2008-06-18 | 2008-06-19 | 666 |  | 数控车 |
| 668 | 车端面切槽 | 2008-06-19 | 2008-06-20 | 667 |  | 数控车 |
| 669 | 钻孔攻螺纹 | 2008-06-20 | 2008-06-23 | 668 |  | 五轴立卧加 |
| 670 | 钻孔 | 2008-06-23 | 2008-06-23 | 669 |  | 立式钻床 |
| 671 | 攻螺纹 | 2008-06-23 | 2008-06-23 | 670 |  | 立式钻床 |
| 672 | 攻螺纹 | 2008-06-23 | 2008-06-23 | 671 |  | 立式钻床 |
| 673 | 攻螺纹 | 2008-06-23 | 2008-06-23 | 672 |  | 立式钻床 |
| 674 | 清洗 | 2008-06-23 | 2008-06-24 | 673 |  | 毛刺台一 |
| 675 | 去毛刺 | 2008-06-24 | 2008-06-25 | 674 |  | 毛刺台一 |
| 676 | 清洗 | 2008-06-25 | 2008-06-25 | 675 |  | 毛刺台一 |
| 677 | 去毛刺 | 2008-06-30 | 2008-07-01 | 676 |  | 毛刺台一 |
| 678 | 超声波清洗 | 2008-07-01 | 2008-07-01 | 677 |  | 试验间 |
| 679 | 铣面钻镗孔 | 2008-07-01 | 2008-07-04 | 678 |  | 五轴立卧加 |
| 680 | 清洗 | 2008-07-04 | 2008-07-04 | 679 |  | 毛刺台一 |
| 681 | 去毛刺 | 2008-07-04 | 2008-07-05 | 680 |  | 毛刺台一 |
| 682 | 清洗 | 2008-07-05 | 2008-07-06 | 681 |  | 毛刺台一 |
| 683 | 铣面钻镗孔 | 2008-07-06 | 2008-07-09 | 682 |  | 五轴立卧加 |
| 684 | 镗孔切槽 | 2008-07-09 | 2008-07-09 | 683 |  | 数控车 |
| 685 | 镗孔切槽 | 2008-07-09 | 2008-07-09 | 684 |  | 数控车 |
| 686 | 铣面钻镗孔 | 2008-07-09 | 2008-07-11 | 685 |  | 五轴立卧加 |
| 687 | 镗孔切槽 | 2008-07-11 | 2008-07-11 | 686 |  | 数控车 |
| 688 | 镗孔切槽 | 2008-07-11 | 2008-07-11 | 687 |  | 数控车 |
| 689 | 铣面钻镗孔 | 2008-07-11 | 2008-07-15 | 688 |  | 五轴立卧加 |
| 690 | 钻气孔 | 2008-07-15 | 2008-07-15 | 689 |  | 立式钻床 |
| 691 | 清洗 | 2008-07-15 | 2008-07-16 | 690 |  | 毛刺台二 |
| 692 | 去毛刺 | 2008-07-16 | 2008-07-16 | 691 |  | 毛刺台二 |
| 693 | 清洗 | 2008-07-16 | 2008-07-17 | 692 |  | 毛刺台二 |
| 694 | 钻斜孔 | 2008-07-17 | 2008-07-17 | 693 |  | 立式钻床 |
| 695 | 钻斜孔 | 2008-07-17 | 2008-07-18 | 694 |  | 五轴立卧加 |
| 696 | 钻斜孔 | 2008-07-18 | 2008-07-19 | 695 |  | 五轴立卧加 |
| 697 | 铣面钻镗孔 | 2008-07-19 | 2008-07-22 | 696 |  | 五轴立卧加 |
| 698 | 攻螺纹 | 2008-07-22 | 2008-07-22 | 697 |  | 立式钻床 |
| 699 | 清洗 | 2008-07-22 | 2008-07-22 | 698 |  | 毛刺台二 |
| 700 | 去毛刺 | 2008-07-22 | 2008-07-23 | 699 |  | 毛刺台二 |

| ID | Task | Start | Finish | Predecessors | Complete | Resources |
| --- | --- | --- | --- | --- | --- | --- |
| 701 | 清洗 | 2008-07-23 | 2008-07-23 | 700 |  | 毛刺台二 |
| 702 | 检验 | 2008-07-24 | 2008-07-24 | 701 |  | 检验 |
| 703 | 高压试验 | 2008-07-24 | 2008-07-25 | 702 |  | 试验间 |
| 704 | 钻孔攻螺纹 | 2008-07-25 | 2008-07-27 | 703 |  | 五轴立卧加 |
| 705 | 钻孔 | 2008-07-27 | 2008-07-27 | 704 |  | 立式钻床 |
| 706 | 钻斜孔 | 2008-07-27 | 2008-07-28 | 705 |  | 五轴立卧加 |
| 707 | 清洗 | 2008-07-28 | 2008-07-28 | 706 |  | 毛刺台二 |
| 708 | 去毛刺 | 2008-07-28 | 2008-07-29 | 707 |  | 毛刺台二 |
| 709 | 中压试验 | 2008-07-29 | 2008-07-29 | 708 |  | 试验间 |
| 710 | 低压试验 | 2008-07-29 | 2008-07-30 | 709 |  | 试验间 |
| 711 | 钻斜孔 | 2008-07-30 | 2008-07-30 | 710 |  | 五轴立卧加 |
| 712 | 钻斜孔 | 2008-07-30 | 2008-07-31 | 711 |  | 五轴立卧加 |
| 713 | 钻斜孔 | 2008-07-31 | 2008-08-01 | 712 |  | 五轴立卧加 |
| 714 | 攻螺纹 | 2008-08-01 | 2008-08-01 | 713 |  | 立式钻床 |
| 715 | 钻孔攻螺纹 | 2008-08-01 | 2008-08-03 | 714 |  | 五轴立卧加 |
| 716 | 钻斜孔 | 2008-08-03 | 2008-08-04 | 715 |  | 五轴立卧加 |
| 717 | 钻偏心孔 | 2008-08-04 | 2008-08-04 | 716 |  | 立式钻床 |
| 718 | 清洗 | 2008-08-04 | 2008-08-05 | 717 |  | 毛刺台二 |
| 719 | 去毛刺 | 2008-08-05 | 2008-08-05 | 718 |  | 毛刺台二 |
| 720 | 电化学去毛刺 | 2008-08-05 | 2008-08-06 | 719 |  | 毛刺台二 |
| 721 | 气密试验 | 2008-08-06 | 2008-08-06 | 720 |  | 试验间 |
| 722 | 研磨平面 | 2008-08-07 | 2008-08-07 | 721 |  | 研磨台 |
| 723 | 浸泡 | 2008-08-07 | 2008-08-07 | 722 |  | 试验间 |
| 724 | 超声波清洗 | 2008-08-07 | 2008-08-07 | 723 |  | 试验间 |
| 725 | 检验 | 2008-08-08 | 2008-08-08 | 724 |  | 检验 |
| 726 | 冲洗 | 2008-08-08 | 2008-08-09 | 725 |  | 试验间 |
| 727 | 捅油路 | 2008-08-12 | 2008-08-13 | 726 |  | 毛刺台二 |
| 728 | 钻孔攻螺纹 | 2008-08-13 | 2008-08-15 | 727 |  | 立式钻床 |
| 729 | 清洗 | 2008-08-15 | 2008-08-15 | 728 |  | 毛刺台二 |
| 730 | 镗内孔 | 2008-08-15 | 2008-08-16 | 729 |  | 坐标镗 |
| 731 | 去毛刺 | 2008-08-16 | 2008-08-17 | 730 |  | 毛刺台一 |
| 732 | 清洗 | 2008-08-17 | 2008-08-18 | 731 |  | 毛刺台一 |
| 733 | 检验 | 2008-08-19 | 2008-08-19 | 732 |  | 检验 |
| 734 | 高压试验 | 2008-08-19 | 2008-08-19 | 733 |  | 试验间 |
| 735 | 单孔滑油冲洗 | 2008-08-19 | 2008-08-20 | 734 |  | 试验间 |
| 736 | 浸泡 | 2008-08-20 | 2008-08-20 | 735 |  | 试验间 |
| 737 | 超声波清洗 | 2008-08-20 | 2008-08-20 | 736 |  | 试验间 |
| 738 | 冲洗 | 2008-08-20 | 2008-08-21 | 737 |  | 试验间 |
| 739 | 检验 | 2008-08-21 | 2008-08-22 | 738 |  | 检验 |
| 740 | 壳体 | 2008-05-31 | 2008-10-01 |  |  |  |
| 741 | 去毛刺 | 2008-06-15 | 2008-06-15 |  |  | 毛刺台二 |
| 742 | 清洗 | 2008-06-15 | 2008-06-16 | 741 |  | 毛刺台二 |
| 743 | 已完成任务 | 2008-05-31 | 2008-05-31 | 742 | 100% |  |
| 744 | 铣平面钻镗孔 | 2008-06-14 | 2008-06-16 | 743 |  | 五轴立卧加 |
| 745 | 去毛刺打印 | 2008-06-16 | 2008-06-17 | 744 |  | 毛刺台二 |
| 746 | 钻镗孔 | 2008-06-17 | 2008-06-18 | 745 |  | 五轴立卧加 |
| 747 | 去毛刺 | 2008-06-18 | 2008-06-19 | 746 |  | 毛刺台二 |
| 748 | 清洗 | 2008-06-19 | 2008-06-20 | 747 |  | 毛刺台二 |
| 749 | 气密试验 | 2008-06-20 | 2008-06-20 | 748 |  | 试验间 |
| 750 | 铣面钻镗孔 | 2008-06-20 | 2008-06-23 | 749 |  | 五轴立卧加 |
| 751 | 去毛刺打印 | 2008-06-24 | 2008-06-24 | 750 |  | 毛刺台二 |
| 752 | 清洗 | 2008-06-24 | 2008-06-25 | 751 |  | 毛刺台二 |
| 753 | 检验 | 2008-06-25 | 2008-06-26 | 752 |  | 检验 |
| 754 | 研磨 | 2008-06-28 | 2008-06-28 | 753 |  | 研磨台 |
| 755 | 清洗 | 2008-06-28 | 2008-06-29 | 754 |  | 毛刺台二 |
| 756 | 铣面钻镗孔 | 2008-06-29 | 2008-07-02 | 755 |  | 五轴立卧加 |
| 757 | 钻镗孔铣螺纹 | 2008-07-02 | 2008-07-03 | 756 |  | 五轴立卧加 |
| 758 | 清洗 | 2008-07-04 | 2008-07-04 | 757 |  | 毛刺台一 |
| 759 | 攻螺纹 | 2008-07-04 | 2008-07-04 | 758 |  | 立式钻床 |
| 760 | 去毛刺 | 2008-07-04 | 2008-07-05 | 759 |  | 毛刺台二 |
| 761 | 清洗 | 2008-07-05 | 2008-07-06 | 760 |  | 毛刺台二 |
| 762 | 铣面钻镗孔 | 2008-07-06 | 2008-07-09 | 761 |  | 五轴立卧加 |
| 763 | 清洗 | 2008-07-09 | 2008-07-10 | 762 |  | 毛刺台二 |
| 764 | 去毛刺 | 2008-07-10 | 2008-07-11 | 763 |  | 毛刺台二 |
| 765 | 锪平面 | 2008-07-11 | 2008-07-11 | 764 |  | 立式钻床 |
| 766 | 清洗 | 2008-07-11 | 2008-07-11 | 765 |  | 毛刺台二 |
| 767 | 铣面钻镗孔铣螺纹 | 2008-07-11 | 2008-07-16 | 766 |  | 五轴立卧加 |
| 768 | 镗孔切槽 | 2008-07-16 | 2008-07-16 | 767 |  | 数控车 |
| 769 | 镗孔切槽 | 2008-07-16 | 2008-07-16 | 768 |  | 数控车 |
| 770 | 切槽 | 2008-07-16 | 2008-07-16 | 769 |  | 数控车 |

| ID | Task | Start | Finish | Predecessors | Resources |
| --- | --- | --- | --- | --- | --- |
| 771 | 切槽 | 2008-07-16 | 2008-07-16 | 770 | 数控车 |
| 772 | 钻镗孔切槽 | 2008-07-16 | 2008-07-21 | 771 | 五轴立卧加 |
| 773 | 切槽 | 2008-07-21 | 2008-07-21 | 772 | 数控车 |
| 774 | 切槽 | 2008-07-21 | 2008-07-21 | 773 | 数控车 |
| 775 | 车端面切槽 | 2008-07-21 | 2008-07-22 | 774 | 数控车 |
| 776 | 车端面切槽 | 2008-07-22 | 2008-07-23 | 775 | 数控车 |
| 777 | 钻孔攻螺纹 | 2008-07-23 | 2008-07-25 | 776 | 五轴立卧加 |
| 778 | 钻孔 | 2008-07-25 | 2008-07-25 | 777 | 立式钻床 |
| 779 | 攻螺纹 | 2008-07-25 | 2008-07-26 | 778 | 立式钻床 |
| 780 | 攻螺纹 | 2008-07-26 | 2008-07-26 | 779 | 立式钻床 |
| 781 | 攻螺纹 | 2008-07-26 | 2008-07-26 | 780 | 立式钻床 |
| 782 | 清洗 | 2008-07-26 | 2008-07-27 | 781 | 毛刺台一 |
| 783 | 去毛刺 | 2008-07-27 | 2008-07-27 | 782 | 毛刺台一 |
| 784 | 清洗 | 2008-07-27 | 2008-07-28 | 783 | 毛刺台一 |
| 785 | 去毛刺 | 2008-08-02 | 2008-08-03 | 784 | 毛刺台一 |
| 786 | 超声波清洗 | 2008-08-03 | 2008-08-04 | 785 | 试验间 |
| 787 | 铣面钻镗孔 | 2008-08-04 | 2008-08-07 | 786 | 五轴立卧加 |
| 788 | 清洗 | 2008-08-07 | 2008-08-07 | 787 | 毛刺台一 |
| 789 | 去毛刺 | 2008-08-07 | 2008-08-08 | 788 | 毛刺台一 |
| 790 | 清洗 | 2008-08-08 | 2008-08-08 | 789 | 毛刺台一 |
| 791 | 铣面钻镗孔 | 2008-08-08 | 2008-08-12 | 790 | 五轴立卧加 |
| 792 | 镗孔切槽 | 2008-08-12 | 2008-08-12 | 791 | 数控车 |
| 793 | 镗孔切槽 | 2008-08-12 | 2008-08-12 | 792 | 数控车 |
| 794 | 铣面钻镗孔 | 2008-08-12 | 2008-08-16 | 793 | 五轴立卧加 |
| 795 | 镗孔切槽 | 2008-08-16 | 2008-08-16 | 794 | 数控车 |
| 796 | 镗孔切槽 | 2008-08-16 | 2008-08-16 | 795 | 数控车 |
| 797 | 铣面钻镗孔 | 2008-08-16 | 2008-08-20 | 796 | 五轴立卧加 |
| 798 | 钻气孔 | 2008-08-20 | 2008-08-20 | 797 | 立式钻床 |
| 799 | 清洗 | 2008-08-20 | 2008-08-20 | 798 | 毛刺台二 |
| 800 | 去毛刺 | 2008-08-20 | 2008-08-21 | 799 | 毛刺台二 |
| 801 | 清洗 | 2008-08-21 | 2008-08-22 | 800 | 毛刺台二 |
| 802 | 钻斜孔 | 2008-08-22 | 2008-08-22 | 801 | 立式钻床 |
| 803 | 钻斜孔 | 2008-08-22 | 2008-08-23 | 802 | 五轴立卧加 |
| 804 | 钻斜孔 | 2008-08-23 | 2008-08-24 | 803 | 五轴立卧加 |
| 805 | 铣面钻镗孔 | 2008-08-24 | 2008-08-27 | 804 | 五轴立卧加 |
| 806 | 攻螺纹 | 2008-08-27 | 2008-08-27 | 805 | 立式钻床 |
| 807 | 清洗 | 2008-08-27 | 2008-08-28 | 806 | 毛刺台二 |
| 808 | 去毛刺 | 2008-08-28 | 2008-08-28 | 807 | 毛刺台二 |
| 809 | 清洗 | 2008-08-28 | 2008-08-29 | 808 | 毛刺台二 |
| 810 | 检验 | 2008-08-30 | 2008-08-31 | 809 | 检验 |
| 811 | 高压试验 | 2008-08-31 | 2008-09-01 | 810 | 试验间 |
| 812 | 钻孔攻螺纹 | 2008-09-01 | 2008-09-02 | 811 | 五轴立卧加 |
| 813 | 钻孔 | 2008-09-03 | 2008-09-03 | 812 | 立式钻床 |
| 814 | 钻斜孔 | 2008-09-03 | 2008-09-04 | 813 | 五轴立卧加 |
| 815 | 清洗 | 2008-09-04 | 2008-09-04 | 814 | 毛刺台二 |
| 816 | 去毛刺 | 2008-09-04 | 2008-09-05 | 815 | 毛刺台二 |
| 817 | 中压试验 | 2008-09-05 | 2008-09-05 | 816 | 试验间 |
| 818 | 低压试验 | 2008-09-05 | 2008-09-06 | 817 | 试验间 |
| 819 | 钻斜孔 | 2008-09-06 | 2008-09-07 | 818 | 五轴立卧加 |
| 820 | 钻斜孔 | 2008-09-07 | 2008-09-08 | 819 | 五轴立卧加 |
| 821 | 钻斜孔 | 2008-09-08 | 2008-09-09 | 820 | 五轴立卧加 |
| 822 | 攻螺纹 | 2008-09-09 | 2008-09-09 | 821 | 立式钻床 |
| 823 | 钻孔攻螺纹 | 2008-09-09 | 2008-09-11 | 822 | 五轴立卧加 |
| 824 | 钻斜孔 | 2008-09-11 | 2008-09-11 | 823 | 五轴立卧加 |
| 825 | 钻偏心孔 | 2008-09-12 | 2008-09-12 | 824 | 立式钻床 |
| 826 | 清洗 | 2008-09-12 | 2008-09-12 | 825 | 毛刺台二 |
| 827 | 去毛刺 | 2008-09-12 | 2008-09-13 | 826 | 毛刺台二 |
| 828 | 电化学去毛刺 | 2008-09-13 | 2008-09-14 | 827 | 毛刺台二 |
| 829 | 气密试验 | 2008-09-14 | 2008-09-15 | 828 | 试验间 |
| 830 | 研磨平面 | 2008-09-15 | 2008-09-15 | 829 | 研磨台 |
| 831 | 浸泡 | 2008-09-15 | 2008-09-15 | 830 | 试验间 |
| 832 | 超声波清洗 | 2008-09-15 | 2008-09-15 | 831 | 试验间 |
| 833 | 检验 | 2008-09-16 | 2008-09-16 | 832 | 检验 |
| 834 | 冲洗 | 2008-09-16 | 2008-09-17 | 833 | 试验间 |
| 835 | 捅油路 | 2008-09-20 | 2008-09-20 | 834 | 毛刺台二 |
| 836 | 钻孔攻螺纹 | 2008-09-20 | 2008-09-23 | 835 | 立式钻床 |
| 837 | 清洗 | 2008-09-23 | 2008-09-24 | 836 | 毛刺台二 |
| 838 | 镗内孔 | 2008-09-24 | 2008-09-25 | 837 | 坐标镗 |
| 839 | 去毛刺 | 2008-09-25 | 2008-09-25 | 838 | 毛刺台一 |
| 840 | 清洗 | 2008-09-25 | 2008-09-26 | 839 | 毛刺台一 |

| ID | Task | Start | Finish | Predecessors | Resources |
| --- | --- | --- | --- | --- | --- |
| 841 | 检验 | 2008-09-26 | 2008-09-28 | 840 | 检验 |
| 842 | 高压试验 | 2008-09-28 | 2008-09-28 | 841 | 试验间 |
| 843 | 单孔滑油冲洗 | 2008-09-28 | 2008-09-29 | 842 | 试验间 |
| 844 | 浸泡 | 2008-09-29 | 2008-09-29 | 843 | 试验间 |
| 845 | 超声波清洗 | 2008-09-29 | 2008-09-29 | 844 | 试验间 |
| 846 | 冲洗 | 2008-09-29 | 2008-09-30 | 845 | 试验间 |
| 847 | 检验 | 2008-09-30 | 2008-10-01 | 846 | 检验 |
| 848 | 壳体 | 2008-06-14 | 2008-09-24 |  |  |
| 849 | 铣平面钻镗孔 | 2008-06-14 | 2008-06-16 |  | 五轴立卧加 |
| 850 | 去毛刺打印 | 2008-06-16 | 2008-06-16 | 849 | 毛刺台二 |
| 851 | 钻镗孔 | 2008-06-16 | 2008-06-17 | 850 | 五轴立卧加 |
| 852 | 去毛刺 | 2008-06-18 | 2008-06-18 | 851 | 毛刺台二 |
| 853 | 清洗 | 2008-06-18 | 2008-06-19 | 852 | 毛刺台二 |
| 854 | 气密试验 | 2008-06-19 | 2008-06-19 | 853 | 试验间 |
| 855 | 铣面钻镗孔 | 2008-06-19 | 2008-06-22 | 854 | 五轴立卧加 |
| 856 | 去毛刺打印 | 2008-06-23 | 2008-06-23 | 855 | 毛刺台二 |
| 857 | 清洗 | 2008-06-23 | 2008-06-24 | 856 | 毛刺台二 |
| 858 | 检验 | 2008-06-24 | 2008-06-25 | 857 | 检验 |
| 859 | 研磨 | 2008-06-27 | 2008-06-27 | 858 | 研磨台 |
| 860 | 清洗 | 2008-06-27 | 2008-06-28 | 859 | 毛刺台二 |
| 861 | 铣面钻镗孔 | 2008-06-28 | 2008-07-01 | 860 | 五轴立卧加 |
| 862 | 钻镗孔铣螺纹 | 2008-07-01 | 2008-07-02 | 861 | 五轴立卧加 |
| 863 | 清洗 | 2008-07-03 | 2008-07-03 | 862 | 毛刺台一 |
| 864 | 攻螺纹 | 2008-07-03 | 2008-07-03 | 863 | 立式钻床 [99.62%] |
| 865 | 去毛刺 | 2008-07-03 | 2008-07-04 | 864 | 毛刺台二 |
| 866 | 清洗 | 2008-07-04 | 2008-07-04 | 865 | 毛刺台二 |
| 867 | 铣面钻镗孔 | 2008-07-04 | 2008-07-08 | 866 | 五轴立卧加 |
| 868 | 清洗 | 2008-07-08 | 2008-07-09 | 867 | 毛刺台二 |
| 869 | 去毛刺 | 2008-07-09 | 2008-07-09 | 868 | 毛刺台二 |
| 870 | 锪平面 | 2008-07-09 | 2008-07-09 | 869 | 立式钻床 |
| 871 | 清洗 | 2008-07-09 | 2008-07-10 | 870 | 毛刺台二 |
| 872 | 铣面钻镗孔铣螺纹 | 2008-07-10 | 2008-07-14 | 871 | 五轴立卧加 |
| 873 | 镗孔切槽 | 2008-07-14 | 2008-07-14 | 872 | 数控车 |
| 874 | 镗孔切槽 | 2008-07-14 | 2008-07-14 | 873 | 数控车 |
| 875 | 切槽 | 2008-07-14 | 2008-07-14 | 874 | 数控车 |
| 876 | 切槽 | 2008-07-14 | 2008-07-14 | 875 | 数控车 |
| 877 | 钻镗孔切槽 | 2008-07-14 | 2008-07-18 | 876 | 五轴立卧加 |
| 878 | 切槽 | 2008-07-18 | 2008-07-18 | 877 | 数控车 |
| 879 | 切槽 | 2008-07-18 | 2008-07-18 | 878 | 数控车 |
| 880 | 车端面切槽 | 2008-07-18 | 2008-07-19 | 879 | 数控车 |
| 881 | 车端面切槽 | 2008-07-19 | 2008-07-20 | 880 | 数控车 |
| 882 | 钻孔攻螺纹 | 2008-07-20 | 2008-07-23 | 881 | 五轴立卧加 |
| 883 | 钻孔 | 2008-07-23 | 2008-07-23 | 882 | 立式钻床 |
| 884 | 攻螺纹 | 2008-07-23 | 2008-07-23 | 883 | 立式钻床 [99.58%] |
| 885 | 攻螺纹 | 2008-07-23 | 2008-07-23 | 884 | 立式钻床 |
| 886 | 攻螺纹 | 2008-07-23 | 2008-07-23 | 885 | 立式钻床 |
| 887 | 清洗 | 2008-07-23 | 2008-07-24 | 886 | 毛刺台一 |
| 888 | 去毛刺 | 2008-07-24 | 2008-07-24 | 887 | 毛刺台一 |
| 889 | 清洗 | 2008-07-24 | 2008-07-25 | 888 | 毛刺台一 |
| 890 | 去毛刺 | 2008-07-30 | 2008-07-30 | 889 | 毛刺台一 |
| 891 | 超声波清洗 | 2008-07-30 | 2008-07-30 | 890 | 试验间 |
| 892 | 铣面钻镗孔 | 2008-07-30 | 2008-08-03 | 891 | 五轴立卧加 |
| 893 | 清洗 | 2008-08-03 | 2008-08-04 | 892 | 毛刺台一 |
| 894 | 去毛刺 | 2008-08-04 | 2008-08-05 | 893 | 毛刺台一 |
| 895 | 清洗 | 2008-08-05 | 2008-08-05 | 894 | 毛刺台一 |
| 896 | 铣面钻镗孔 | 2008-08-05 | 2008-08-08 | 895 | 五轴立卧加 |
| 897 | 镗孔切槽 | 2008-08-08 | 2008-08-08 | 896 | 数控车 |
| 898 | 镗孔切槽 | 2008-08-08 | 2008-08-08 | 897 | 数控车 |
| 899 | 铣面钻镗孔 | 2008-08-08 | 2008-08-12 | 898 | 五轴立卧加 |
| 900 | 镗孔切槽 | 2008-08-12 | 2008-08-12 | 899 | 数控车 |
| 901 | 镗孔切槽 | 2008-08-12 | 2008-08-12 | 900 | 数控车 |
| 902 | 铣面钻镗孔 | 2008-08-12 | 2008-08-15 | 901 | 五轴立卧加 |
| 903 | 钻气孔 | 2008-08-15 | 2008-08-15 | 902 | 立式钻床 [100.31%] |
| 904 | 清洗 | 2008-08-15 | 2008-08-15 | 903 | 毛刺台二 |
| 905 | 去毛刺 | 2008-08-15 | 2008-08-16 | 904 | 毛刺台二 |
| 906 | 清洗 | 2008-08-16 | 2008-08-17 | 905 | 毛刺台二 |
| 907 | 钻斜孔 | 2008-08-17 | 2008-08-17 | 906 | 立式钻床 |
| 908 | 钻斜孔 | 2008-08-17 | 2008-08-18 | 907 | 五轴立卧加 |
| 909 | 钻斜孔 | 2008-08-18 | 2008-08-19 | 908 | 五轴立卧加 |
| 910 | 铣面钻镗孔 | 2008-08-19 | 2008-08-21 | 909 | 五轴立卧加 |

| ID | Task | Start | Finish | Predecessors | Complete | Resources |
| --- | --- | --- | --- | --- | --- | --- |
| 911 | 攻螺纹 | 2008-08-21 | 2008-08-21 | 910 |  | 立式钻床 |
| 912 | 清洗 | 2008-08-21 | 2008-08-21 | 911 |  | 毛刺台二 |
| 913 | 去毛刺 | 2008-08-21 | 2008-08-22 | 912 |  | 毛刺台二 |
| 914 | 清洗 | 2008-08-22 | 2008-08-23 | 913 |  | 毛刺台二 |
| 915 | 检验 | 2008-08-24 | 2008-08-25 | 914 |  | 检验 |
| 916 | 高压试验 | 2008-08-25 | 2008-08-25 | 915 |  | 试验间 |
| 917 | 钻孔攻螺纹 | 2008-08-25 | 2008-08-27 | 916 |  | 五轴立卧加 |
| 918 | 钻孔 | 2008-08-27 | 2008-08-27 | 917 |  | 立式钻床 |
| 919 | 钻斜孔 | 2008-08-27 | 2008-08-28 | 918 |  | 五轴立卧加 [106.06%] |
| 920 | 清洗 | 2008-08-28 | 2008-08-28 | 919 |  | 毛刺台二 |
| 921 | 去毛刺 | 2008-08-28 | 2008-08-29 | 920 |  | 毛刺台二 |
| 922 | 中压试验 | 2008-08-29 | 2008-08-29 | 921 |  | 试验间 |
| 923 | 低压试验 | 2008-08-29 | 2008-08-30 | 922 |  | 试验间 |
| 924 | 钻斜孔 | 2008-08-30 | 2008-08-31 | 923 |  | 五轴立卧加 [100.22%] |
| 925 | 钻斜孔 | 2008-08-31 | 2008-09-01 | 924 |  | 五轴立卧加 |
| 926 | 钻斜孔 | 2008-09-01 | 2008-09-02 | 925 |  | 五轴立卧加 |
| 927 | 攻螺纹 | 2008-09-02 | 2008-09-02 | 926 |  | 立式钻床 [99.62%] |
| 928 | 钻孔攻螺纹 | 2008-09-02 | 2008-09-03 | 927 |  | 五轴立卧加 |
| 929 | 钻斜孔 | 2008-09-03 | 2008-09-04 | 928 |  | 五轴立卧加 |
| 930 | 钻偏心孔 | 2008-09-04 | 2008-09-05 | 929 |  | 立式钻床 [101.56%] |
| 931 | 清洗 | 2008-09-05 | 2008-09-05 | 930 |  | 毛刺台二 |
| 932 | 去毛刺 | 2008-09-05 | 2008-09-06 | 931 |  | 毛刺台二 |
| 933 | 电化学去毛刺 | 2008-09-06 | 2008-09-07 | 932 |  | 毛刺台二 |
| 934 | 气密试验 | 2008-09-07 | 2008-09-08 | 933 |  | 试验间 |
| 935 | 研磨平面 | 2008-09-08 | 2008-09-08 | 934 |  | 研磨台 |
| 936 | 浸泡 | 2008-09-08 | 2008-09-08 | 935 |  | 试验间 |
| 937 | 超声波清洗 | 2008-09-08 | 2008-09-08 | 936 |  | 试验间 |
| 938 | 检验 | 2008-09-09 | 2008-09-09 | 937 |  | 检验 |
| 939 | 冲洗 | 2008-09-09 | 2008-09-10 | 938 |  | 试验间 |
| 940 | 捅油路 | 2008-09-13 | 2008-09-13 | 939 |  | 毛刺台二 |
| 941 | 钻孔攻螺纹 | 2008-09-13 | 2008-09-16 | 940 |  | 立式钻床 |
| 942 | 清洗 | 2008-09-16 | 2008-09-17 | 941 |  | 毛刺台二 |
| 943 | 镗内孔 | 2008-09-17 | 2008-09-17 | 942 |  | 坐标镗 |
| 944 | 去毛刺 | 2008-09-18 | 2008-09-18 | 943 |  | 毛刺台一 |
| 945 | 清洗 | 2008-09-18 | 2008-09-19 | 944 |  | 毛刺台一 |
| 946 | 检验 | 2008-09-19 | 2008-09-21 | 945 |  | 检验 |
| 947 | 高压试验 | 2008-09-21 | 2008-09-21 | 946 |  | 试验间 |
| 948 | 单孔滑油冲洗 | 2008-09-21 | 2008-09-22 | 947 |  | 试验间 |
| 949 | 浸泡 | 2008-09-22 | 2008-09-22 | 948 |  | 试验间 |
| 950 | 超声波清洗 | 2008-09-22 | 2008-09-22 | 949 |  | 试验间 |
| 951 | 冲洗 | 2008-09-22 | 2008-09-23 | 950 |  | 试验间 |
| 952 | 检验 | 2008-09-23 | 2008-09-24 | 951 |  | 检验 |
| 953 | 壳体 | 2008-05-30 | 2008-09-23 |  |  |  |
| 954 | 镗孔,切槽 | 2008-06-14 | 2008-06-14 |  |  | 二工段立加三轴64V |
| 955 | 已完成任务 | 2008-05-30 | 2008-05-30 | 954 | 100% |  |
| 956 | 铣平面钻镗孔 | 2008-06-14 | 2008-06-16 | 955 |  | 五轴立卧加 |
| 957 | 去毛刺打印 | 2008-06-16 | 2008-06-16 | 956 |  | 毛刺台二 |
| 958 | 钻镗孔 | 2008-06-16 | 2008-06-17 | 957 |  | 五轴立卧加 |
| 959 | 去毛刺 | 2008-06-18 | 2008-06-18 | 958 |  | 毛刺台二 |
| 960 | 清洗 | 2008-06-18 | 2008-06-19 | 959 |  | 毛刺台二 |
| 961 | 气密试验 | 2008-06-19 | 2008-06-19 | 960 |  | 试验间 |
| 962 | 铣面钻镗孔 | 2008-06-19 | 2008-06-22 | 961 |  | 五轴立卧加 |
| 963 | 去毛刺打印 | 2008-06-22 | 2008-06-23 | 962 |  | 毛刺台二 |
| 964 | 清洗 | 2008-06-23 | 2008-06-24 | 963 |  | 毛刺台二 |
| 965 | 检验 | 2008-06-24 | 2008-06-25 | 964 |  | 检验 |
| 966 | 研磨 | 2008-06-27 | 2008-06-27 | 965 |  | 研磨台 |
| 967 | 清洗 | 2008-06-27 | 2008-06-28 | 966 |  | 毛刺台二 |
| 968 | 铣面钻镗孔 | 2008-06-28 | 2008-07-01 | 967 |  | 五轴立卧加 |
| 969 | 钻镗孔铣螺纹 | 2008-07-01 | 2008-07-02 | 968 |  | 五轴立卧加 |
| 970 | 清洗 | 2008-07-03 | 2008-07-03 | 969 |  | 毛刺台一 |
| 971 | 攻螺纹 | 2008-07-03 | 2008-07-03 | 970 |  | 立式钻床 [100.77%] |
| 972 | 去毛刺 | 2008-07-03 | 2008-07-04 | 971 |  | 毛刺台二 |
| 973 | 清洗 | 2008-07-04 | 2008-07-04 | 972 |  | 毛刺台二 |
| 974 | 铣面钻镗孔 | 2008-07-04 | 2008-07-08 | 973 |  | 五轴立卧加 |
| 975 | 清洗 | 2008-07-08 | 2008-07-09 | 974 |  | 毛刺台二 |
| 976 | 去毛刺 | 2008-07-09 | 2008-07-09 | 975 |  | 毛刺台二 |
| 977 | 锪平面 | 2008-07-09 | 2008-07-09 | 976 |  | 立式钻床 |
| 978 | 清洗 | 2008-07-09 | 2008-07-10 | 977 |  | 毛刺台二 |
| 979 | 铣面钻镗孔铣螺纹 | 2008-07-10 | 2008-07-14 | 978 |  | 五轴立卧加 |
| 980 | 镗孔切槽 | 2008-07-14 | 2008-07-14 | 979 |  | 数控车 |

| ID | Task | Start | Finish | Predecessors | Resources |
| --- | --- | --- | --- | --- | --- |
| 981 | 镗孔切槽 | 2008-07-14 | 2008-07-14 | 980 | 数控车 |
| 982 | 切槽 | 2008-07-14 | 2008-07-14 | 981 | 数控车 |
| 983 | 切槽 | 2008-07-14 | 2008-07-14 | 982 | 数控车 |
| 984 | 钻镗孔切槽 | 2008-07-14 | 2008-07-17 | 983 | 五轴立卧加 |
| 985 | 切槽 | 2008-07-17 | 2008-07-17 | 984 | 数控车 |
| 986 | 切槽 | 2008-07-17 | 2008-07-17 | 985 | 数控车 |
| 987 | 车端面切槽 | 2008-07-17 | 2008-07-18 | 986 | 数控车 |
| 988 | 车端面切槽 | 2008-07-18 | 2008-07-20 | 987 | 数控车 |
| 989 | 钻孔攻螺纹 | 2008-07-20 | 2008-07-22 | 988 | 五轴立卧加 |
| 990 | 钻孔 | 2008-07-22 | 2008-07-22 | 989 | 立式钻床 |
| 991 | 攻螺纹 | 2008-07-23 | 2008-07-23 | 990 | 立式钻床 [100.88%] |
| 992 | 攻螺纹 | 2008-07-23 | 2008-07-23 | 991 | 立式钻床 |
| 993 | 攻螺纹 | 2008-07-23 | 2008-07-23 | 992 | 立式钻床 |
| 994 | 清洗 | 2008-07-23 | 2008-07-23 | 993 | 毛刺台一 |
| 995 | 去毛刺 | 2008-07-23 | 2008-07-24 | 994 | 毛刺台一 |
| 996 | 清洗 | 2008-07-24 | 2008-07-25 | 995 | 毛刺台一 |
| 997 | 去毛刺 | 2008-07-30 | 2008-07-30 | 996 | 毛刺台一 |
| 998 | 超声波清洗 | 2008-07-30 | 2008-07-30 | 997 | 试验间 |
| 999 | 铣面钻镗孔 | 2008-07-30 | 2008-08-03 | 998 | 五轴立卧加 |
| 1000 | 清洗 | 2008-08-03 | 2008-08-04 | 999 | 毛刺台一 |
| 1001 | 去毛刺 | 2008-08-04 | 2008-08-04 | 1000 | 毛刺台一 |
| 1002 | 清洗 | 2008-08-04 | 2008-08-05 | 1001 | 毛刺台一 |
| 1003 | 铣面钻镗孔 | 2008-08-05 | 2008-08-08 | 1002 | 五轴立卧加 |
| 1004 | 镗孔切槽 | 2008-08-08 | 2008-08-08 | 1003 | 数控车 |
| 1005 | 镗孔切槽 | 2008-08-08 | 2008-08-08 | 1004 | 数控车 |
| 1006 | 铣面钻镗孔 | 2008-08-08 | 2008-08-12 | 1005 | 五轴立卧加 |
| 1007 | 镗孔切槽 | 2008-08-12 | 2008-08-12 | 1006 | 数控车 |
| 1008 | 镗孔切槽 | 2008-08-12 | 2008-08-12 | 1007 | 数控车 |
| 1009 | 铣面钻镗孔 | 2008-08-12 | 2008-08-14 | 1008 | 五轴立卧加 |
| 1010 | 钻气孔 | 2008-08-15 | 2008-08-15 | 1009 | 立式钻床 [100.16%] |
| 1011 | 清洗 | 2008-08-15 | 2008-08-15 | 1010 | 毛刺台二 |
| 1012 | 去毛刺 | 2008-08-15 | 2008-08-16 | 1011 | 毛刺台二 |
| 1013 | 清洗 | 2008-08-16 | 2008-08-17 | 1012 | 毛刺台二 |
| 1014 | 钻斜孔 | 2008-08-17 | 2008-08-17 | 1013 | 立式钻床 |
| 1015 | 钻斜孔 | 2008-08-17 | 2008-08-18 | 1014 | 五轴立卧加 |
| 1016 | 钻斜孔 | 2008-08-18 | 2008-08-19 | 1015 | 五轴立卧加 |
| 1017 | 铣面钻镗孔 | 2008-08-19 | 2008-08-21 | 1016 | 五轴立卧加 |
| 1018 | 攻螺纹 | 2008-08-21 | 2008-08-21 | 1017 | 立式钻床 |
| 1019 | 清洗 | 2008-08-21 | 2008-08-21 | 1018 | 毛刺台二 |
| 1020 | 去毛刺 | 2008-08-21 | 2008-08-22 | 1019 | 毛刺台二 |
| 1021 | 清洗 | 2008-08-22 | 2008-08-22 | 1020 | 毛刺台二 |
| 1022 | 检验 | 2008-08-23 | 2008-08-24 | 1021 | 检验 |
| 1023 | 高压试验 | 2008-08-24 | 2008-08-25 | 1022 | 试验间 |
| 1024 | 钻孔攻螺纹 | 2008-08-25 | 2008-08-26 | 1023 | 五轴立卧加 |
| 1025 | 钻孔 | 2008-08-26 | 2008-08-27 | 1024 | 立式钻床 |
| 1026 | 钻斜孔 | 2008-08-27 | 2008-08-28 | 1025 | 五轴立卧加 [111.11%] |
| 1027 | 清洗 | 2008-08-28 | 2008-08-28 | 1026 | 毛刺台二 |
| 1028 | 去毛刺 | 2008-08-28 | 2008-08-29 | 1027 | 毛刺台二 |
| 1029 | 中压试验 | 2008-08-29 | 2008-08-29 | 1028 | 试验间 |
| 1030 | 低压试验 | 2008-08-29 | 2008-08-30 | 1029 | 试验间 |
| 1031 | 钻斜孔 | 2008-08-30 | 2008-08-31 | 1030 | 五轴立卧加 [100.11%] |
| 1032 | 钻斜孔 | 2008-08-31 | 2008-09-01 | 1031 | 五轴立卧加 |
| 1033 | 钻斜孔 | 2008-09-01 | 2008-09-02 | 1032 | 五轴立卧加 |
| 1034 | 攻螺纹 | 2008-09-02 | 2008-09-02 | 1033 | 立式钻床 [100.77%] |
| 1035 | 钻孔攻螺纹 | 2008-09-02 | 2008-09-03 | 1034 | 五轴立卧加 |
| 1036 | 钻斜孔 | 2008-09-03 | 2008-09-04 | 1035 | 五轴立卧加 |
| 1037 | 钻偏心孔 | 2008-09-04 | 2008-09-04 | 1036 | 立式钻床 [100.24%] |
| 1038 | 清洗 | 2008-09-04 | 2008-09-05 | 1037 | 毛刺台二 |
| 1039 | 去毛刺 | 2008-09-05 | 2008-09-06 | 1038 | 毛刺台二 |
| 1040 | 电化学去毛刺 | 2008-09-06 | 2008-09-07 | 1039 | 毛刺台二 |
| 1041 | 气密试验 | 2008-09-07 | 2008-09-08 | 1040 | 试验间 |
| 1042 | 研磨平面 | 2008-09-08 | 2008-09-08 | 1041 | 研磨台 |
| 1043 | 浸泡 | 2008-09-08 | 2008-09-08 | 1042 | 试验间 |
| 1044 | 超声波清洗 | 2008-09-08 | 2008-09-08 | 1043 | 试验间 |
| 1045 | 检验 | 2008-09-09 | 2008-09-09 | 1044 | 检验 |
| 1046 | 冲洗 | 2008-09-09 | 2008-09-10 | 1045 | 试验间 |
| 1047 | 捅油路 | 2008-09-13 | 2008-09-13 | 1046 | 毛刺台二 |
| 1048 | 钻孔攻螺纹 | 2008-09-13 | 2008-09-16 | 1047 | 立式钻床 |
| 1049 | 清洗 | 2008-09-16 | 2008-09-16 | 1048 | 毛刺台二 |
| 1050 | 镗内孔 | 2008-09-16 | 2008-09-17 | 1049 | 坐标镗 |

| ID | Task | Start | Finish | Predecessors | Resources |
| --- | --- | --- | --- | --- | --- |
| 1051 | 去毛刺 | 2008-09-17 | 2008-09-17 | 1050 | 毛刺台一 |
| 1052 | 清洗 | 2008-09-17 | 2008-09-18 | 1051 | 毛刺台一 |
| 1053 | 检验 | 2008-09-18 | 2008-09-19 | 1052 | 检验 |
| 1054 | 高压试验 | 2008-09-19 | 2008-09-19 | 1053 | 试验间 |
| 1055 | 单孔滑油冲洗 | 2008-09-19 | 2008-09-19 | 1054 | 试验间 |
| 1056 | 浸泡 | 2008-09-19 | 2008-09-20 | 1055 | 试验间 |
| 1057 | 超声波清洗 | 2008-09-20 | 2008-09-21 | 1056 | 试验间 |
| 1058 | 冲洗 | 2008-09-21 | 2008-09-22 | 1057 | 试验间 |
| 1059 | 检验 | 2008-09-23 | 2008-09-23 | 1058 | 检验 |
| 1060 | 壳体 | 2008-06-15 | 2008-10-06 |  |  |
| 1061 | 领取铸件 | 2008-06-15 | 2008-06-15 |  | 备料中心 |
| 1062 | 打批次号 | 2008-06-15 | 2008-06-15 | 1061 | 毛刺台一 |
| 1063 | 铣浇冒口 | 2008-06-15 | 2008-06-16 | 1062 | 立铣 |
| 1064 | 划线 | 2008-06-16 | 2008-06-16 | 1063 | 钳工台 |
| 1065 | 铣平面划线 | 2008-06-16 | 2008-06-17 | 1064 | 立铣 |
| 1066 | 铣面镗孔 | 2008-06-17 | 2008-06-17 | 1065 | 二工段立加三轴64V |
| 1067 | 去毛刺 | 2008-06-18 | 2008-06-18 | 1066 | 毛刺台二 |
| 1068 | 清洗 | 2008-06-18 | 2008-06-19 | 1067 | 毛刺台二 |
| 1069 | 铣平面钻镗孔 | 2008-06-19 | 2008-06-20 | 1068 | 五轴立卧加 [100.64%] |
| 1070 | 去毛刺打印 | 2008-06-20 | 2008-06-21 | 1069 | 毛刺台二 |
| 1071 | 钻镗孔 | 2008-06-21 | 2008-06-23 | 1070 | 五轴立卧加 |
| 1072 | 去毛刺 | 2008-06-23 | 2008-06-23 | 1071 | 毛刺台二 |
| 1073 | 清洗 | 2008-06-23 | 2008-06-24 | 1072 | 毛刺台二 |
| 1074 | 气密试验 | 2008-06-24 | 2008-06-24 | 1073 | 试验间 |
| 1075 | 铣面钻镗孔 | 2008-06-24 | 2008-06-27 | 1074 | 五轴立卧加 |
| 1076 | 去毛刺打印 | 2008-06-27 | 2008-06-27 | 1075 | 毛刺台二 |
| 1077 | 清洗 | 2008-06-27 | 2008-06-28 | 1076 | 毛刺台二 |
| 1078 | 检验 | 2008-06-29 | 2008-06-30 | 1077 | 检验 |
| 1079 | 研磨 | 2008-07-02 | 2008-07-02 | 1078 | 研磨台 |
| 1080 | 清洗 | 2008-07-02 | 2008-07-03 | 1079 | 毛刺台二 |
| 1081 | 铣面钻镗孔 | 2008-07-03 | 2008-07-07 | 1080 | 五轴立卧加 |
| 1082 | 钻镗孔铣螺纹 | 2008-07-07 | 2008-07-08 | 1081 | 五轴立卧加 |
| 1083 | 清洗 | 2008-07-08 | 2008-07-09 | 1082 | 毛刺台一 |
| 1084 | 攻螺纹 | 2008-07-09 | 2008-07-09 | 1083 | 立式钻床 |
| 1085 | 去毛刺 | 2008-07-09 | 2008-07-09 | 1084 | 毛刺台二 |
| 1086 | 清洗 | 2008-07-09 | 2008-07-10 | 1085 | 毛刺台二 |
| 1087 | 铣面钻镗孔 | 2008-07-10 | 2008-07-14 | 1086 | 五轴立卧加 |
| 1088 | 清洗 | 2008-07-14 | 2008-07-15 | 1087 | 毛刺台二 |
| 1089 | 去毛刺 | 2008-07-15 | 2008-07-16 | 1088 | 毛刺台二 |
| 1090 | 锪平面 | 2008-07-16 | 2008-07-16 | 1089 | 立式钻床 |
| 1091 | 清洗 | 2008-07-16 | 2008-07-16 | 1090 | 毛刺台二 |
| 1092 | 铣面钻镗孔铣螺纹 | 2008-07-16 | 2008-07-21 | 1091 | 五轴立卧加 |
| 1093 | 镗孔切槽 | 2008-07-21 | 2008-07-21 | 1092 | 数控车 |
| 1094 | 镗孔切槽 | 2008-07-21 | 2008-07-21 | 1093 | 数控车 |
| 1095 | 切槽 | 2008-07-21 | 2008-07-21 | 1094 | 数控车 |
| 1096 | 切槽 | 2008-07-21 | 2008-07-21 | 1095 | 数控车 |
| 1097 | 钻镗孔切槽 | 2008-07-21 | 2008-07-25 | 1096 | 五轴立卧加 |
| 1098 | 切槽 | 2008-07-25 | 2008-07-25 | 1097 | 数控车 |
| 1099 | 切槽 | 2008-07-25 | 2008-07-25 | 1098 | 数控车 |
| 1100 | 车端面切槽 | 2008-07-25 | 2008-07-26 | 1099 | 数控车 |
| 1101 | 车端面切槽 | 2008-07-26 | 2008-07-28 | 1100 | 数控车 |
| 1102 | 钻孔攻螺纹 | 2008-07-28 | 2008-07-30 | 1101 | 五轴立卧加 |
| 1103 | 钻孔 | 2008-07-30 | 2008-07-30 | 1102 | 立式钻床 |
| 1104 | 攻螺纹 | 2008-07-30 | 2008-07-31 | 1103 | 立式钻床 |
| 1105 | 攻螺纹 | 2008-07-31 | 2008-07-31 | 1104 | 立式钻床 |
| 1106 | 攻螺纹 | 2008-07-31 | 2008-07-31 | 1105 | 立式钻床 |
| 1107 | 清洗 | 2008-07-31 | 2008-07-31 | 1106 | 毛刺台一 |
| 1108 | 去毛刺 | 2008-07-31 | 2008-08-01 | 1107 | 毛刺台一 |
| 1109 | 清洗 | 2008-08-01 | 2008-08-02 | 1108 | 毛刺台一 |
| 1110 | 去毛刺 | 2008-08-07 | 2008-08-07 | 1109 | 毛刺台一 |
| 1111 | 超声波清洗 | 2008-08-07 | 2008-08-07 | 1110 | 试验间 |
| 1112 | 铣面钻镗孔 | 2008-08-07 | 2008-08-12 | 1111 | 五轴立卧加 |
| 1113 | 清洗 | 2008-08-12 | 2008-08-12 | 1112 | 毛刺台一 |
| 1114 | 去毛刺 | 2008-08-12 | 2008-08-13 | 1113 | 毛刺台一 |
| 1115 | 清洗 | 2008-08-13 | 2008-08-13 | 1114 | 毛刺台一 |
| 1116 | 铣面钻镗孔 | 2008-08-13 | 2008-08-17 | 1115 | 五轴立卧加 |
| 1117 | 镗孔切槽 | 2008-08-17 | 2008-08-17 | 1116 | 数控车 |
| 1118 | 镗孔切槽 | 2008-08-17 | 2008-08-17 | 1117 | 数控车 |
| 1119 | 铣面钻镗孔 | 2008-08-17 | 2008-08-21 | 1118 | 五轴立卧加 |
| 1120 | 镗孔切槽 | 2008-08-21 | 2008-08-21 | 1119 | 数控车 |

| ID | Task | Start | Finish | Predecessors | Complete | Resources |
| --- | --- | --- | --- | --- | --- | --- |
| 1121 | 镗孔切槽 | 2008-08-21 | 2008-08-21 | 1120 |  | 数控车 |
| 1122 | 铣面钻镗孔 | 2008-08-21 | 2008-08-25 | 1121 |  | 五轴立卧加 |
| 1123 | 钻气孔 | 2008-08-25 | 2008-08-25 | 1122 |  | 立式钻床 |
| 1124 | 清洗 | 2008-08-25 | 2008-08-25 | 1123 |  | 毛刺台二 |
| 1125 | 去毛刺 | 2008-08-25 | 2008-08-26 | 1124 |  | 毛刺台二 |
| 1126 | 清洗 | 2008-08-26 | 2008-08-27 | 1125 |  | 毛刺台二 |
| 1127 | 钻斜孔 | 2008-08-27 | 2008-08-27 | 1126 |  | 立式钻床 |
| 1128 | 钻斜孔 | 2008-08-27 | 2008-08-28 | 1127 |  | 五轴立卧加 |
| 1129 | 钻斜孔 | 2008-08-28 | 2008-08-28 | 1128 |  | 五轴立卧加 |
| 1130 | 铣面钻镗孔 | 2008-08-28 | 2008-09-01 | 1129 |  | 五轴立卧加 |
| 1131 | 攻螺纹 | 2008-09-01 | 2008-09-01 | 1130 |  | 立式钻床 |
| 1132 | 清洗 | 2008-09-01 | 2008-09-02 | 1131 |  | 毛刺台二 |
| 1133 | 去毛刺 | 2008-09-02 | 2008-09-02 | 1132 |  | 毛刺台二 |
| 1134 | 清洗 | 2008-09-02 | 2008-09-03 | 1133 |  | 毛刺台二 |
| 1135 | 检验 | 2008-09-04 | 2008-09-04 | 1134 |  | 检验 |
| 1136 | 高压试验 | 2008-09-04 | 2008-09-05 | 1135 |  | 试验间 |
| 1137 | 钻孔攻螺纹 | 2008-09-05 | 2008-09-07 | 1136 |  | 五轴立卧加 |
| 1138 | 钻孔 | 2008-09-08 | 2008-09-08 | 1137 |  | 立式钻床 |
| 1139 | 钻斜孔 | 2008-09-08 | 2008-09-09 | 1138 |  | 五轴立卧加 |
| 1140 | 清洗 | 2008-09-09 | 2008-09-09 | 1139 |  | 毛刺台二 |
| 1141 | 去毛刺 | 2008-09-09 | 2008-09-10 | 1140 |  | 毛刺台二 |
| 1142 | 中压试验 | 2008-09-10 | 2008-09-10 | 1141 |  | 试验间 |
| 1143 | 低压试验 | 2008-09-10 | 2008-09-11 | 1142 |  | 试验间 |
| 1144 | 钻斜孔 | 2008-09-11 | 2008-09-11 | 1143 |  | 五轴立卧加 |
| 1145 | 钻斜孔 | 2008-09-11 | 2008-09-12 | 1144 |  | 五轴立卧加 |
| 1146 | 钻斜孔 | 2008-09-12 | 2008-09-13 | 1145 |  | 五轴立卧加 |
| 1147 | 攻螺纹 | 2008-09-13 | 2008-09-13 | 1146 |  | 立式钻床 |
| 1148 | 钻孔攻螺纹 | 2008-09-13 | 2008-09-15 | 1147 |  | 五轴立卧加 |
| 1149 | 钻斜孔 | 2008-09-15 | 2008-09-16 | 1148 |  | 五轴立卧加 |
| 1150 | 钻偏心孔 | 2008-09-16 | 2008-09-16 | 1149 |  | 立式钻床 |
| 1151 | 清洗 | 2008-09-16 | 2008-09-17 | 1150 |  | 毛刺台二 |
| 1152 | 去毛刺 | 2008-09-17 | 2008-09-18 | 1151 |  | 毛刺台二 |
| 1153 | 电化学去毛刺 | 2008-09-18 | 2008-09-18 | 1152 |  | 毛刺台二 |
| 1154 | 气密试验 | 2008-09-18 | 2008-09-18 | 1153 |  | 试验间 |
| 1155 | 研磨平面 | 2008-09-19 | 2008-09-19 | 1154 |  | 研磨台 |
| 1156 | 浸泡 | 2008-09-19 | 2008-09-19 | 1155 |  | 试验间 |
| 1157 | 超声波清洗 | 2008-09-19 | 2008-09-19 | 1156 |  | 试验间 |
| 1158 | 检验 | 2008-09-20 | 2008-09-21 | 1157 |  | 检验 |
| 1159 | 冲洗 | 2008-09-21 | 2008-09-22 | 1158 |  | 试验间 |
| 1160 | 捅油路 | 2008-09-25 | 2008-09-25 | 1159 |  | 毛刺台二 |
| 1161 | 钻孔攻螺纹 | 2008-09-25 | 2008-09-28 | 1160 |  | 立式钻床 |
| 1162 | 清洗 | 2008-09-28 | 2008-09-29 | 1161 |  | 毛刺台二 |
| 1163 | 镗内孔 | 2008-09-29 | 2008-09-30 | 1162 |  | 坐标镗 |
| 1164 | 去毛刺 | 2008-09-30 | 2008-09-30 | 1163 |  | 毛刺台一 |
| 1165 | 清洗 | 2008-09-30 | 2008-10-01 | 1164 |  | 毛刺台一 |
| 1166 | 检验 | 2008-10-01 | 2008-10-02 | 1165 |  | 检验 |
| 1167 | 高压试验 | 2008-10-02 | 2008-10-02 | 1166 |  | 试验间 |
| 1168 | 单孔滑油冲洗 | 2008-10-02 | 2008-10-02 | 1167 |  | 试验间 |
| 1169 | 浸泡 | 2008-10-02 | 2008-10-03 | 1168 |  | 试验间 |
| 1170 | 超声波清洗 | 2008-10-03 | 2008-10-03 | 1169 |  | 试验间 |
| 1171 | 冲洗 | 2008-10-03 | 2008-10-04 | 1170 |  | 试验间 |
| 1172 | 检验 | 2008-10-05 | 2008-10-06 | 1171 |  | 检验 |
| 1173 | 壳体/壳体丝套组合件 | 2008-06-03 | 2008-07-25 |  |  |  |
| 1174 | 去磁 | 2008-06-14 | 2008-06-15 |  |  |  |
| 1175 | 已完成任务 | 2008-06-03 | 2008-06-03 | 1174 | 100% |  |
| 1176 | 洗涤 | 2008-06-15 | 2008-06-15 | 1175 |  | 毛刺台一 |
| 1177 | 去毛刺 | 2008-06-15 | 2008-06-16 | 1176 |  | 毛刺台一 |
| 1178 | 压力试验 | 2008-06-16 | 2008-06-16 | 1177 |  | 试验间 |
| 1179 | 磨内孔 | 2008-06-17 | 2008-06-18 | 1178 |  | 外协 |
| 1180 | 磨平面 | 2008-06-18 | 2008-06-18 | 1179 |  | 平面磨 [100.43%] |
| 1181 | 研磨平面 | 2008-06-18 | 2008-06-19 | 1180 |  | 研磨台 |
| 1182 | 磨平面 | 2008-06-19 | 2008-06-19 | 1181 |  | 平面磨 [100.15%] |
| 1183 | 洗涤 | 2008-06-19 | 2008-06-20 | 1182 |  | 毛刺台一 |
| 1184 | 去毛刺 | 2008-06-20 | 2008-06-21 | 1183 |  | 毛刺台一 |
| 1185 | 检验 | 2008-06-22 | 2008-06-23 | 1184 |  | 检验 |
| 1186 | 油封 | 2008-06-23 | 2008-06-23 | 1185 |  | 毛刺台一 |
| 1187 | 研磨平面 | 2008-06-25 | 2008-06-25 | 1186 |  | 研磨台 |
| 1188 | 磨内孔 | 2008-06-25 | 2008-06-26 | 1187 |  | 研磨台 |
| 1189 | 磨内孔端面 | 2008-06-26 | 2008-06-26 | 1188 |  | 研磨台 |
| 1190 | 镗内孔 | 2008-06-26 | 2008-06-27 | 1189 |  | 中型普车 [102.94%] |

| ID | Task | Start | Finish | Predecessors | Resources |
| --- | --- | --- | --- | --- | --- |
| 1191 | 研内孔 | 2008-06-27 | 2008-06-28 | 1190 | 研磨台 |
| 1192 | 洗涤 | 2008-06-28 | 2008-06-29 | 1191 | 研磨台 |
| 1193 | 去毛刺 | 2008-06-29 | 2008-06-30 | 1192 | 毛刺台一 |
| 1194 | 洗涤 | 2008-06-30 | 2008-06-30 | 1193 | 毛刺台一 |
| 1195 | 检验 | 2008-07-01 | 2008-07-01 | 1194 | 检验 |
| 1196 | 油封 | 2008-07-02 | 2008-07-02 | 1195 | 毛刺台一 |
| 1197 | 油封 | 2008-07-06 | 2008-07-06 | 1196 | 毛刺台一 |
| 1198 | 刷孔 | 2008-07-06 | 2008-07-07 | 1197 | 立式钻床 |
| 1199 | 洗涤 | 2008-07-07 | 2008-07-07 | 1198 | 毛刺台一 |
| 1200 | 检验 | 2008-07-08 | 2008-07-08 | 1199 | 检验 |
| 1201 | 磨内孔 | 2008-07-09 | 2008-07-09 | 1200 | 研磨台 |
| 1202 | 磨内孔 端面 | 2008-07-09 | 2008-07-10 | 1201 | 研磨台 |
| 1203 | 抛光R | 2008-07-10 | 2008-07-10 | 1202 | 中型普车 [100.05%] |
| 1204 | 气密试验 | 2008-07-10 | 2008-07-10 | 1203 | 试验间 |
| 1205 | 油封 | 2008-07-11 | 2008-07-11 | 1204 | 毛刺台一 |
| 1206 | 荧光检验 | 2008-07-12 | 2008-07-14 | 1205 | 外协 |
| 1207 | 油封 | 2008-07-14 | 2008-07-14 | 1206 | 毛刺台一 |
| 1208 | 油封 | 2008-07-16 | 2008-07-16 | 1207 | 毛刺台一 |
| 1209 | 研磨平面 | 2008-07-16 | 2008-07-17 | 1208 | 研磨台 |
| 1210 | 抛光孔 | 2008-07-17 | 2008-07-17 | 1209 | 研磨台 |
| 1211 | 超声波清洗 | 2008-07-17 | 2008-07-17 | 1210 | 试验间 |
| 1212 | 洗涤 | 2008-07-18 | 2008-07-18 | 1211 | 毛刺台一 |
| 1213 | 检验 | 2008-07-19 | 2008-07-20 | 1212 | 检验 |
| 1214 | 油封 | 2008-07-20 | 2008-07-21 | 1213 | 毛刺台一 |
| 1215 | 冲洗 | 2008-07-21 | 2008-07-21 | 1214 | 试验间 |
| 1216 | 安装丝套 | 2008-07-21 | 2008-07-22 | 1215 | 立式钻床 |
| 1217 | 洗涤 | 2008-07-22 | 2008-07-23 | 1216 | 立式钻床 |
| 1218 | 检验 | 2008-07-23 | 2008-07-24 | 1217 | 检验 |
| 1219 | 油封 | 2008-07-24 | 2008-07-25 | 1218 | 毛刺台一 |
| 1220 | 壳体/壳体丝套组合件 | 2008-06-15 | 2008-08-26 |  |  |
| 1221 | 车端面 镗孔 车外圆 | 2008-06-15 | 2008-06-20 |  | 中型普车 |
| 1222 | 钻孔 倒角 车外圆 | 2008-06-20 | 2008-06-25 | 1221 | 中型普车 |
| 1223 | 钻孔 攻螺纹 | 2008-06-25 | 2008-06-26 | 1222 | 立式钻床 |
| 1224 | 钻孔 攻螺纹 | 2008-06-26 | 2008-06-28 | 1223 | 立式钻床 |
| 1225 | 铣凸耳平面 | 2008-06-28 | 2008-06-29 | 1224 | 立铣 [100.47%] |
| 1226 | 铣凸耳平面 | 2008-06-29 | 2008-06-30 | 1225 | 立铣 [100.1%] |
| 1227 | 铣平面 | 2008-06-30 | 2008-07-01 | 1226 | 立铣 |
| 1228 | 铣平面 | 2008-07-01 | 2008-07-02 | 1227 | 立铣 |
| 1229 | 铣面 | 2008-07-02 | 2008-07-02 | 1228 | 立铣 |
| 1230 | 铣槽 | 2008-07-02 | 2008-07-03 | 1229 | 立铣 |
| 1231 | 钻孔 | 2008-07-03 | 2008-07-04 | 1230 | 立式钻床 |
| 1232 | 钻孔 攻螺纹 | 2008-07-04 | 2008-07-05 | 1231 | 立式钻床 |
| 1233 | 钻孔攻螺纹 | 2008-07-05 | 2008-07-05 | 1232 | 立式钻床 |
| 1234 | 镗孔 | 2008-07-05 | 2008-07-07 | 1233 | 中型普车 |
| 1235 | 洗涤 | 2008-07-07 | 2008-07-07 | 1234 | 毛刺台一 |
| 1236 | 去毛刺 | 2008-07-07 | 2008-07-08 | 1235 | 毛刺台一 |
| 1237 | 磨平面 | 2008-07-08 | 2008-07-08 | 1236 | 平面磨 |
| 1238 | 磨平面 | 2008-07-08 | 2008-07-09 | 1237 | 平面磨 |
| 1239 | 磨平面 | 2008-07-09 | 2008-07-09 | 1238 | 平面磨 [99.84%] |
| 1240 | 镗孔车端面倒角 | 2008-07-11 | 2008-07-13 | 1239 | 中型普车 |
| 1241 | 镗孔车端面倒角 | 2008-07-13 | 2008-07-16 | 1240 | 中型普车 |
| 1242 | 洗涤 | 2008-07-16 | 2008-07-17 | 1241 | 毛刺台一 |
| 1243 | 去毛刺 | 2008-07-17 | 2008-07-17 | 1242 | 毛刺台一 |
| 1244 | 压力试验 | 2008-07-17 | 2008-07-17 | 1243 | 试验间 |
| 1245 | 磨内孔 | 2008-07-18 | 2008-07-19 | 1244 | 外协 |
| 1246 | 磨平面 | 2008-07-19 | 2008-07-20 | 1245 | 平面磨 |
| 1247 | 研磨平面 | 2008-07-20 | 2008-07-21 | 1246 | 研磨台 |
| 1248 | 磨平面 | 2008-07-21 | 2008-07-21 | 1247 | 平面磨 [100.28%] |
| 1249 | 洗涤 | 2008-07-21 | 2008-07-21 | 1248 | 毛刺台一 |
| 1250 | 去毛刺 | 2008-07-21 | 2008-07-22 | 1249 | 毛刺台一 |
| 1251 | 检验 | 2008-07-23 | 2008-07-23 | 1250 | 检验 |
| 1252 | 油封 | 2008-07-24 | 2008-07-24 | 1251 | 毛刺台一 |
| 1253 | 研磨平面 | 2008-07-26 | 2008-07-26 | 1252 | 研磨台 |
| 1254 | 磨内孔 | 2008-07-26 | 2008-07-27 | 1253 | 研磨台 |
| 1255 | 磨内孔端面 | 2008-07-27 | 2008-07-28 | 1254 | 研磨台 |
| 1256 | 镗内孔 | 2008-07-28 | 2008-07-29 | 1255 | 中型普车 |
| 1257 | 研内孔 | 2008-07-29 | 2008-07-29 | 1256 | 研磨台 |
| 1258 | 洗涤 | 2008-07-29 | 2008-07-30 | 1257 | 研磨台 |
| 1259 | 去毛刺 | 2008-07-30 | 2008-07-31 | 1258 | 毛刺台一 |
| 1260 | 洗涤 | 2008-07-31 | 2008-07-31 | 1259 | 毛刺台一 |

| ID | Task | Start | Finish | Predecessors | Complete | Resources |
| --- | --- | --- | --- | --- | --- | --- |
| 1261 | 检验 | 2008-08-01 | 2008-08-01 | 1260 |  | 检验 |
| 1262 | 油封 | 2008-08-02 | 2008-08-02 | 1261 |  | 毛刺台一 |
| 1263 | 油封 | 2008-08-06 | 2008-08-06 | 1262 |  | 毛刺台一 |
| 1264 | 刷孔 | 2008-08-06 | 2008-08-06 | 1263 |  | 立式钻床 |
| 1265 | 洗涤 | 2008-08-06 | 2008-08-07 | 1264 |  | 毛刺台一 |
| 1266 | 检验 | 2008-08-08 | 2008-08-08 | 1265 |  | 检验 |
| 1267 | 磨内孔 | 2008-08-09 | 2008-08-09 | 1266 |  | 研磨台 |
| 1268 | 磨内孔 端面 | 2008-08-09 | 2008-08-10 | 1267 |  | 研磨台 |
| 1269 | 抛光R | 2008-08-10 | 2008-08-11 | 1268 |  | 中型普车 [100.98%] |
| 1270 | 气密试验 | 2008-08-11 | 2008-08-11 | 1269 |  | 试验间 |
| 1271 | 油封 | 2008-08-11 | 2008-08-12 | 1270 |  | 毛刺台一 |
| 1272 | 荧光检验 | 2008-08-13 | 2008-08-14 | 1271 |  | 外协 |
| 1273 | 油封 | 2008-08-14 | 2008-08-15 | 1272 |  | 毛刺台一 |
| 1274 | 油封 | 2008-08-17 | 2008-08-17 | 1273 |  | 毛刺台一 |
| 1275 | 研磨平面 | 2008-08-17 | 2008-08-18 | 1274 |  | 研磨台 |
| 1276 | 抛光孔 | 2008-08-18 | 2008-08-19 | 1275 |  | 研磨台 |
| 1277 | 超声波清洗 | 2008-08-19 | 2008-08-19 | 1276 |  | 试验间 |
| 1278 | 洗涤 | 2008-08-19 | 2008-08-20 | 1277 |  | 毛刺台一 |
| 1279 | 检验 | 2008-08-21 | 2008-08-21 | 1278 |  | 检验 |
| 1280 | 油封 | 2008-08-22 | 2008-08-22 | 1279 |  | 毛刺台一 |
| 1281 | 冲洗 | 2008-08-22 | 2008-08-22 | 1280 |  | 试验间 |
| 1282 | 安装丝套 | 2008-08-23 | 2008-08-24 | 1281 |  | 立式钻床 |
| 1283 | 洗涤 | 2008-08-24 | 2008-08-24 | 1282 |  | 立式钻床 |
| 1284 | 检验 | 2008-08-25 | 2008-08-25 | 1283 |  | 检验 |
| 1285 | 油封 | 2008-08-26 | 2008-08-26 | 1284 |  | 毛刺台一 |
| 1286 | 壳体 | 2008-05-28 | 2008-07-18 |  |  |  |
| 1287 | 钻孔攻螺纹 | 2008-06-15 | 2008-06-16 |  |  | 立式钻床 |
| 1288 | 已完成任务 | 2008-05-28 | 2008-05-28 | 1287 | 100% |  |
| 1289 | 铣外形 | 2008-06-15 | 2008-06-16 | 1288 |  | 双头仿型铣 |
| 1290 | 已完成任务 | 2008-05-30 | 2008-05-30 | 1289 | 100% |  |
| 1291 | 钻孔攻螺纹 | 2008-06-15 | 2008-06-17 | 1290 |  | 立式钻床 |
| 1292 | 钻孔 | 2008-06-17 | 2008-06-18 | 1291 |  | 立式钻床 |
| 1293 | 划面 | 2008-06-18 | 2008-06-19 | 1292 |  | 立式钻床 |
| 1294 | 镗铰孔 | 2008-06-19 | 2008-06-19 | 1293 |  | 坐标镗 [100.07%] |
| 1295 | 车螺纹 | 2008-06-20 | 2008-06-21 | 1294 |  | 中型普车 [100.15%] |
| 1296 | 车螺纹 | 2008-06-21 | 2008-06-23 | 1295 |  | 中型普车 |
| 1297 | 车螺纹 | 2008-06-23 | 2008-06-25 | 1296 |  | 中型普车 |
| 1298 | 去毛刺 | 2008-06-25 | 2008-06-26 | 1297 |  | 毛刺台一 |
| 1299 | 洗涤 | 2008-06-26 | 2008-06-26 | 1298 |  | 毛刺台一 |
| 1300 | 气密性试验 | 2008-06-26 | 2008-06-26 | 1299 |  | 试验间 |
| 1301 | 检验 | 2008-06-27 | 2008-06-27 | 1300 |  | 检验 |
| 1302 | 磨端面 | 2008-06-28 | 2008-06-28 | 1301 |  | 平面磨 [99.84%] |
| 1303 | 磨平面 | 2008-06-28 | 2008-06-29 | 1302 |  | 平面磨 |
| 1304 | 铣端面 | 2008-06-29 | 2008-06-30 | 1303 |  | 立铣 |
| 1305 | 磨平面 | 2008-06-30 | 2008-06-30 | 1304 |  | 研磨台 |
| 1306 | 铣平面 | 2008-06-30 | 2008-07-01 | 1305 |  | 万能铣床 |
| 1307 | 钻铰孔攻螺纹 | 2008-07-03 | 2008-07-04 | 1306 |  | 立式钻床 |
| 1308 | 研孔 | 2008-07-04 | 2008-07-04 | 1307 |  | 研磨台 |
| 1309 | 清洗 | 2008-07-04 | 2008-07-05 | 1308 |  | 毛刺台一 |
| 1310 | 磨槽 | 2008-07-05 | 2008-07-06 | 1309 |  | 研磨台 |
| 1311 | 磨孔及端面 | 2008-07-06 | 2008-07-09 | 1310 |  | 坐标磨 |
| 1312 | 磨孔 | 2008-07-09 | 2008-07-10 | 1311 |  | 坐标磨 |
| 1313 | 倒圆角 | 2008-07-10 | 2008-07-11 | 1312 |  | 中型普车 |
| 1314 | 倒圆角 | 2008-07-11 | 2008-07-12 | 1313 |  | 中型普车 |
| 1315 | 倒圆角 | 2008-07-12 | 2008-07-13 | 1314 |  | 中型普车 |
| 1316 | 去毛刺 | 2008-07-13 | 2008-07-14 | 1315 |  | 毛刺台一 |
| 1317 | 研磨平面 | 2008-07-14 | 2008-07-14 | 1316 |  | 研磨台 |
| 1318 | 清洗 | 2008-07-14 | 2008-07-15 | 1317 |  | 毛刺台一 |
| 1319 | 检验 | 2008-07-16 | 2008-07-16 | 1318 |  | 检验 |
| 1320 | 清洗 | 2008-07-17 | 2008-07-17 | 1319 |  | 毛刺台一 |
| 1321 | 浸泡 | 2008-07-17 | 2008-07-17 | 1320 |  | 试验间 |
| 1322 | 超声波冲洗 | 2008-07-17 | 2008-07-18 | 1321 |  | 试验间 |
| 1323 | 冲洗 | 2008-07-18 | 2008-07-18 | 1322 |  | 试验间 |
| 1324 | 壳体 | 2008-05-13 | 2008-09-07 |  |  |  |
| 1325 | 防锈 | 2008-06-15 | 2008-06-15 |  |  | 试验间 |
| 1326 | 已完成任务 | 2008-05-13 | 2008-05-13 | 1325 | 100% |  |
| 1327 | 研磨平面 | 2008-06-15 | 2008-06-15 | 1326 |  | 研磨台 |
| 1328 | 防锈 | 2008-06-15 | 2008-06-16 | 1327 |  | 试验间 |
| 1329 | 已完成任务 | 2008-05-16 | 2008-05-16 | 1328 | 100% |  |
| 1330 | 磨平面 | 2008-06-15 | 2008-06-15 | 1329 |  | 平面磨 |

| ID | Task | Start | Finish | Predecessors | Complete | Resources |
| --- | --- | --- | --- | --- | --- | --- |
| 1331 | 研平面 | 2008-06-15 | 2008-06-15 | 1330 |  | 研磨台 |
| 1332 | 清洗 | 2008-06-15 | 2008-06-15 | 1331 |  | 毛刺台一 |
| 1333 | 镗孔锪面 | 2008-06-15 | 2008-06-16 | 1332 |  | 一工段立加三轴64V(V600) |
| 1334 | 防锈 | 2008-06-16 | 2008-06-17 | 1333 |  | 试验间 |
| 1335 | 已完成任务 | 2008-05-30 | 2008-05-30 | 1334 | 100% |  |
| 1336 | 研磨平面 | 2008-06-15 | 2008-06-15 | 1335 |  | 研磨台 |
| 1337 | 清洗 | 2008-06-15 | 2008-06-16 | 1336 |  | 毛刺台一 |
| 1338 | 铣平面 | 2008-06-16 | 2008-06-17 | 1337 |  | 立铣 |
| 1339 | 铣平面 | 2008-06-17 | 2008-06-18 | 1338 |  | 立铣 |
| 1340 | 铣平面 | 2008-06-18 | 2008-06-18 | 1339 |  | 立铣 |
| 1341 | 铣平面 | 2008-06-18 | 2008-06-20 | 1340 |  | 立铣 |
| 1342 | 铣槽 | 2008-06-20 | 2008-06-21 | 1341 |  | 立铣 |
| 1343 | 铣端面 | 2008-06-21 | 2008-06-24 | 1342 |  | 立铣 |
| 1344 | 铣端面 | 2008-06-24 | 2008-06-25 | 1343 |  | 立铣 |
| 1345 | 铣端面 | 2008-06-25 | 2008-06-27 | 1344 |  | 立铣 |
| 1346 | 铣端面 | 2008-06-27 | 2008-06-29 | 1345 |  | 立铣 |
| 1347 | 车外圆切槽 | 2008-06-29 | 2008-07-02 | 1346 |  | 中型普车 [100.22%] |
| 1348 | 车外圆切槽 | 2008-07-02 | 2008-07-06 | 1347 |  | 中型普车 [111.11%] |
| 1349 | 车外圆切槽 | 2008-07-06 | 2008-07-09 | 1348 |  | 中型普车 [100.07%] |
| 1350 | 钻铰孔 | 2008-07-09 | 2008-07-12 | 1349 |  | 立式钻床 |
| 1351 | 钻镗孔 | 2008-07-12 | 2008-07-14 | 1350 |  | 一工段立加三轴64V(V600) |
| 1352 | 钻铰孔 | 2008-07-14 | 2008-07-16 | 1351 |  | 立式钻床 |
| 1353 | 研孔 | 2008-07-16 | 2008-07-17 | 1352 |  | 研磨台 |
| 1354 | 钻孔攻螺纹 | 2008-07-17 | 2008-07-22 | 1353 |  | 立式钻床 |
| 1355 | 钻孔攻螺纹 | 2008-07-22 | 2008-07-24 | 1354 |  | 立式钻床 [100.09%] |
| 1356 | 铣外形 | 2008-07-24 | 2008-07-25 | 1355 |  | 双头仿型铣 |
| 1357 | 钻孔攻螺纹 | 2008-07-25 | 2008-07-27 | 1356 |  | 立式钻床 [100.88%] |
| 1358 | 研孔 | 2008-07-27 | 2008-07-27 | 1357 |  | 研磨台 |
| 1359 | 清洗 | 2008-07-27 | 2008-07-28 | 1358 |  | 毛刺台一 |
| 1360 | 钻孔攻螺纹 | 2008-07-28 | 2008-07-31 | 1359 |  | 立式钻床 |
| 1361 | 钻孔 | 2008-07-31 | 2008-08-01 | 1360 |  | 立式钻床 |
| 1362 | 划面 | 2008-08-01 | 2008-08-02 | 1361 |  | 立式钻床 |
| 1363 | 镗铰孔 | 2008-08-02 | 2008-08-03 | 1362 |  | 坐标镗 [100.21%] |
| 1364 | 车螺纹 | 2008-08-04 | 2008-08-06 | 1363 |  | 中型普车 [100.86%] |
| 1365 | 车螺纹 | 2008-08-06 | 2008-08-08 | 1364 |  | 中型普车 |
| 1366 | 车螺纹 | 2008-08-08 | 2008-08-10 | 1365 |  | 中型普车 [100.28%] |
| 1367 | 去毛刺 | 2008-08-10 | 2008-08-11 | 1366 |  | 毛刺台一 |
| 1368 | 洗涤 | 2008-08-11 | 2008-08-12 | 1367 |  | 毛刺台一 |
| 1369 | 气密性试验 | 2008-08-12 | 2008-08-12 | 1368 |  | 试验间 |
| 1370 | 检验 | 2008-08-13 | 2008-08-13 | 1369 |  | 检验 |
| 1371 | 磨端面 | 2008-08-14 | 2008-08-14 | 1370 |  | 平面磨 [100.13%] |
| 1372 | 磨平面 | 2008-08-14 | 2008-08-15 | 1371 |  | 平面磨 |
| 1373 | 铣端面 | 2008-08-15 | 2008-08-16 | 1372 |  | 立铣 |
| 1374 | 磨平面 | 2008-08-16 | 2008-08-16 | 1373 |  | 研磨台 |
| 1375 | 铣平面 | 2008-08-16 | 2008-08-17 | 1374 |  | 万能铣床 |
| 1376 | 钻铰孔攻螺纹 | 2008-08-19 | 2008-08-20 | 1375 |  | 立式钻床 [100.15%] |
| 1377 | 研孔 | 2008-08-20 | 2008-08-21 | 1376 |  | 研磨台 |
| 1378 | 清洗 | 2008-08-21 | 2008-08-21 | 1377 |  | 毛刺台一 |
| 1379 | 磨槽 | 2008-08-21 | 2008-08-22 | 1378 |  | 研磨台 |
| 1380 | 磨孔及端面 | 2008-08-22 | 2008-08-26 | 1379 |  | 坐标磨 |
| 1381 | 磨孔 | 2008-08-26 | 2008-08-27 | 1380 |  | 坐标磨 |
| 1382 | 倒圆角 | 2008-08-28 | 2008-08-29 | 1381 |  | 中型普车 [100.25%] |
| 1383 | 倒圆角 | 2008-08-29 | 2008-08-30 | 1382 |  | 中型普车 [100.37%] |
| 1384 | 倒圆角 | 2008-08-30 | 2008-09-01 | 1383 |  | 中型普车 [101.45%] |
| 1385 | 去毛刺 | 2008-09-01 | 2008-09-01 | 1384 |  | 毛刺台一 |
| 1386 | 研磨平面 | 2008-09-01 | 2008-09-02 | 1385 |  | 研磨台 |
| 1387 | 清洗 | 2008-09-02 | 2008-09-03 | 1386 |  | 毛刺台一 |
| 1388 | 检验 | 2008-09-03 | 2008-09-04 | 1387 |  | 检验 |
| 1389 | 清洗 | 2008-09-04 | 2008-09-05 | 1388 |  | 毛刺台一 |
| 1390 | 浸泡 | 2008-09-05 | 2008-09-05 | 1389 |  | 试验间 |
| 1391 | 超声波冲洗 | 2008-09-05 | 2008-09-06 | 1390 |  | 试验间 |
| 1392 | 冲洗 | 2008-09-06 | 2008-09-07 | 1391 |  | 试验间 |
| 1393 | 壳体与钢丝螺套组合件 | 2008-06-15 | 2008-06-23 |  |  |  |
| 1394 | 安装堵头 | 2008-06-15 | 2008-06-15 |  |  | 钳工台 |
| 1395 | 压力试验 | 2008-06-15 | 2008-06-16 | 1394 |  | 试验间 |
| 1396 | 气密试验 | 2008-06-16 | 2008-06-16 | 1395 |  | 试验间 |
| 1397 | 防锈 | 2008-06-16 | 2008-06-17 | 1396 |  | 试验间 |
| 1398 | 防锈 | 2008-06-18 | 2008-06-18 | 1397 |  | 试验间 |
| 1399 | 安装丝套 | 2008-06-20 | 2008-06-20 | 1398 |  | 钳工台 |
| 1400 | 清洗 | 2008-06-20 | 2008-06-21 | 1399 |  | 毛刺台一 |

| ID | Task | Start | Finish | Predecessors | Complete | Resources |
| --- | --- | --- | --- | --- | --- | --- |
| 1401 | 冲洗 | 2008-06-21 | 2008-06-21 | 1400 |  | 无设备 |
| 1402 | 清洗 | 2008-06-21 | 2008-06-22 | 1401 |  | 毛刺台一 |
| 1403 | 检验 | 2008-06-22 | 2008-06-23 | 1402 |  | 检验 |
| 1404 | 防锈与包装 | 2008-06-23 | 2008-06-23 | 1403 |  | 试验间 |
| 1405 | 壳体与钢丝螺套组合件 | 2008-06-15 | 2008-06-23 |  |  |  |
| 1406 | 安装堵头 | 2008-06-15 | 2008-06-15 |  |  | 钳工台 |
| 1407 | 压力试验 | 2008-06-15 | 2008-06-16 | 1406 |  | 试验间 |
| 1408 | 气密试验 | 2008-06-16 | 2008-06-16 | 1407 |  | 试验间 |
| 1409 | 防锈 | 2008-06-16 | 2008-06-17 | 1408 |  | 试验间 |
| 1410 | 防锈 | 2008-06-18 | 2008-06-18 | 1409 |  | 试验间 |
| 1411 | 安装丝套 | 2008-06-20 | 2008-06-20 | 1410 |  | 钳工台 |
| 1412 | 清洗 | 2008-06-20 | 2008-06-21 | 1411 |  | 毛刺台一 |
| 1413 | 冲洗 | 2008-06-21 | 2008-06-21 | 1412 |  | 无设备 |
| 1414 | 清洗 | 2008-06-21 | 2008-06-22 | 1413 |  | 毛刺台一 |
| 1415 | 检验 | 2008-06-22 | 2008-06-23 | 1414 |  | 检验 |
| 1416 | 防锈与包装 | 2008-06-23 | 2008-06-23 | 1415 |  | 试验间 |
| 1417 | 壳体和套筒组合件 | 2008-06-15 | 2008-06-29 |  |  |  |
| 1418 | 压套 | 2008-06-15 | 2008-06-16 |  |  | 立式钻床 |
| 1419 | 车内孔 | 2008-06-16 | 2008-06-18 | 1418 |  | 中型普车 |
| 1420 | 磨内孔 | 2008-06-18 | 2008-06-18 | 1419 |  | 坐标磨 [100.03%] |
| 1421 | 清洗 | 2008-06-19 | 2008-06-19 | 1420 |  | 毛刺台一 |
| 1422 | 攻螺纹 | 2008-06-19 | 2008-06-22 | 1421 |  | 立式钻床 |
| 1423 | 清洗 | 2008-06-22 | 2008-06-23 | 1422 |  | 毛刺台一 |
| 1424 | 除毛刺 | 2008-06-23 | 2008-06-24 | 1423 |  | 毛刺台一 |
| 1425 | 装钢丝螺套 | 2008-06-24 | 2008-06-26 | 1424 |  | 立式钻床 [100.11%] |
| 1426 | 清洗 | 2008-06-26 | 2008-06-27 | 1425 |  | 毛刺台一 |
| 1427 | 检验 | 2008-06-27 | 2008-06-28 | 1426 |  | 检验 |
| 1428 | 油封 | 2008-06-28 | 2008-06-29 | 1427 |  | 毛刺台一 |
| 1429 | 壳体 | 2008-06-15 | 2008-07-02 |  |  |  |
| 1430 | 钻铰孔 | 2008-06-15 | 2008-06-17 |  |  | 立式钻床 |
| 1431 | 铣端面 | 2008-06-17 | 2008-06-17 | 1430 |  | 立铣 |
| 1432 | 磨平面 | 2008-06-17 | 2008-06-18 | 1431 |  | 平面磨 |
| 1433 | 钻铰孔 | 2008-06-19 | 2008-06-21 | 1432 |  | 立式钻床 |
| 1434 | 铣边沿 | 2008-06-21 | 2008-06-23 | 1433 |  | 立铣 |
| 1435 | 车锥面螺纹 | 2008-06-23 | 2008-06-25 | 1434 |  | 中型普车 |
| 1436 | 清洗 | 2008-06-25 | 2008-06-26 | 1435 |  | 毛刺台一 |
| 1437 | 除毛刺 | 2008-06-26 | 2008-06-27 | 1436 |  | 毛刺台一 |
| 1438 | 强度试验 | 2008-06-27 | 2008-06-27 | 1437 |  | 试验间 |
| 1439 | 气密试验 | 2008-06-27 | 2008-06-27 | 1438 |  | 试验间 |
| 1440 | 检验 | 2008-06-28 | 2008-06-29 | 1439 |  | 检验 |
| 1441 | 防锈 | 2008-06-29 | 2008-06-30 | 1440 |  | 试验间 |
| 1442 | 研磨 | 2008-07-02 | 2008-07-02 | 1441 |  | 研磨台 |
| 1443 | 壳体 | 2008-06-03 | 2008-06-29 |  |  |  |
| 1444 | 修整基孔 | 2008-06-15 | 2008-06-15 |  |  | 立式钻床 |
| 1445 | 已完成任务 | 2008-06-03 | 2008-06-03 | 1444 | 100% |  |
| 1446 | 浸泡 | 2008-06-15 | 2008-06-15 | 1445 |  | 试验间 |
| 1447 | 超声波清洗 | 2008-06-16 | 2008-06-16 | 1446 |  | 试验间 |
| 1448 | 打磨型面 | 2008-06-16 | 2008-06-17 | 1447 |  | 中型普车 |
| 1449 | 清洗 | 2008-06-18 | 2008-06-19 | 1448 |  | 毛刺台一 |
| 1450 | 铣凸台 | 2008-06-19 | 2008-06-19 | 1449 |  | 立铣 |
| 1451 | 清洗 | 2008-06-19 | 2008-06-20 | 1450 |  | 毛刺台一 |
| 1452 | 打毛刺 | 2008-06-20 | 2008-06-20 | 1451 |  | 毛刺台一 |
| 1453 | 气密试验 | 2008-06-20 | 2008-06-20 | 1452 |  | 试验间 |
| 1454 | 清洗 | 2008-06-21 | 2008-06-21 | 1453 |  | 毛刺台一 |
| 1455 | 检验 | 2008-06-21 | 2008-06-23 | 1454 |  | 检验 |
| 1456 | 研内孔 | 2008-06-28 | 2008-06-29 | 1455 |  |  |
| 1457 | 壳体 | 2008-06-02 | 2008-07-24 |  |  |  |
| 1458 | 钻孔 攻螺纹 | 2008-06-15 | 2008-06-15 |  |  | 立式钻床 |
| 1459 | 已完成任务 | 2008-06-02 | 2008-06-02 | 1458 | 100% |  |
| 1460 | 打毛刺 | 2008-06-15 | 2008-06-15 | 1459 |  | 毛刺台一 |
| 1461 | 已完成任务 | 2008-06-02 | 2008-06-02 | 1460 | 100% |  |
| 1462 | 高压试验 | 2008-06-15 | 2008-06-15 | 1461 |  | 试验间 |
| 1463 | 清洗 | 2008-06-16 | 2008-06-17 | 1462 |  | 毛刺台一 |
| 1464 | 铣小槽 | 2008-06-17 | 2008-06-18 | 1463 |  | 立铣 |
| 1465 | 精磨端面 | 2008-06-18 | 2008-06-18 | 1464 |  | 研磨台 |
| 1466 | 钻孔 | 2008-06-20 | 2008-06-20 | 1465 |  | 立式钻床 |
| 1467 | 车型面 | 2008-06-20 | 2008-06-21 | 1466 |  | 中型普车 |
| 1468 | 清洗 | 2008-06-21 | 2008-06-22 | 1467 |  | 毛刺台一 |
| 1469 | 打毛刺 | 2008-06-22 | 2008-06-23 | 1468 |  | 毛刺台一 |
| 1470 | 清洗 | 2008-06-23 | 2008-06-24 | 1469 |  | 毛刺台一 |

| ID | Task | Start | Finish | Predecessors | Complete | Resources |
| --- | --- | --- | --- | --- | --- | --- |
| 1471 | 检验 | 2008-06-24 | 2008-06-25 | 1470 |  | 检验 |
| 1472 | 油封 | 2008-06-25 | 2008-06-25 | 1471 |  | 毛刺台一 |
| 1473 | 研面 | 2008-06-26 | 2008-06-26 | 1472 |  | 研磨台 |
| 1474 | 镗孔 | 2008-06-26 | 2008-06-27 | 1473 |  | 一工段立加三轴64V(V600) |
| 1475 | 磨孔 | 2008-06-27 | 2008-06-29 | 1474 |  | 坐标磨 |
| 1476 | 清洗 | 2008-06-29 | 2008-06-30 | 1475 |  | 毛刺台一 |
| 1477 | 去毛刺 | 2008-06-30 | 2008-07-01 | 1476 |  | 毛刺台一 |
| 1478 | 清洗 | 2008-07-01 | 2008-07-01 | 1477 |  | 毛刺台一 |
| 1479 | 检验 | 2008-07-01 | 2008-07-02 | 1478 |  | 检验 |
| 1480 | 清洗 | 2008-07-05 | 2008-07-05 | 1479 |  | 毛刺台一 |
| 1481 | 修整基孔 | 2008-07-05 | 2008-07-06 | 1480 |  | 立式钻床 |
| 1482 | 修整尖边 | 2008-07-06 | 2008-07-07 | 1481 |  | 肖布林150A |
| 1483 | 车型面 | 2008-07-07 | 2008-07-07 | 1482 |  | 一工段数控车班 |
| 1484 | 浸泡 | 2008-07-10 | 2008-07-10 | 1483 |  | 试验间 |
| 1485 | 超声波清洗 | 2008-07-10 | 2008-07-10 | 1484 |  | 试验间 |
| 1486 | 打磨型面 | 2008-07-11 | 2008-07-11 | 1485 |  | 中型普车 |
| 1487 | 清洗 | 2008-07-13 | 2008-07-13 | 1486 |  | 毛刺台一 |
| 1488 | 铣凸台 | 2008-07-13 | 2008-07-14 | 1487 |  | 立铣 |
| 1489 | 清洗 | 2008-07-14 | 2008-07-15 | 1488 |  | 毛刺台一 |
| 1490 | 打毛刺 | 2008-07-15 | 2008-07-15 | 1489 |  | 毛刺台一 |
| 1491 | 气密试验 | 2008-07-15 | 2008-07-15 | 1490 |  | 试验间 |
| 1492 | 清洗 | 2008-07-16 | 2008-07-16 | 1491 |  | 毛刺台一 |
| 1493 | 检验 | 2008-07-16 | 2008-07-17 | 1492 |  | 检验 |
| 1494 | 研内孔 | 2008-07-23 | 2008-07-24 | 1493 |  |  |
| 1495 | 壳体 | 2008-05-23 | 2008-08-08 |  |  |  |
| 1496 | 划面钻孔倒角 | 2008-06-15 | 2008-06-15 |  |  | 立式钻床 |
| 1497 | 铣槽 | 2008-06-15 | 2008-06-16 | 1496 |  | 立式钻床 |
| 1498 | 铣槽 | 2008-06-16 | 2008-06-16 | 1497 |  | 立式钻床 [99.82%] |
| 1499 | 已完成任务 | 2008-05-23 | 2008-05-23 | 1498 | 100% |  |
| 1500 | 镗孔切槽倒角 | 2008-06-15 | 2008-06-18 | 1499 |  | 中型普车 |
| 1501 | 切槽 | 2008-06-18 | 2008-06-20 | 1500 |  | 中型普车 |
| 1502 | 切槽 | 2008-06-20 | 2008-06-22 | 1501 |  | 中型普车 |
| 1503 | 切槽 攻螺纹 | 2008-06-22 | 2008-06-23 | 1502 |  | 一工段数控车班 |
| 1504 | 切槽 | 2008-06-23 | 2008-06-25 | 1503 |  | 中型普车 [133.33%] |
| 1505 | 铣月型槽 | 2008-06-25 | 2008-06-25 | 1504 |  | 立式钻床 [99.9%] |
| 1506 | 铣月型槽 | 2008-06-25 | 2008-06-27 | 1505 |  | 万能铣床 |
| 1507 | 钻斜孔 | 2008-06-27 | 2008-06-27 | 1506 |  | 立式钻床 [100.12%] |
| 1508 | 钻斜孔 | 2008-06-27 | 2008-06-27 | 1507 |  | 立式钻床 [100.12%] |
| 1509 | 钻斜孔 | 2008-06-27 | 2008-06-28 | 1508 |  | 立式钻床 |
| 1510 | 钻斜孔 | 2008-06-28 | 2008-06-28 | 1509 |  | 立式钻床 |
| 1511 | 钻孔 攻螺纹 | 2008-06-28 | 2008-07-01 | 1510 |  | 立式钻床 |
| 1512 | 钻孔 攻螺纹 | 2008-07-01 | 2008-07-02 | 1511 |  | 立式钻床 |
| 1513 | 清洗 | 2008-07-02 | 2008-07-02 | 1512 |  | 毛刺台一 |
| 1514 | 打毛刺 | 2008-07-02 | 2008-07-03 | 1513 |  | 毛刺台一 |
| 1515 | 清洗 | 2008-07-03 | 2008-07-03 | 1514 |  | 毛刺台一 |
| 1516 | 高压试验 | 2008-07-03 | 2008-07-03 | 1515 |  | 试验间 |
| 1517 | 清洗 | 2008-07-05 | 2008-07-05 | 1516 |  | 毛刺台一 |
| 1518 | 铣小槽 | 2008-07-05 | 2008-07-06 | 1517 |  | 立铣 |
| 1519 | 精磨端面 | 2008-07-06 | 2008-07-07 | 1518 |  | 研磨台 |
| 1520 | 钻孔 | 2008-07-08 | 2008-07-08 | 1519 |  | 立式钻床 |
| 1521 | 车型面 | 2008-07-08 | 2008-07-09 | 1520 |  | 中型普车 |
| 1522 | 清洗 | 2008-07-09 | 2008-07-10 | 1521 |  | 毛刺台一 |
| 1523 | 打毛刺 | 2008-07-10 | 2008-07-10 | 1522 |  | 毛刺台一 |
| 1524 | 清洗 | 2008-07-10 | 2008-07-11 | 1523 |  | 毛刺台一 |
| 1525 | 检验 | 2008-07-11 | 2008-07-12 | 1524 |  | 检验 |
| 1526 | 油封 | 2008-07-12 | 2008-07-13 | 1525 |  | 毛刺台一 |
| 1527 | 研面 | 2008-07-14 | 2008-07-14 | 1526 |  | 研磨台 |
| 1528 | 镗孔 | 2008-07-14 | 2008-07-15 | 1527 |  | 一工段立加三轴64V(V600) |
| 1529 | 磨孔 | 2008-07-15 | 2008-07-15 | 1528 |  | 坐标磨 |
| 1530 | 清洗 | 2008-07-16 | 2008-07-16 | 1529 |  | 毛刺台一 |
| 1531 | 去毛刺 | 2008-07-16 | 2008-07-17 | 1530 |  | 毛刺台一 |
| 1532 | 清洗 | 2008-07-17 | 2008-07-17 | 1531 |  | 毛刺台一 |
| 1533 | 检验 | 2008-07-17 | 2008-07-18 | 1532 |  | 检验 |
| 1534 | 清洗 | 2008-07-21 | 2008-07-21 | 1533 |  | 毛刺台一 |
| 1535 | 修整基孔 | 2008-07-21 | 2008-07-21 | 1534 |  | 立式钻床 |
| 1536 | 修整尖边 | 2008-07-21 | 2008-07-22 | 1535 |  | 肖布林150A |
| 1537 | 车型面 | 2008-07-22 | 2008-07-22 | 1536 |  | 一工段数控车班 [100.13%] |
| 1538 | 浸泡 | 2008-07-24 | 2008-07-25 | 1537 |  | 试验间 |
| 1539 | 超声波清洗 | 2008-07-25 | 2008-07-25 | 1538 |  | 试验间 |
| 1540 | 打磨型面 | 2008-07-26 | 2008-07-26 | 1539 |  | 中型普车 |

| ID | Task | Start | Finish | Predecessors | Complete | Resources |
| --- | --- | --- | --- | --- | --- | --- |
| 1541 | 清洗 | 2008-07-27 | 2008-07-28 | 1540 |  | 毛刺台一 |
| 1542 | 铣凸台 | 2008-07-28 | 2008-07-28 | 1541 |  | 立铣 |
| 1543 | 清洗 | 2008-07-28 | 2008-07-29 | 1542 |  | 毛刺台一 |
| 1544 | 打毛刺 | 2008-07-29 | 2008-07-30 | 1543 |  | 毛刺台一 |
| 1545 | 气密试验 | 2008-07-30 | 2008-07-30 | 1544 |  | 试验间 |
| 1546 | 清洗 | 2008-07-30 | 2008-07-31 | 1545 |  | 毛刺台一 |
| 1547 | 检验 | 2008-07-31 | 2008-08-01 | 1546 |  | 检验 |
| 1548 | 研内孔 | 2008-08-07 | 2008-08-08 | 1547 |  |  |
| 1549 | 壳体 | 2008-05-13 | 2008-07-31 |  |  |  |
| 1550 | 退磁 | 2008-06-14 | 2008-06-15 |  |  |  |
| 1551 | 已完成任务 | 2008-05-13 | 2008-05-13 | 1550 | 100% |  |
| 1552 | 镗孔切槽攻螺纹 | 2008-06-15 | 2008-06-15 | 1551 |  | 中型普车 |
| 1553 | 划面钻孔倒角 | 2008-06-15 | 2008-06-16 | 1552 |  | 立式钻床 |
| 1554 | 铣槽 | 2008-06-16 | 2008-06-16 | 1553 |  | 立式钻床 [100.28%] |
| 1555 | 铣槽 | 2008-06-16 | 2008-06-16 | 1554 |  | 立式钻床 [100.28%] |
| 1556 | 已完成任务 | 2008-05-23 | 2008-05-23 | 1555 | 100% |  |
| 1557 | 镗孔切槽倒角 | 2008-06-15 | 2008-06-17 | 1556 |  | 中型普车 |
| 1558 | 切槽 | 2008-06-17 | 2008-06-18 | 1557 |  | 中型普车 |
| 1559 | 切槽 | 2008-06-18 | 2008-06-19 | 1558 |  | 中型普车 |
| 1560 | 切槽 攻螺纹 | 2008-06-19 | 2008-06-19 | 1559 |  | 一工段数控车班 |
| 1561 | 切槽 | 2008-06-20 | 2008-06-20 | 1560 |  | 中型普车 [100.12%] |
| 1562 | 铣月型槽 | 2008-06-20 | 2008-06-21 | 1561 |  | 立式钻床 |
| 1563 | 铣月型槽 | 2008-06-21 | 2008-06-22 | 1562 |  | 万能铣床 |
| 1564 | 钻斜孔 | 2008-06-22 | 2008-06-22 | 1563 |  | 立式钻床 [99.81%] |
| 1565 | 钻斜孔 | 2008-06-22 | 2008-06-22 | 1564 |  | 立式钻床 [99.81%] |
| 1566 | 钻斜孔 | 2008-06-22 | 2008-06-23 | 1565 |  | 立式钻床 |
| 1567 | 钻斜孔 | 2008-06-23 | 2008-06-23 | 1566 |  | 立式钻床 |
| 1568 | 钻孔 攻螺纹 | 2008-06-23 | 2008-06-24 | 1567 |  | 立式钻床 |
| 1569 | 钻孔 攻螺纹 | 2008-06-24 | 2008-06-25 | 1568 |  | 立式钻床 |
| 1570 | 清洗 | 2008-06-25 | 2008-06-25 | 1569 |  | 毛刺台一 |
| 1571 | 打毛刺 | 2008-06-25 | 2008-06-26 | 1570 |  | 毛刺台一 |
| 1572 | 清洗 | 2008-06-26 | 2008-06-27 | 1571 |  | 毛刺台一 |
| 1573 | 高压试验 | 2008-06-27 | 2008-06-27 | 1572 |  | 试验间 |
| 1574 | 清洗 | 2008-06-29 | 2008-06-29 | 1573 |  | 毛刺台一 |
| 1575 | 铣小槽 | 2008-06-29 | 2008-06-30 | 1574 |  | 立铣 [104.17%] |
| 1576 | 精磨端面 | 2008-06-30 | 2008-06-30 | 1575 |  | 研磨台 |
| 1577 | 钻孔 | 2008-07-02 | 2008-07-02 | 1576 |  | 立式钻床 |
| 1578 | 车型面 | 2008-07-02 | 2008-07-02 | 1577 |  | 中型普车 [99.81%] |
| 1579 | 清洗 | 2008-07-02 | 2008-07-03 | 1578 |  | 毛刺台一 |
| 1580 | 打毛刺 | 2008-07-03 | 2008-07-03 | 1579 |  | 毛刺台一 |
| 1581 | 清洗 | 2008-07-03 | 2008-07-04 | 1580 |  | 毛刺台一 |
| 1582 | 检验 | 2008-07-04 | 2008-07-05 | 1581 |  | 检验 |
| 1583 | 油封 | 2008-07-05 | 2008-07-06 | 1582 |  | 毛刺台一 |
| 1584 | 研面 | 2008-07-07 | 2008-07-07 | 1583 |  | 研磨台 |
| 1585 | 镗孔 | 2008-07-07 | 2008-07-08 | 1584 |  | 一工段立加三轴64V(V600) |
| 1586 | 磨孔 | 2008-07-08 | 2008-07-08 | 1585 |  | 坐标磨 |
| 1587 | 清洗 | 2008-07-08 | 2008-07-09 | 1586 |  | 毛刺台一 |
| 1588 | 去毛刺 | 2008-07-09 | 2008-07-10 | 1587 |  | 毛刺台一 |
| 1589 | 清洗 | 2008-07-10 | 2008-07-10 | 1588 |  | 毛刺台一 |
| 1590 | 检验 | 2008-07-10 | 2008-07-11 | 1589 |  | 检验 |
| 1591 | 清洗 | 2008-07-14 | 2008-07-14 | 1590 |  | 毛刺台一 |
| 1592 | 修整基孔 | 2008-07-14 | 2008-07-14 | 1591 |  | 立式钻床 |
| 1593 | 修整尖边 | 2008-07-14 | 2008-07-15 | 1592 |  | 肖布林150A |
| 1594 | 车型面 | 2008-07-15 | 2008-07-15 | 1593 |  | 一工段数控车班 [100.21%] |
| 1595 | 浸泡 | 2008-07-17 | 2008-07-18 | 1594 |  | 试验间 |
| 1596 | 超声波清洗 | 2008-07-18 | 2008-07-18 | 1595 |  | 试验间 |
| 1597 | 打磨型面 | 2008-07-18 | 2008-07-18 | 1596 |  | 中型普车 |
| 1598 | 清洗 | 2008-07-20 | 2008-07-20 | 1597 |  | 毛刺台一 |
| 1599 | 铣凸台 | 2008-07-20 | 2008-07-21 | 1598 |  | 立铣 |
| 1600 | 清洗 | 2008-07-21 | 2008-07-21 | 1599 |  | 毛刺台一 |
| 1601 | 打毛刺 | 2008-07-21 | 2008-07-22 | 1600 |  | 毛刺台一 |
| 1602 | 气密试验 | 2008-07-22 | 2008-07-22 | 1601 |  | 试验间 |
| 1603 | 清洗 | 2008-07-23 | 2008-07-23 | 1602 |  | 毛刺台一 |
| 1604 | 检验 | 2008-07-23 | 2008-07-24 | 1603 |  | 检验 |
| 1605 | 研内孔 | 2008-07-30 | 2008-07-31 | 1604 |  |  |
| 1606 | 壳体组件 | 2008-06-15 | 2008-06-15 |  |  |  |
| 1607 | 油封 | 2008-06-15 | 2008-06-15 |  |  | 试验间 |
| 1608 | 壳体组件 | 2008-06-15 | 2008-06-18 |  |  |  |
| 1609 | 上钢丝螺套 | 2008-06-15 | 2008-06-15 |  |  | 钳工台 |
| 1610 | 冲洗 | 2008-06-15 | 2008-06-16 | 1609 |  | 试验间 |

| ID | Task | Start | Finish | Predecessors | Resources |
| --- | --- | --- | --- | --- | --- |
| 1611 | 清洗 | 2008-06-16 | 2008-06-16 | 1610 | 试验间 |
| 1612 | 检验 | 2008-06-17 | 2008-06-17 | 1611 | 检验 |
| 1613 | 油封 | 2008-06-17 | 2008-06-18 | 1612 | 试验间 |
| 1614 | 壳体组件 | 2008-06-15 | 2008-06-18 |  |  |
| 1615 | 上钢丝螺套 | 2008-06-15 | 2008-06-15 |  | 钳工台 |
| 1616 | 冲洗 | 2008-06-15 | 2008-06-16 | 1615 | 试验间 |
| 1617 | 清洗 | 2008-06-16 | 2008-06-16 | 1616 | 试验间 |
| 1618 | 检验 | 2008-06-17 | 2008-06-17 | 1617 | 检验 |
| 1619 | 油封 | 2008-06-17 | 2008-06-18 | 1618 | 试验间 |
| 1620 | 壳体组件 | 2008-06-15 | 2008-06-18 |  |  |
| 1621 | 上钢丝螺套 | 2008-06-15 | 2008-06-15 |  | 钳工台 |
| 1622 | 冲洗 | 2008-06-15 | 2008-06-16 | 1621 | 试验间 |
| 1623 | 清洗 | 2008-06-16 | 2008-06-16 | 1622 | 试验间 |
| 1624 | 检验 | 2008-06-17 | 2008-06-17 | 1623 | 检验 |
| 1625 | 油封 | 2008-06-17 | 2008-06-18 | 1624 | 试验间 |
| 1626 | 壳体组件 | 2008-06-15 | 2008-06-18 |  |  |
| 1627 | 上钢丝螺套 | 2008-06-15 | 2008-06-15 |  | 钳工台 |
| 1628 | 冲洗 | 2008-06-15 | 2008-06-16 | 1627 | 试验间 |
| 1629 | 清洗 | 2008-06-16 | 2008-06-16 | 1628 | 试验间 |
| 1630 | 检验 | 2008-06-17 | 2008-06-17 | 1629 | 检验 |
| 1631 | 油封 | 2008-06-17 | 2008-06-18 | 1630 | 试验间 |
| 1632 | 盖 | 2008-06-15 | 2008-08-04 |  |  |
| 1633 | 钻铰孔 | 2008-06-15 | 2008-06-16 |  | 立式钻床 |
| 1634 | 粗铣型腔 | 2008-06-16 | 2008-06-17 | 1633 | 一工段立加三轴64V(V600) |
| 1635 | 铣平面 | 2008-06-17 | 2008-06-17 | 1634 | 万能铣床 |
| 1636 | 研磨大结合面 | 2008-06-18 | 2008-06-18 | 1635 | 研磨台 |
| 1637 | 粗铣内腔 | 2008-06-18 | 2008-06-19 | 1636 | 一工段立加三轴64V(V600) |
| 1638 | 去毛刺 | 2008-06-19 | 2008-06-19 | 1637 | 毛刺台一 |
| 1639 | 清洗 | 2008-06-19 | 2008-06-20 | 1638 | 毛刺台一 |
| 1640 | 铣大结合面 | 2008-06-22 | 2008-06-23 | 1639 | 立铣 |
| 1641 | 铣平面 | 2008-06-23 | 2008-06-23 | 1640 | 一工段立加三轴64V(V600) |
| 1642 | 去毛刺 | 2008-06-23 | 2008-06-24 | 1641 | 毛刺台一 |
| 1643 | 修研平面 | 2008-06-24 | 2008-06-24 | 1642 | 研磨台 |
| 1644 | 钻铰孔 | 2008-06-24 | 2008-06-25 | 1643 | 立式钻床 |
| 1645 | 铣平面 | 2008-06-25 | 2008-06-25 | 1644 | 立铣 |
| 1646 | 划面 | 2008-06-25 | 2008-06-26 | 1645 | 立式钻床 |
| 1647 | 铣平面 | 2008-06-26 | 2008-06-26 | 1646 | 立铣 |
| 1648 | 铣平面 | 2008-06-26 | 2008-06-27 | 1647 | 立铣 |
| 1649 | 精铣型腔 | 2008-06-27 | 2008-06-28 | 1648 | 一工段立加三轴64V(V600) |
| 1650 | 修研大结合面 | 2008-06-29 | 2008-07-01 | 1649 | 研磨台 |
| 1651 | 铣平面 | 2008-07-01 | 2008-07-01 | 1650 | 一工段立加三轴64V(V600) |
| 1652 | 钻孔攻螺纹 | 2008-07-01 | 2008-07-02 | 1651 | 立式钻床 |
| 1653 | 镗孔 | 2008-07-02 | 2008-07-03 | 1652 | 中型普车 |
| 1654 | 镗孔划面 | 2008-07-03 | 2008-07-05 | 1653 | 中型普车 |
| 1655 | 钻铰孔 | 2008-07-05 | 2008-07-05 | 1654 | 立式钻床 |
| 1656 | 钻孔 | 2008-07-05 | 2008-07-06 | 1655 | 立式钻床 |
| 1657 | 钻铰孔 | 2008-07-06 | 2008-07-06 | 1656 | 立式钻床 |
| 1658 | 划面 | 2008-07-06 | 2008-07-07 | 1657 | 立式钻床 |
| 1659 | 铣大结合面 | 2008-07-07 | 2008-07-08 | 1658 | 立铣 |
| 1660 | 铣平面 | 2008-07-08 | 2008-07-08 | 1659 | 立铣 |
| 1661 | 去毛刺 | 2008-07-08 | 2008-07-09 | 1660 | 毛刺台一 |
| 1662 | 修研大结合面 | 2008-07-09 | 2008-07-10 | 1661 | 研磨台 |
| 1663 | 铣型面 | 2008-07-10 | 2008-07-11 | 1662 | 一工段立加三轴64V(V600) |
| 1664 | 镗孔 | 2008-07-11 | 2008-07-13 | 1663 | 中型普车 |
| 1665 | 去毛刺 | 2008-07-13 | 2008-07-14 | 1664 | 毛刺台一 |
| 1666 | 研大结合面 | 2008-07-15 | 2008-07-17 | 1665 | 研磨台 |
| 1667 | 镗孔倒角 | 2008-07-17 | 2008-07-19 | 1666 | 坐标镗 |
| 1668 | 铣槽 | 2008-07-19 | 2008-07-20 | 1667 | 立铣 |
| 1669 | 铣半圆槽 | 2008-07-20 | 2008-07-20 | 1668 | 立铣 |
| 1670 | 划面 | 2008-07-20 | 2008-07-21 | 1669 | 立式钻床 |
| 1671 | 去毛刺 | 2008-07-21 | 2008-07-21 | 1670 | 毛刺台一 |
| 1672 | 清洗 | 2008-07-21 | 2008-07-22 | 1671 | 毛刺台一 |
| 1673 | 检验 | 2008-07-22 | 2008-07-23 | 1672 | 检验 |
| 1674 | 铣外型 | 2008-07-23 | 2008-07-24 | 1673 | 一工段立加三轴64V(V600) |
| 1675 | 去毛刺打磨 | 2008-07-24 | 2008-07-24 | 1674 | 毛刺台一 |
| 1676 | 清洗 | 2008-07-24 | 2008-07-25 | 1675 | 毛刺台一 |
| 1677 | 粘接堵头 | 2008-07-25 | 2008-07-27 | 1676 | 外协 |
| 1678 | 装堵头 | 2008-07-27 | 2008-07-27 | 1677 | 立式钻床 |
| 1679 | 气密试验 | 2008-07-27 | 2008-07-28 | 1678 | 试验间 |
| 1680 | 清洗 | 2008-07-28 | 2008-07-28 | 1679 | 毛刺台一 |

| ID | Task | Start | Finish | Predecessors | Complete | Resources |
| --- | --- | --- | --- | --- | --- | --- |
| 1681 | 荧光检验 | 2008-07-28 | 2008-07-30 | 1680 |  | 外协 |
| 1682 | 研磨平面 | 2008-07-30 | 2008-08-01 | 1681 |  | 研磨台 |
| 1683 | 清洗 | 2008-08-01 | 2008-08-01 | 1682 |  | 毛刺台一 |
| 1684 | 检验 | 2008-08-01 | 2008-08-02 | 1683 |  | 检验 |
| 1685 | 检验 | 2008-08-04 | 2008-08-04 | 1684 |  | 检验 |
| 1686 | 盖 | 2008-06-15 | 2008-08-03 |  |  |  |
| 1687 | 钻铰孔 | 2008-06-15 | 2008-06-16 |  |  | 立式钻床 |
| 1688 | 粗铣型腔 | 2008-06-16 | 2008-06-17 | 1687 |  | 一工段立加三轴64V(V600) |
| 1689 | 铣平面 | 2008-06-17 | 2008-06-17 | 1688 |  | 万能铣床 [99.61%] |
| 1690 | 研磨大结合面 | 2008-06-18 | 2008-06-18 | 1689 |  | 研磨台 |
| 1691 | 粗铣内腔 | 2008-06-18 | 2008-06-19 | 1690 |  | 一工段立加三轴64V(V600) |
| 1692 | 去毛刺 | 2008-06-19 | 2008-06-19 | 1691 |  | 毛刺台一 |
| 1693 | 清洗 | 2008-06-19 | 2008-06-20 | 1692 |  | 毛刺台一 |
| 1694 | 铣大结合面 | 2008-06-22 | 2008-06-23 | 1693 |  | 立铣 |
| 1695 | 铣平面 | 2008-06-23 | 2008-06-23 | 1694 |  | 一工段立加三轴64V(V600) [99.61%] |
| 1696 | 去毛刺 | 2008-06-23 | 2008-06-24 | 1695 |  | 毛刺台一 |
| 1697 | 修研平面 | 2008-06-24 | 2008-06-24 | 1696 |  | 研磨台 |
| 1698 | 钻铰孔 | 2008-06-24 | 2008-06-25 | 1697 |  | 立式钻床 |
| 1699 | 铣平面 | 2008-06-25 | 2008-06-25 | 1698 |  | 立铣 |
| 1700 | 划面 | 2008-06-25 | 2008-06-26 | 1699 |  | 立式钻床 |
| 1701 | 铣平面 | 2008-06-26 | 2008-06-26 | 1700 |  | 立铣 [99.81%] |
| 1702 | 铣平面 | 2008-06-26 | 2008-06-27 | 1701 |  | 立铣 |
| 1703 | 精铣型腔 | 2008-06-27 | 2008-06-28 | 1702 |  | 一工段立加三轴64V(V600) |
| 1704 | 修研大结合面 | 2008-06-29 | 2008-06-30 | 1703 |  | 研磨台 |
| 1705 | 铣平面 | 2008-06-30 | 2008-06-30 | 1704 |  | 一工段立加三轴64V(V600) |
| 1706 | 钻孔攻螺纹 | 2008-06-30 | 2008-07-01 | 1705 |  | 立式钻床 |
| 1707 | 镗孔 | 2008-07-01 | 2008-07-03 | 1706 |  | 中型普车 |
| 1708 | 镗孔划面 | 2008-07-03 | 2008-07-04 | 1707 |  | 中型普车 |
| 1709 | 钻铰孔 | 2008-07-04 | 2008-07-05 | 1708 |  | 立式钻床 |
| 1710 | 钻孔 | 2008-07-05 | 2008-07-05 | 1709 |  | 立式钻床 [99.78%] |
| 1711 | 钻铰孔 | 2008-07-05 | 2008-07-05 | 1710 |  | 立式钻床 |
| 1712 | 划面 | 2008-07-05 | 2008-07-06 | 1711 |  | 立式钻床 |
| 1713 | 铣大结合面 | 2008-07-06 | 2008-07-07 | 1712 |  | 立铣 |
| 1714 | 铣平面 | 2008-07-07 | 2008-07-08 | 1713 |  | 立铣 |
| 1715 | 去毛刺 | 2008-07-08 | 2008-07-08 | 1714 |  | 毛刺台一 |
| 1716 | 修研大结合面 | 2008-07-08 | 2008-07-09 | 1715 |  | 研磨台 |
| 1717 | 铣型面 | 2008-07-09 | 2008-07-10 | 1716 |  | 一工段立加三轴64V(V600) |
| 1718 | 镗孔 | 2008-07-10 | 2008-07-12 | 1717 |  | 中型普车 |
| 1719 | 去毛刺 | 2008-07-12 | 2008-07-13 | 1718 |  | 毛刺台一 |
| 1720 | 研大结合面 | 2008-07-14 | 2008-07-15 | 1719 |  | 研磨台 |
| 1721 | 镗孔倒角 | 2008-07-15 | 2008-07-17 | 1720 |  | 坐标镗 |
| 1722 | 铣槽 | 2008-07-17 | 2008-07-17 | 1721 |  | 立铣 |
| 1723 | 铣半圆槽 | 2008-07-17 | 2008-07-17 | 1722 |  | 立铣 |
| 1724 | 划面 | 2008-07-17 | 2008-07-18 | 1723 |  | 立式钻床 |
| 1725 | 去毛刺 | 2008-07-18 | 2008-07-18 | 1724 |  | 毛刺台一 |
| 1726 | 清洗 | 2008-07-18 | 2008-07-19 | 1725 |  | 毛刺台一 |
| 1727 | 检验 | 2008-07-19 | 2008-07-20 | 1726 |  | 检验 |
| 1728 | 铣外型 | 2008-07-20 | 2008-07-21 | 1727 |  | 一工段立加三轴64V(V600) |
| 1729 | 去毛刺打磨 | 2008-07-22 | 2008-07-22 | 1728 |  | 毛刺台一 |
| 1730 | 清洗 | 2008-07-22 | 2008-07-23 | 1729 |  | 毛刺台一 |
| 1731 | 粘接堵头 | 2008-07-23 | 2008-07-24 | 1730 |  | 外协 |
| 1732 | 装堵头 | 2008-07-24 | 2008-07-25 | 1731 |  | 立式钻床 |
| 1733 | 气密试验 | 2008-07-25 | 2008-07-25 | 1732 |  | 试验间 |
| 1734 | 清洗 | 2008-07-25 | 2008-07-26 | 1733 |  | 毛刺台一 |
| 1735 | 荧光检验 | 2008-07-26 | 2008-07-28 | 1734 |  | 外协 |
| 1736 | 研磨平面 | 2008-07-28 | 2008-07-30 | 1735 |  | 研磨台 |
| 1737 | 清洗 | 2008-07-30 | 2008-07-30 | 1736 |  | 毛刺台一 |
| 1738 | 检验 | 2008-07-30 | 2008-07-31 | 1737 |  | 检验 |
| 1739 | 检验 | 2008-08-02 | 2008-08-03 | 1738 |  | 检验 |
| 1740 | 大壳体 | 2008-05-13 | 2008-09-14 |  |  |  |
| 1741 | 已完成任务 | 2008-05-13 | 2008-05-13 | 1884 | 100% |  |
| 1742 | 已完成任务 | 2008-06-02 | 2008-06-02 | 1884 | 100% |  |
| 1743 | 切槽 | 2008-06-14 | 2008-06-14 | 1742 |  | 斯贝单元立车 |
| 1744 | 切槽 | 2008-06-14 | 2008-06-16 | 1741, 1743 |  | 斯贝单元立车 |
| 1745 | 切槽 | 2008-06-16 | 2008-06-17 | 1741, 1744 |  | 斯贝单元立车 |
| 1746 | 镗孔切槽 | 2008-06-17 | 2008-06-17 | 1741, 1745 |  | 斯贝单元立车 |
| 1747 | 车槽 | 2008-06-17 | 2008-06-18 | 1741, 1746 |  | 斯贝单元立车 |
| 1748 | 切槽 | 2008-06-18 | 2008-06-19 | 1741, 1747 |  | 斯贝单元立车 |
| 1749 | 切槽 | 2008-06-19 | 2008-06-20 | 1741, 1748 |  | 斯贝单元立车 |
| 1750 | 铣 镗 攻 | 2008-06-20 | 2008-06-21 | 1747, 1748, 1749 |  | 斯贝单元80U-1（四） |

| ID | Task | Start | Finish | Predecessors | Complete | Resources |
| --- | --- | --- | --- | --- | --- | --- |
| 1751 | 铣面 镗孔 | 2008-06-21 | 2008-06-23 | 1741, 1750 |  | 斯贝单元80U-2（五） |
| 1752 | 铣面 镗孔 | 2008-06-23 | 2008-06-24 | 1742, 1751 |  | 斯贝单元80U-1（四） |
| 1753 | 已完成任务 | 2008-05-20 | 2008-05-20 | 1884, 1752 | 100% |  |
| 1754 | 钻 铣 镗 | 2008-06-14 | 2008-06-17 | 1741, 1753 |  | 斯贝单元80P-1（五） |
| 1755 | 钻 扩 攻 | 2008-06-17 | 2008-06-18 | 1745, 1746, 1754 |  | 斯贝单元80P-1（五） |
| 1756 | 铣槽 | 2008-06-23 | 2008-06-25 | 1751, 1755 |  | 万能铣床 |
| 1757 | 切槽 | 2008-06-25 | 2008-06-26 | 1751, 1756 |  | 斯贝单元立车 |
| 1758 | 切槽 | 2008-06-26 | 2008-06-27 | 1751, 1757 |  | 斯贝单元立车 |
| 1759 | 切槽 | 2008-06-27 | 2008-06-28 | 1750, 1758 |  | 斯贝单元立车 |
| 1760 | 铣槽 | 2008-06-29 | 2008-06-30 | 1757, 1759 |  | 万能铣床 |
| 1761 | 钻孔 | 2008-06-30 | 2008-07-01 | 1746, 1751, 1760 |  | 斯贝单元80P-1（五） |
| 1762 | 铣镗 | 2008-07-01 | 2008-07-03 | 1754, 1761 |  | 斯贝单元80U-1（四） |
| 1763 | 清洗 | 2008-07-03 | 2008-07-03 | 1762 |  | 无设备 |
| 1764 | 铣槽 | 2008-07-04 | 2008-07-07 | 1753, 1744, 1749, 1752, 1755, 1756, 1758, 1759, 1760, 1761, 1762, 1763 |  | 万能铣床 |
| 1765 | 铣槽 | 2008-07-07 | 2008-07-08 | 1764 |  | 万能铣床 |
| 1766 | 切槽 | 2008-07-08 | 2008-07-09 | 1765 |  | 斯贝单元立车 |
| 1767 | 钻 铣 镗 | 2008-07-09 | 2008-07-10 | 1753, 1744, 1749, 1752, 1755, 1756, 1758, 1759, 1760, 1761, 1762, 1763, 1766 |  | 斯贝单元80U-1（四） |
| 1768 | 钻 铣 攻 | 2008-07-10 | 2008-07-11 | 1753, 1744, 1749, 1752, 1755, 1756, 1758, 1759, 1760, 1761, 1762, 1763, 1767 |  | 斯贝单元80P-1（五） |
| 1769 | 清洗 | 2008-07-11 | 2008-07-11 | 1768 |  | 毛刺台二 |
| 1770 | 镗孔 | 2008-07-11 | 2008-07-12 | 1767, 1769 |  | 坐标镗 |
| 1771 | 研孔 | 2008-07-13 | 2008-07-13 | 1770 |  | 研磨台 |
| 1772 | 浸泡 | 2008-07-13 | 2008-07-14 | 1771 |  | 试验工作中心 |
| 1773 | 超声波清洗 | 2008-07-14 | 2008-07-14 | 1772 |  | 试验工作中心 |
| 1774 | 钻 划 攻 | 2008-07-14 | 2008-07-15 | 1753, 1744, 1749, 1752, 1755, 1756, 1758, 1759, 1760, 1761, 1762, 1763, 1773 |  | 斯贝单元80P-1（五） |
| 1775 | 铣 镗 攻 | 2008-07-15 | 2008-07-17 | 1753, 1744, 1749, 1752, 1755, 1756, 1758, 1759, 1760, 1761, 1762, 1763, 1774 |  | 斯贝单元80U-2（五） |
| 1776 | 镗孔 切槽 | 2008-07-17 | 2008-07-18 | 1775 |  | 斯贝单元立车 |
| 1777 | 铣槽 | 2008-07-18 | 2008-07-19 | 1776 |  | 万能铣床 |
| 1778 | 铣槽 | 2008-07-19 | 2008-07-20 | 1777 |  | 万能铣床 |
| 1779 | 铣槽 | 2008-07-20 | 2008-07-21 | 1777, 1778 |  | 万能铣床 |
| 1780 | 铣槽 | 2008-07-21 | 2008-07-22 | 1753, 1744, 1749, 1752, 1755, 1756, 1758, 1759, 1760, 1761, 1762, 1763, 1779 |  | 万能铣床 |
| 1781 | 铣槽 | 2008-07-22 | 2008-07-23 | 1780 |  | 万能铣床 |
| 1782 | 铣面 镗孔 | 2008-07-23 | 2008-07-24 | 1753, 1744, 1749, 1752, 1755, 1756, 1758, 1759, 1760, 1761, 1762, 1763, 1781 |  | 斯贝单元80U-2（五） |
| 1783 | 钻攻 | 2008-07-24 | 2008-07-25 | 1767, 1769, 1782 |  | 斯贝单元80U-2（五） |
| 1784 | 钻 铣 镗 | 2008-07-25 | 2008-07-28 | 1777, 1783 |  | 斯贝单元80U-2（五） |
| 1785 | 铣槽 | 2008-07-28 | 2008-07-28 | 1782, 1784 |  | 万能铣床 |
| 1786 | 钻 镗 铣 攻 | 2008-07-28 | 2008-07-29 | 1767, 1769, 1785 |  | 斯贝单元80P-1（五） |
| 1787 | 钻 铣 攻 | 2008-07-29 | 2008-07-31 | 1782, 1784, 1786 |  | 斯贝单元80P-1（五） |
| 1788 | 钻 镗 铣 攻 | 2008-07-31 | 2008-08-01 | 1782, 1786, 1787 |  | 斯贝单元80U-2（五） |
| 1789 | 切槽 | 2008-08-01 | 2008-08-03 | 1788 |  | 斯贝单元立车 |
| 1790 | 钻 铣 镗 | 2008-08-03 | 2008-08-05 | 1782, 1784, 1789 |  | 斯贝单元80U-2（五） |
| 1791 | 划铣 | 2008-08-06 | 2008-08-06 | 1787, 1790 |  | 立式钻床 |
| 1792 | 攻螺纹 钻孔 | 2008-08-06 | 2008-08-10 | 1766, 1774, 1778, 1779, 1781, 1783, 1785, 1789, 1790, 1791 |  | 立式钻床 |
| 1793 | 清洗 | 2008-08-10 | 2008-08-11 | 1792 |  | 毛刺台一 |
| 1794 | 打毛刺 | 2008-08-11 | 2008-08-12 | 1793 |  | 毛刺台二 |
| 1795 | 去毛刺 | 2008-08-12 | 2008-08-12 | 1794 |  | 毛刺台二 |
| 1796 | 打磨 | 2008-08-12 | 2008-08-13 | 1795 |  | 立式钻床 |
| 1797 | 清洗 | 2008-08-13 | 2008-08-14 | 1796 |  | 毛刺台一 |
| 1798 | 检验 | 2008-08-14 | 2008-08-15 | 1797 |  | 检验 |
| 1799 | 检验 | 2008-08-15 | 2008-08-16 | 1798 |  | 检验 |
| 1800 | 检验 | 2008-08-16 | 2008-08-17 | 1799 |  | 检验 |
| 1801 | 浸泡 | 2008-08-17 | 2008-08-18 | 1800 |  | 试验间 |
| 1802 | 超声波清洗 | 2008-08-18 | 2008-08-18 | 1801 |  | 试验间 |
| 1803 | 冲洗 | 2008-08-18 | 2008-08-19 | 1802 |  | 试验间 |
| 1804 | 刻线 | 2008-08-19 | 2008-08-19 | 1803 |  | 毛刺台二 |
| 1805 | 铣镗孔 | 2008-08-21 | 2008-08-22 | 1792, 1804 |  | 斯贝单元80U-1（四） |
| 1806 | 攻螺纹 | 2008-08-23 | 2008-08-23 | 1805 |  | 立式钻床 |
| 1807 | 清洗 | 2008-08-23 | 2008-08-24 | 1806 |  | 毛刺台二 |
| 1808 | 精镗孔 | 2008-08-24 | 2008-08-26 | 1805, 1807 |  | 坐标镗 [101.41%] |
| 1809 | 精镗孔 | 2008-08-26 | 2008-08-28 | 1808 |  | 坐标镗 |
| 1810 | 精镗孔 | 2008-08-28 | 2008-08-29 | 1809 |  | 坐标镗 |
| 1811 | 精镗孔 | 2008-08-29 | 2008-08-31 | 1810 |  | 坐标镗 |
| 1812 | 精镗孔 | 2008-08-31 | 2008-09-01 | 1811 |  | 坐标镗 |
| 1813 | 铣镗 | 2008-09-01 | 2008-09-02 | 1807, 1812 |  | 斯贝单元80U-1（四） |
| 1814 | 铣 螺纹 切槽 | 2008-09-02 | 2008-09-03 | 1813 |  | 四轴立卧加 |
| 1815 | 抛光 | 2008-09-04 | 2008-09-04 | 1814 |  | 立式钻床 |
| 1816 | 清洗 | 2008-09-04 | 2008-09-04 | 1815 |  | 毛刺台一 |
| 1817 | 打毛刺 | 2008-09-04 | 2008-09-05 | 1816 |  | 毛刺台一 |
| 1818 | 清洗 | 2008-09-05 | 2008-09-06 | 1817 |  | 毛刺台一 |
| 1819 | 检验 | 2008-09-06 | 2008-09-07 | 1818 |  | 检验 |
| 1820 | 检验 | 2008-09-07 | 2008-09-08 | 1819 |  | 检验 |

| ID | Task | Start | Finish | Predecessors | Complete | Resources |
| --- | --- | --- | --- | --- | --- | --- |
| 1821 | 荧光检查 | 2008-09-08 | 2008-09-10 | 1820 |  | 外协 |
| 1822 | 清洗 | 2008-09-10 | 2008-09-10 | 1821 |  | 试验间 |
| 1823 | 浸泡 | 2008-09-10 | 2008-09-10 | 1822 |  | 试验间 |
| 1824 | 超声波清洗 | 2008-09-10 | 2008-09-11 | 1823 |  | 试验间 |
| 1825 | 冲洗 | 2008-09-11 | 2008-09-11 | 1824 |  | 试验间 |
| 1826 | 检验 | 2008-09-11 | 2008-09-11 | 1825 |  | 检验 |
| 1827 | 检验 | 2008-09-13 | 2008-09-14 | 1825, 1826 |  | 检验 |
| 1828 | 大壳体 | 2008-05-13 | 2008-07-03 |  |  |  |
| 1829 | 已完成任务 | 2008-05-13 | 2008-05-13 | 1884 | 100% |  |
| 1830 | 铣外形 | 2008-06-14 | 2008-06-14 | 1829 |  | 双头仿型铣 |
| 1831 | 已完成任务 | 2008-05-14 | 2008-05-14 | 1830 | 100% |  |
| 1832 | 已完成任务 | 2008-05-14 | 2008-05-14 | 1830 | 100% |  |
| 1833 | 铣槽 | 2008-06-15 | 2008-06-15 | 1831, 1832 |  | 万能铣床 |
| 1834 | 已完成任务 | 2008-05-13 | 2008-05-13 | 1830, 1833 | 100% |  |
| 1835 | 切槽 | 2008-06-14 | 2008-06-16 | 1834 |  | 斯贝单元立车 |
| 1836 | 已完成任务 | 2008-05-19 | 2008-05-19 | 1830, 1833, 1835 | 100% |  |
| 1837 | 清洗 | 2008-06-15 | 2008-06-15 | 1836 |  | 毛刺台一 |
| 1838 | 已完成任务 | 2008-05-19 | 2008-05-19 | 1837 | 100% |  |
| 1839 | 去毛刺 | 2008-06-15 | 2008-06-15 | 1838 |  | 毛刺台二 |
| 1840 | 已完成任务 | 2008-05-17 | 2008-05-17 | 1839 | 100% |  |
| 1841 | 清洗 | 2008-06-15 | 2008-06-15 | 1840 |  | 毛刺台一 |
| 1842 | 检验 | 2008-06-15 | 2008-06-16 | 1841 |  | 检验 |
| 1843 | 检验 | 2008-06-16 | 2008-06-17 | 1842 |  | 检验 |
| 1844 | 检验 | 2008-06-17 | 2008-06-18 | 1843 |  | 检验 |
| 1845 | 浸泡 | 2008-06-18 | 2008-06-18 | 1844 |  | 试验间 |
| 1846 | 超声波清洗 | 2008-06-18 | 2008-06-19 | 1845 |  | 试验间 |
| 1847 | 冲洗 | 2008-06-19 | 2008-06-19 | 1846 |  | 试验间 |
| 1848 | 刻线 | 2008-06-20 | 2008-06-20 | 1847 |  | 毛刺台二 |
| 1849 | 已完成任务 | 2008-05-24 | 2008-05-24 | 1836, 1848 | 100% |  |
| 1850 | 已完成任务 | 2008-05-24 | 2008-05-24 | 1836, 1848 | 100% |  |
| 1851 | 清洗 | 2008-06-15 | 2008-06-15 | 1850 |  | 毛刺台二 |
| 1852 | 精镗孔 | 2008-06-15 | 2008-06-17 | 1849, 1851 |  | 坐标镗 [104.35%] |
| 1853 | 精镗孔 | 2008-06-17 | 2008-06-18 | 1852 |  | 坐标镗 [100.07%] |
| 1854 | 精镗孔 | 2008-06-18 | 2008-06-19 | 1853 |  | 坐标镗 |
| 1855 | 精镗孔 | 2008-06-19 | 2008-06-20 | 1854 |  | 坐标镗 |
| 1856 | 精镗孔 | 2008-06-20 | 2008-06-22 | 1855 |  | 坐标镗 |
| 1857 | 铣镗 | 2008-06-22 | 2008-06-23 | 1851, 1856 |  | 斯贝单元80U-1（四） |
| 1858 | 铣 螺纹 切槽 | 2008-06-23 | 2008-06-24 | 1857 |  | 四轴立卧加 |
| 1859 | 抛光 | 2008-06-24 | 2008-06-24 | 1858 |  | 立式钻床 |
| 1860 | 清洗 | 2008-06-24 | 2008-06-25 | 1859 |  | 毛刺台一 |
| 1861 | 打毛刺 | 2008-06-25 | 2008-06-25 | 1860 |  | 毛刺台一 |
| 1862 | 清洗 | 2008-06-25 | 2008-06-26 | 1861 |  | 毛刺台一 |
| 1863 | 检验 | 2008-06-26 | 2008-06-27 | 1862 |  | 检验 |
| 1864 | 检验 | 2008-06-27 | 2008-06-28 | 1863 |  | 检验 |
| 1865 | 荧光检查 | 2008-06-28 | 2008-06-30 | 1864 |  | 外协 |
| 1866 | 清洗 | 2008-06-30 | 2008-06-30 | 1865 |  | 试验间 |
| 1867 | 浸泡 | 2008-06-30 | 2008-07-01 | 1866 |  | 试验间 |
| 1868 | 超声波清洗 | 2008-07-01 | 2008-07-01 | 1867 |  | 试验间 |
| 1869 | 冲洗 | 2008-07-01 | 2008-07-01 | 1868 |  | 试验间 |
| 1870 | 检验 | 2008-07-01 | 2008-07-01 | 1869 |  | 检验 |
| 1871 | 检验 | 2008-07-03 | 2008-07-03 | 1869, 1870 |  | 检验 |
| 1872 | 大壳体 | 2008-06-02 | 2008-06-22 |  |  |  |
| 1873 | 已完成任务 | 2008-06-02 | 2008-06-02 | 1836, 1848, 1851 | 100% |  |
| 1874 | 检验 | 2008-06-15 | 2008-06-16 | 1873 |  | 检验 |
| 1875 | 检验 | 2008-06-16 | 2008-06-17 | 1874 |  | 检验 |
| 1876 | 荧光检查 | 2008-06-17 | 2008-06-18 | 1875 |  | 外协 |
| 1877 | 清洗 | 2008-06-18 | 2008-06-18 | 1876 |  | 试验间 |
| 1878 | 浸泡 | 2008-06-18 | 2008-06-19 | 1877 |  | 试验间 |
| 1879 | 超声波清洗 | 2008-06-19 | 2008-06-19 | 1878 |  | 试验间 |
| 1880 | 冲洗 | 2008-06-19 | 2008-06-20 | 1879 |  | 试验间 |
| 1881 | 检验 | 2008-06-20 | 2008-06-20 | 1880 |  | 检验 |
| 1882 | 检验 | 2008-06-21 | 2008-06-22 | 1881 |  | 检验 |
| 1883 | 大壳体 | 2008-05-16 | 2008-09-04 |  |  |  |
| 1884 | 检验 | 2008-06-15 | 2008-06-16 |  |  | 检验 |
| 1885 | 已完成任务 | 2008-05-16 | 2008-05-16 | 1884 | 100% |  |
| 1886 | 铣外形 | 2008-06-15 | 2008-06-15 | 1885 |  | 双头仿型铣 |
| 1887 | 铣外形 | 2008-06-15 | 2008-06-15 | 1886 |  | 双头仿型铣 |
| 1888 | 打磨外形 | 2008-06-15 | 2008-06-16 | 1887 |  | 毛刺台一 |
| 1889 | 已完成任务 | 2008-05-16 | 2008-05-16 | 1888 | 100% |  |
| 1890 | 已完成任务 | 2008-06-02 | 2008-06-02 | 1889 | 100% |  |

| ID | Task | Start | Finish | Predecessors | Resources |
| --- | --- | --- | --- | --- | --- |
| 1891 | 切槽 | 2008-06-14 | 2008-06-16 | 1890 | 斯贝单元立车 |
| 1892 | 切槽 | 2008-06-16 | 2008-06-16 | 1891 | 斯贝单元立车 |
| 1893 | 切槽 | 2008-06-16 | 2008-06-16 | 1890, 1892 | 斯贝单元立车 |
| 1894 | 切槽 | 2008-06-16 | 2008-06-17 | 1890, 1893 | 斯贝单元立车 |
| 1895 | 镗孔切槽 | 2008-06-17 | 2008-06-18 | 1890, 1894 | 斯贝单元立车 |
| 1896 | 车槽 | 2008-06-18 | 2008-06-19 | 1890, 1895 | 斯贝单元立车 |
| 1897 | 切槽 | 2008-06-19 | 2008-06-19 | 1890, 1896 | 斯贝单元立车 |
| 1898 | 切槽 | 2008-06-19 | 2008-06-20 | 1890, 1897 | 斯贝单元立车 |
| 1899 | 铣 镗 攻 | 2008-06-20 | 2008-06-21 | 1896, 1897, 1898 | 斯贝单元80U-1（四） |
| 1900 | 铣面 镗孔 | 2008-06-21 | 2008-06-23 | 1890, 1899 | 斯贝单元80U-2（五） |
| 1901 | 铣面 镗孔 | 2008-06-23 | 2008-06-24 | 1891, 1900 | 斯贝单元80U-1（四） |
| 1902 | 铣镗 | 2008-06-24 | 2008-06-25 | 1890, 1901 | 斯贝单元80U-2（五） |
| 1903 | 钻 铣 镗 | 2008-06-25 | 2008-06-26 | 1890, 1902 | 斯贝单元80P-1（五） |
| 1904 | 钻 扩 攻 | 2008-06-26 | 2008-06-27 | 1894, 1895, 1903 | 斯贝单元80P-1（五） |
| 1905 | 铣槽 | 2008-06-27 | 2008-06-29 | 1900, 1904 | 万能铣床 |
| 1906 | 切槽 | 2008-06-29 | 2008-06-30 | 1900, 1905 | 斯贝单元立车 |
| 1907 | 切槽 | 2008-06-30 | 2008-07-01 | 1900, 1906 | 斯贝单元立车 |
| 1908 | 切槽 | 2008-07-01 | 2008-07-02 | 1899, 1907 | 斯贝单元立车 |
| 1909 | 铣槽 | 2008-07-02 | 2008-07-02 | 1906, 1908 | 万能铣床 |
| 1910 | 钻孔 | 2008-07-02 | 2008-07-03 | 1895, 1900, 1909 | 斯贝单元80P-1（五） |
| 1911 | 铣镗 | 2008-07-03 | 2008-07-04 | 1903, 1910 | 斯贝单元80U-1（四） |
| 1912 | 清洗 | 2008-07-04 | 2008-07-04 | 1911 | 无设备 |
| 1913 | 铣槽 | 2008-07-06 | 2008-07-07 | 1893, 1898, 1901, 1902, 1904, 1905, 1907, 1908, 1909, 1910, 1911, 1912 | 万能铣床 |
| 1914 | 铣槽 | 2008-07-07 | 2008-07-08 | 1913 | 万能铣床 |
| 1915 | 切槽 | 2008-07-08 | 2008-07-09 | 1914 | 斯贝单元立车 |
| 1916 | 钻 铣 镗 | 2008-07-09 | 2008-07-10 | 1893, 1898, 1901, 1902, 1904, 1905, 1907, 1908, 1909, 1910, 1911, 1912, 1915 | 斯贝单元80U-1（四） |
| 1917 | 钻 铣 攻 | 2008-07-10 | 2008-07-10 | 1893, 1898, 1901, 1902, 1904, 1905, 1907, 1908, 1909, 1910, 1911, 1912, 1916 | 斯贝单元80P-1（五） |
| 1918 | 清洗 | 2008-07-11 | 2008-07-11 | 1917 | 毛刺台二 |
| 1919 | 镗孔 | 2008-07-11 | 2008-07-12 | 1916, 1918 | 坐标镗 |
| 1920 | 研孔 | 2008-07-12 | 2008-07-13 | 1919 | 研磨台 |
| 1921 | 浸泡 | 2008-07-13 | 2008-07-14 | 1920 | 试验工作中心 |
| 1922 | 超声波清洗 | 2008-07-14 | 2008-07-14 | 1921 | 试验工作中心 |
| 1923 | 钻 划 攻 | 2008-07-14 | 2008-07-15 | 1893, 1898, 1901, 1902, 1904, 1905, 1907, 1908, 1909, 1910, 1911, 1912, 1922 | 斯贝单元80P-1（五） |
| 1924 | 铣 镗 攻 | 2008-07-15 | 2008-07-16 | 1893, 1898, 1901, 1902, 1904, 1905, 1907, 1908, 1909, 1910, 1911, 1912, 1923 | 斯贝单元80U-2（五） |
| 1925 | 镗孔 切槽 | 2008-07-16 | 2008-07-17 | 1924 | 斯贝单元立车 |
| 1926 | 铣槽 | 2008-07-17 | 2008-07-17 | 1925 | 万能铣床 |
| 1927 | 铣槽 | 2008-07-17 | 2008-07-18 | 1926 | 万能铣床 |
| 1928 | 铣槽 | 2008-07-18 | 2008-07-18 | 1926, 1927 | 万能铣床 |
| 1929 | 铣槽 | 2008-07-18 | 2008-07-19 | 1893, 1898, 1901, 1902, 1904, 1905, 1907, 1908, 1909, 1910, 1911, 1912, 1928 | 万能铣床 |
| 1930 | 铣槽 | 2008-07-19 | 2008-07-20 | 1929 | 万能铣床 |
| 1931 | 铣面 镗孔 | 2008-07-20 | 2008-07-21 | 1893, 1898, 1901, 1902, 1904, 1905, 1907, 1908, 1909, 1910, 1911, 1912, 1930 | 斯贝单元80U-2（五） |
| 1932 | 钻攻 | 2008-07-21 | 2008-07-22 | 1916, 1918, 1931 | 斯贝单元80U-2（五） |
| 1933 | 钻 铣 镗 | 2008-07-22 | 2008-07-23 | 1926, 1932 | 斯贝单元80U-2（五） |
| 1934 | 铣槽 | 2008-07-23 | 2008-07-23 | 1931, 1933 | 万能铣床 |
| 1935 | 钻 镗 铣 攻 | 2008-07-23 | 2008-07-24 | 1916, 1918, 1934 | 斯贝单元80P-1（五） |
| 1936 | 钻 铣 攻 | 2008-07-24 | 2008-07-25 | 1931, 1933, 1935 | 斯贝单元80P-1（五） |
| 1937 | 钻 镗 铣 攻 | 2008-07-25 | 2008-07-27 | 1931, 1935, 1936 | 斯贝单元80U-2（五） |
| 1938 | 切槽 | 2008-07-27 | 2008-07-28 | 1937 | 斯贝单元立车 |
| 1939 | 钻 铣 镗 | 2008-07-28 | 2008-07-30 | 1931, 1933, 1938 | 斯贝单元80U-2（五） |
| 1940 | 划铣 | 2008-07-30 | 2008-07-30 | 1936, 1939 | 立式钻床 |
| 1941 | 攻螺纹 钻孔 | 2008-07-30 | 2008-08-01 | 1915, 1923, 1927, 1928, 1930, 1932, 1934, 1938, 1939, 1940 | 立式钻床 |
| 1942 | 清洗 | 2008-08-01 | 2008-08-02 | 1941 | 毛刺台一 |
| 1943 | 打毛刺 | 2008-08-02 | 2008-08-03 | 1942 | 毛刺台二 |
| 1944 | 去毛刺 | 2008-08-03 | 2008-08-04 | 1943 | 毛刺台二 |
| 1945 | 打磨 | 2008-08-04 | 2008-08-04 | 1944 | 立式钻床 |
| 1946 | 清洗 | 2008-08-04 | 2008-08-05 | 1945 | 毛刺台一 |
| 1947 | 检验 | 2008-08-06 | 2008-08-06 | 1946 | 检验 |
| 1948 | 检验 | 2008-08-07 | 2008-08-07 | 1947 | 检验 |
| 1949 | 检验 | 2008-08-08 | 2008-08-08 | 1948 | 检验 |
| 1950 | 浸泡 | 2008-08-08 | 2008-08-09 | 1949 | 试验间 |
| 1951 | 超声波清洗 | 2008-08-09 | 2008-08-10 | 1950 | 试验间 |
| 1952 | 冲洗 | 2008-08-10 | 2008-08-11 | 1951 | 试验间 |
| 1953 | 刻线 | 2008-08-11 | 2008-08-11 | 1952 | 毛刺台二 |
| 1954 | 铣镗孔 | 2008-08-13 | 2008-08-14 | 1941, 1953 | 斯贝单元80U-1（四） |
| 1955 | 攻螺纹 | 2008-08-14 | 2008-08-14 | 1954 | 立式钻床 |
| 1956 | 清洗 | 2008-08-14 | 2008-08-15 | 1955 | 毛刺台二 |
| 1957 | 精镗孔 | 2008-08-15 | 2008-08-17 | 1954, 1956 | 坐标镗 [101.05%] |
| 1958 | 精镗孔 | 2008-08-17 | 2008-08-18 | 1957 | 坐标镗 [100.12%] |
| 1959 | 精镗孔 | 2008-08-18 | 2008-08-19 | 1958 | 坐标镗 |
| 1960 | 精镗孔 | 2008-08-19 | 2008-08-20 | 1959 | 坐标镗 |

| ID | Task | Start | Finish | Predecessors | Complete | Resources |
| --- | --- | --- | --- | --- | --- | --- |
| 1961 | 精镗孔 | 2008-08-20 | 2008-08-21 | 1960 |  | 坐标镗 |
| 1962 | 铣镗 | 2008-08-21 | 2008-08-22 | 1956, 1961 |  | 斯贝单元80U-1（四） |
| 1963 | 铣 螺纹 切槽 | 2008-08-22 | 2008-08-23 | 1962 |  | 四轴立卧加 |
| 1964 | 抛光 | 2008-08-23 | 2008-08-24 | 1963 |  | 立式钻床 |
| 1965 | 清洗 | 2008-08-24 | 2008-08-24 | 1964 |  | 毛刺台一 |
| 1966 | 打毛刺 | 2008-08-24 | 2008-08-25 | 1965 |  | 毛刺台一 |
| 1967 | 清洗 | 2008-08-25 | 2008-08-26 | 1966 |  | 毛刺台一 |
| 1968 | 检验 | 2008-08-26 | 2008-08-27 | 1967 |  | 检验 |
| 1969 | 检验 | 2008-08-28 | 2008-08-28 | 1968 |  | 检验 |
| 1970 | 荧光检查 | 2008-08-29 | 2008-08-30 | 1969 |  | 外协 |
| 1971 | 清洗 | 2008-08-30 | 2008-08-31 | 1970 |  | 试验间 |
| 1972 | 浸泡 | 2008-08-31 | 2008-09-01 | 1971 |  | 试验间 |
| 1973 | 超声波清洗 | 2008-09-01 | 2008-09-01 | 1972 |  | 试验间 |
| 1974 | 冲洗 | 2008-09-01 | 2008-09-02 | 1973 |  | 试验间 |
| 1975 | 检验 | 2008-09-02 | 2008-09-02 | 1974 |  | 检验 |
| 1976 | 检验 | 2008-09-04 | 2008-09-04 | 1974, 1975 |  | 检验 |
| 1977 | 大壳体 | 2008-05-13 | 2009-01-12 |  |  |  |
| 1978 | 检验 | 2008-06-15 | 2008-06-16 |  |  | 检验 |
| 1979 | 已完成任务 | 2008-05-13 | 2008-05-13 | 1978 | 100% |  |
| 1980 | 荧光检查 | 2008-06-15 | 2008-06-16 | 1979 |  | 外协 |
| 1981 | 清洗 | 2008-06-16 | 2008-06-17 | 1980 |  | 毛刺台一 |
| 1982 | 铣平面 | 2008-06-17 | 2008-06-18 | 1981 |  | 斯贝单元80P-1（五） |
| 1983 | 铣平面 | 2008-06-18 | 2008-06-20 | 1982 |  | 斯贝单元80U-1（四） |
| 1984 | 去毛刺 | 2008-06-20 | 2008-06-20 | 1983 |  | 毛刺台一 |
| 1985 | 打号 | 2008-06-20 | 2008-06-20 | 1984 |  | 毛刺台二 |
| 1986 | 铣外形 | 2008-06-20 | 2008-06-24 | 1984, 1985 |  | 双头仿型铣 |
| 1987 | 铣外形 | 2008-06-24 | 2008-06-27 | 1986 |  | 双头仿型铣 |
| 1988 | 铣外形 | 2008-06-27 | 2008-07-01 | 1987 |  | 双头仿型铣 |
| 1989 | 铣外形 | 2008-07-01 | 2008-07-04 | 1988 |  | 双头仿型铣 |
| 1990 | 铣外形 | 2008-07-04 | 2008-07-09 | 1989 |  | 双头仿型铣 |
| 1991 | 铣外形 | 2008-07-09 | 2008-07-12 | 1990 |  | 双头仿型铣 |
| 1992 | 铣外形 | 2008-07-12 | 2008-07-16 | 1991 |  | 双头仿型铣 |
| 1993 | 铣外形 | 2008-07-16 | 2008-07-16 | 1992 |  | 双头仿型铣 |
| 1994 | 铣外形 | 2008-07-16 | 2008-07-16 | 1993 |  | 双头仿型铣 |
| 1995 | 打磨外形 | 2008-07-17 | 2008-07-17 | 1994 |  | 毛刺台二 |
| 1996 | 打号 | 2008-07-17 | 2008-07-17 | 1995 |  | 毛刺台二 |
| 1997 | 清洗 | 2008-07-17 | 2008-07-18 | 1995, 1996 |  | 毛刺台二 |
| 1998 | 清洗 | 2008-07-22 | 2008-07-22 | 1997 |  | 毛刺台一 |
| 1999 | 铣面 钻镗孔 | 2008-07-22 | 2008-07-25 | 1998 |  | 斯贝单元80P-1（五） |
| 2000 | 镗孔 | 2008-07-25 | 2008-07-26 | 1999 |  | 斯贝单元80U-1（四） |
| 2001 | 切槽 | 2008-07-26 | 2008-07-28 | 2000 |  | 斯贝单元立车 |
| 2002 | 切槽 | 2008-07-28 | 2008-07-28 | 2001 |  | 斯贝单元立车 |
| 2003 | 切槽 | 2008-07-28 | 2008-07-30 | 2000, 2002 |  | 斯贝单元立车 |
| 2004 | 切槽 | 2008-07-30 | 2008-07-31 | 2000, 2003 |  | 斯贝单元立车 |
| 2005 | 镗孔切槽 | 2008-07-31 | 2008-08-01 | 2000, 2004 |  | 斯贝单元立车 |
| 2006 | 车槽 | 2008-08-01 | 2008-08-04 | 2000, 2005 |  | 斯贝单元立车 |
| 2007 | 切槽 | 2008-08-04 | 2008-08-04 | 2000, 2006 |  | 斯贝单元立车 |
| 2008 | 切槽 | 2008-08-04 | 2008-08-06 | 2000, 2007 |  | 斯贝单元立车 |
| 2009 | 铣 镗 攻 | 2008-08-06 | 2008-08-08 | 2006, 2007, 2008 |  | 斯贝单元80U-1（四） |
| 2010 | 铣面 镗孔 | 2008-08-08 | 2008-08-13 | 2000, 2009 |  | 斯贝单元80U-2（五） |
| 2011 | 铣面 镗孔 | 2008-08-13 | 2008-08-15 | 2001, 2010 |  | 斯贝单元80U-1（四） |
| 2012 | 铣镗 | 2008-08-15 | 2008-08-20 | 2000, 2011 |  | 斯贝单元80U-2（五） |
| 2013 | 钻 铣 镗 | 2008-08-20 | 2008-08-23 | 2000, 2012 |  | 斯贝单元80P-1（五） |
| 2014 | 钻 扩 攻 | 2008-08-23 | 2008-08-25 | 2004, 2005, 2013 |  | 斯贝单元80P-1（五） |
| 2015 | 铣槽 | 2008-08-26 | 2008-08-31 | 2010, 2014 |  | 万能铣床 |
| 2016 | 切槽 | 2008-08-31 | 2008-09-02 | 2010, 2015 |  | 斯贝单元立车 |
| 2017 | 切槽 | 2008-09-02 | 2008-09-04 | 2010, 2016 |  | 斯贝单元立车 |
| 2018 | 切槽 | 2008-09-04 | 2008-09-05 | 2009, 2017 |  | 斯贝单元立车 |
| 2019 | 铣槽 | 2008-09-05 | 2008-09-08 | 2016, 2018 |  | 万能铣床 |
| 2020 | 钻孔 | 2008-09-08 | 2008-09-10 | 2005, 2010, 2019 |  | 斯贝单元80P-1（五） |
| 2021 | 铣镗 | 2008-09-10 | 2008-09-13 | 2013, 2020 |  | 斯贝单元80U-1（四） |
| 2022 | 清洗 | 2008-09-14 | 2008-09-14 | 2021 |  | 无设备 |
| 2023 | 铣槽 | 2008-09-16 | 2008-09-22 | 2003, 2008, 2011, 2012, 2014, 2015, 2017, 2018, 2019, 2020, 2021, 2022 |  | 万能铣床 |
| 2024 | 铣槽 | 2008-09-22 | 2008-09-23 | 2023 |  | 万能铣床 |
| 2025 | 切槽 | 2008-09-23 | 2008-09-24 | 2024 |  | 斯贝单元立车 |
| 2026 | 钻 铣 镗 | 2008-09-24 | 2008-09-27 | 2003, 2008, 2011, 2012, 2014, 2015, 2017, 2018, 2019, 2020, 2021, 2022, 2025 |  | 斯贝单元80U-1（四） |
| 2027 | 钻 铣 攻 | 2008-09-27 | 2008-09-29 | 2003, 2008, 2011, 2012, 2014, 2015, 2017, 2018, 2019, 2020, 2021, 2022, 2026 |  | 斯贝单元80P-1（五） |
| 2028 | 清洗 | 2008-09-29 | 2008-09-29 | 2027 |  | 毛刺台二 |
| 2029 | 镗孔 | 2008-09-29 | 2008-10-01 | 2026, 2028 |  | 坐标镗 |
| 2030 | 研孔 | 2008-10-01 | 2008-10-01 | 2029 |  | 研磨台 |

| ID | Task | Start | Finish | Predecessors | Resources |
| --- | --- | --- | --- | --- | --- |
| 2031 | 浸泡 | 2008-10-01 | 2008-10-01 | 2030 | 试验工作中心 |
| 2032 | 超声波清洗 | 2008-10-01 | 2008-10-02 | 2031 | 试验工作中心 |
| 2033 | 钻 划 攻 | 2008-10-02 | 2008-10-03 | 2003, 2008, 2011, 2012, 2014, 2015, 2017, 2018, 2019, 2020, 2021, 2022, 2032 | 斯贝单元80P-1（五） |
| 2034 | 铣 镗 攻 | 2008-10-03 | 2008-10-07 | 2003, 2008, 2011, 2012, 2014, 2015, 2017, 2018, 2019, 2020, 2021, 2022, 2033 | 斯贝单元80U-2（五） |
| 2035 | 镗孔 切槽 | 2008-10-07 | 2008-10-09 | 2034 | 斯贝单元立车 |
| 2036 | 铣槽 | 2008-10-09 | 2008-10-11 | 2035 | 万能铣床 |
| 2037 | 铣槽 | 2008-10-11 | 2008-10-14 | 2036 | 万能铣床 |
| 2038 | 铣槽 | 2008-10-14 | 2008-10-15 | 2036, 2037 | 万能铣床 |
| 2039 | 铣槽 | 2008-10-15 | 2008-10-19 | 2003, 2008, 2011, 2012, 2014, 2015, 2017, 2018, 2019, 2020, 2021, 2022, 2038 | 万能铣床 |
| 2040 | 铣槽 | 2008-10-19 | 2008-10-21 | 2039 | 万能铣床 |
| 2041 | 铣面 镗孔 | 2008-10-21 | 2008-10-23 | 2003, 2008, 2011, 2012, 2014, 2015, 2017, 2018, 2019, 2020, 2021, 2022, 2040 | 斯贝单元80U-2（五） |
| 2042 | 钻攻 | 2008-10-23 | 2008-10-26 | 2026, 2028, 2041 | 斯贝单元80U-2（五） |
| 2043 | 钻 铣 镗 | 2008-10-26 | 2008-10-29 | 2036, 2042 | 斯贝单元80U-2（五） |
| 2044 | 铣槽 | 2008-10-29 | 2008-10-30 | 2041, 2043 | 万能铣床 |
| 2045 | 钻 镗 铣 攻 | 2008-10-30 | 2008-11-02 | 2026, 2028, 2044 | 斯贝单元80P-1（五） |
| 2046 | 钻 铣 攻 | 2008-11-02 | 2008-11-05 | 2041, 2043, 2045 | 斯贝单元80P-1（五） |
| 2047 | 钻 镗 铣 攻 | 2008-11-05 | 2008-11-07 | 2041, 2045, 2046 | 斯贝单元80U-2（五） |
| 2048 | 切槽 | 2008-11-07 | 2008-11-10 | 2047 | 斯贝单元立车 |
| 2049 | 钻 铣 镗 | 2008-11-10 | 2008-11-14 | 2041, 2043, 2048 | 斯贝单元80U-2（五） |
| 2050 | 划铣 | 2008-11-14 | 2008-11-15 | 2046, 2049 | 立式钻床 |
| 2051 | 攻螺纹 钻孔 | 2008-11-15 | 2008-11-25 | 2025, 2033, 2037, 2038, 2040, 2042, 2044, 2048, 2049, 2050 | 立式钻床 |
| 2052 | 清洗 | 2008-11-25 | 2008-11-26 | 2051 | 毛刺台一 |
| 2053 | 打毛刺 | 2008-11-26 | 2008-11-27 | 2052 | 毛刺台二 |
| 2054 | 去毛刺 | 2008-11-27 | 2008-11-27 | 2053 | 毛刺台二 |
| 2055 | 打磨 | 2008-11-27 | 2008-11-30 | 2054 | 立式钻床 |
| 2056 | 清洗 | 2008-11-30 | 2008-12-01 | 2055 | 毛刺台一 |
| 2057 | 检验 | 2008-12-02 | 2008-12-02 | 2056 | 检验 |
| 2058 | 检验 | 2008-12-03 | 2008-12-03 | 2057 | 检验 |
| 2059 | 检验 | 2008-12-04 | 2008-12-04 | 2058 | 检验 |
| 2060 | 浸泡 | 2008-12-04 | 2008-12-05 | 2059 | 试验间 |
| 2061 | 超声波清洗 | 2008-12-05 | 2008-12-05 | 2060 | 试验间 |
| 2062 | 冲洗 | 2008-12-05 | 2008-12-05 | 2061 | 试验间 |
| 2063 | 刻线 | 2008-12-06 | 2008-12-06 | 2062 | 毛刺台二 |
| 2064 | 铣镗孔 | 2008-12-08 | 2008-12-10 | 2051, 2063 | 斯贝单元80U-1（四） |
| 2065 | 攻螺纹 | 2008-12-11 | 2008-12-11 | 2064 | 立式钻床 |
| 2066 | 清洗 | 2008-12-11 | 2008-12-11 | 2065 | 毛刺台二 |
| 2067 | 精镗孔 | 2008-12-11 | 2008-12-17 | 2064, 2066 | 坐标镗 |
| 2068 | 精镗孔 | 2008-12-17 | 2008-12-22 | 2067 | 坐标镗 [100.13%] |
| 2069 | 精镗孔 | 2008-12-22 | 2008-12-24 | 2068 | 坐标镗 |
| 2070 | 精镗孔 | 2008-12-24 | 2008-12-27 | 2069 | 坐标镗 |
| 2071 | 精镗孔 | 2008-12-27 | 2008-12-30 | 2070 | 坐标镗 |
| 2072 | 铣镗 | 2008-12-30 | 2008-12-31 | 2066, 2071 | 斯贝单元80U-1（四） |
| 2073 | 铣 螺纹 切槽 | 2008-12-31 | 2009-01-02 | 2072 | 四轴立卧加 |
| 2074 | 抛光 | 2009-01-02 | 2009-01-02 | 2073 | 立式钻床 |
| 2075 | 清洗 | 2009-01-02 | 2009-01-03 | 2074 | 毛刺台一 |
| 2076 | 打毛刺 | 2009-01-03 | 2009-01-03 | 2075 | 毛刺台一 |
| 2077 | 清洗 | 2009-01-03 | 2009-01-04 | 2076 | 毛刺台一 |
| 2078 | 检验 | 2009-01-05 | 2009-01-05 | 2077 | 检验 |
| 2079 | 检验 | 2009-01-06 | 2009-01-06 | 2078 | 检验 |
| 2080 | 荧光检查 | 2009-01-07 | 2009-01-08 | 2079 | 外协 |
| 2081 | 清洗 | 2009-01-08 | 2009-01-08 | 2080 | 试验间 |
| 2082 | 浸泡 | 2009-01-08 | 2009-01-09 | 2081 | 试验间 |
| 2083 | 超声波清洗 | 2009-01-09 | 2009-01-09 | 2082 | 试验间 |
| 2084 | 冲洗 | 2009-01-09 | 2009-01-09 | 2083 | 试验间 |
| 2085 | 检验 | 2009-01-09 | 2009-01-09 | 2084 | 检验 |
| 2086 | 检验 | 2009-01-12 | 2009-01-12 | 2084, 2085 | 检验 |
| 2087 | 大壳体 | 2008-06-14 | 2009-02-09 |  |  |
| 2088 | 钻孔 | 2008-06-14 | 2008-06-14 |  | 立式钻床 |
| 2089 | 镗孔 | 2008-06-14 | 2008-06-14 | 2088 | 坐标镗 |
| 2090 | 镗孔 | 2008-06-14 | 2008-06-15 | 2089 | 四轴立卧加 |
| 2091 | 镗孔 | 2008-06-15 | 2008-06-16 | 2090 | 四轴立卧加 |
| 2092 | 去毛刺 | 2008-06-16 | 2008-06-16 | 2091 | 毛刺台二 |
| 2093 | 清洗 | 2008-06-16 | 2008-06-16 | 2092 | 无设备 |
| 2094 | 切槽 | 2008-06-17 | 2008-06-19 | 2093 | 斯贝单元立车 |
| 2095 | 切槽 | 2008-06-19 | 2008-06-20 | 2094 | 斯贝单元立车 |
| 2096 | 切槽 | 2008-06-20 | 2008-06-22 | 2095 | 斯贝单元立车 |
| 2097 | 切槽 | 2008-06-22 | 2008-06-25 | 2096 | 斯贝单元立车 |
| 2098 | 切槽 | 2008-06-25 | 2008-06-26 | 2097 | 斯贝单元立车 |
| 2099 | 钻铣 | 2008-06-26 | 2008-06-27 | 2098 | 四轴立卧加 |
| 2100 | 铣槽 | 2008-06-27 | 2008-07-01 | 2099 | 万能铣床 |

| ID | Task | Start | Finish | Predecessors | Resources |
| --- | --- | --- | --- | --- | --- |
| 2101 | 去毛刺 | 2008-07-02 | 2008-07-02 | 2100 | 毛刺台一 |
| 2102 | 清洗 | 2008-07-02 | 2008-07-03 | 2101 | 毛刺台一 |
| 2103 | 检验 | 2008-07-03 | 2008-07-04 | 2102 | 检验 |
| 2104 | 荧光检查 | 2008-07-05 | 2008-07-07 | 2103 | 外协 |
| 2105 | 清洗 | 2008-07-07 | 2008-07-08 | 2104 | 毛刺台一 |
| 2106 | 铣平面 | 2008-07-08 | 2008-07-09 | 2105 | 斯贝单元80P-1（五） |
| 2107 | 铣平面 | 2008-07-09 | 2008-07-11 | 2106 | 斯贝单元80U-1（四） |
| 2108 | 去毛刺 | 2008-07-11 | 2008-07-11 | 2107 | 毛刺台一 |
| 2109 | 打号 | 2008-07-11 | 2008-07-11 | 2108 | 毛刺台二 |
| 2110 | 铣外形 | 2008-07-11 | 2008-07-15 | 2109 | 双头仿型铣 |
| 2111 | 铣外形 | 2008-07-15 | 2008-07-18 | 2110 | 双头仿型铣 |
| 2112 | 铣外形 | 2008-07-18 | 2008-07-23 | 2111 | 双头仿型铣 |
| 2113 | 铣外形 | 2008-07-23 | 2008-07-27 | 2112 | 双头仿型铣 |
| 2114 | 铣外形 | 2008-07-27 | 2008-07-30 | 2113 | 双头仿型铣 |
| 2115 | 铣外形 | 2008-07-30 | 2008-08-04 | 2114 | 双头仿型铣 |
| 2116 | 铣外形 | 2008-08-04 | 2008-08-07 | 2115 | 双头仿型铣 |
| 2117 | 铣外形 | 2008-08-07 | 2008-08-07 | 2116 | 双头仿型铣 |
| 2118 | 铣外形 | 2008-08-07 | 2008-08-07 | 2117 | 双头仿型铣 |
| 2119 | 打磨外形 | 2008-08-08 | 2008-08-08 | 2118 | 毛刺台二 |
| 2120 | 打号 | 2008-08-08 | 2008-08-08 | 2119 | 毛刺台二 |
| 2121 | 清洗 | 2008-08-08 | 2008-08-09 | 2120 | 毛刺台二 |
| 2122 | 清洗 | 2008-08-12 | 2008-08-13 | 2121 | 毛刺台一 |
| 2123 | 铣面 钻镗孔 | 2008-08-13 | 2008-08-16 | 2122 | 斯贝单元80P-1（五） |
| 2124 | 镗孔 | 2008-08-16 | 2008-08-18 | 2123 | 斯贝单元80U-1（四） |
| 2125 | 切槽 | 2008-08-18 | 2008-08-19 | 2124 | 斯贝单元立车 |
| 2126 | 切槽 | 2008-08-19 | 2008-08-19 | 2125 | 斯贝单元立车 |
| 2127 | 切槽 | 2008-08-19 | 2008-08-21 | 2126 | 斯贝单元立车 |
| 2128 | 切槽 | 2008-08-21 | 2008-08-22 | 2127 | 斯贝单元立车 |
| 2129 | 镗孔切槽 | 2008-08-22 | 2008-08-23 | 2128 | 斯贝单元立车 |
| 2130 | 车槽 | 2008-08-23 | 2008-08-26 | 2129 | 斯贝单元立车 |
| 2131 | 切槽 | 2008-08-26 | 2008-08-26 | 2130 | 斯贝单元立车 |
| 2132 | 切槽 | 2008-08-26 | 2008-08-28 | 2131 | 斯贝单元立车 |
| 2133 | 铣 镗 攻 | 2008-08-28 | 2008-09-01 | 2132 | 斯贝单元80U-1（四） |
| 2134 | 铣面 镗孔 | 2008-09-01 | 2008-09-04 | 2133 | 斯贝单元80U-2（五） |
| 2135 | 铣面 镗孔 | 2008-09-04 | 2008-09-08 | 2134 | 斯贝单元80U-1（四） |
| 2136 | 铣镗 | 2008-09-08 | 2008-09-11 | 2135 | 斯贝单元80U-2（五） |
| 2137 | 钻 铣 镗 | 2008-09-11 | 2008-09-16 | 2136 | 斯贝单元80P-1（五） |
| 2138 | 钻 扩 攻 | 2008-09-16 | 2008-09-17 | 2137 | 斯贝单元80P-1（五） |
| 2139 | 铣槽 | 2008-09-17 | 2008-09-23 | 2138 | 万能铣床 |
| 2140 | 切槽 | 2008-09-23 | 2008-09-25 | 2139 | 斯贝单元立车 |
| 2141 | 切槽 | 2008-09-25 | 2008-09-27 | 2140 | 斯贝单元立车 |
| 2142 | 切槽 | 2008-09-27 | 2008-09-29 | 2141 | 斯贝单元立车 |
| 2143 | 铣槽 | 2008-09-30 | 2008-10-01 | 2142 | 万能铣床 |
| 2144 | 钻孔 | 2008-10-01 | 2008-10-03 | 2143 | 斯贝单元80P-1（五） |
| 2145 | 铣镗 | 2008-10-03 | 2008-10-07 | 2144 | 斯贝单元80U-1（四） |
| 2146 | 清洗 | 2008-10-07 | 2008-10-07 | 2145 | 无设备 |
| 2147 | 铣槽 | 2008-10-09 | 2008-10-15 | 2146 | 万能铣床 |
| 2148 | 铣槽 | 2008-10-15 | 2008-10-16 | 2147 | 万能铣床 |
| 2149 | 切槽 | 2008-10-16 | 2008-10-17 | 2148 | 斯贝单元立车 |
| 2150 | 钻 铣 镗 | 2008-10-17 | 2008-10-21 | 2149 | 斯贝单元80U-1（四） |
| 2151 | 钻 铣 攻 | 2008-10-21 | 2008-10-22 | 2150 | 斯贝单元80P-1（五） |
| 2152 | 清洗 | 2008-10-22 | 2008-10-23 | 2151 | 毛刺台二 |
| 2153 | 镗孔 | 2008-10-23 | 2008-10-24 | 2152 | 坐标镗 |
| 2154 | 研孔 | 2008-10-25 | 2008-10-25 | 2153 | 研磨台 |
| 2155 | 浸泡 | 2008-10-25 | 2008-10-26 | 2154 | 试验工作中心 |
| 2156 | 超声波清洗 | 2008-10-26 | 2008-10-27 | 2155 | 试验工作中心 |
| 2157 | 钻 划 攻 | 2008-10-27 | 2008-10-28 | 2156 | 斯贝单元80P-1（五） |
| 2158 | 铣 镗 攻 | 2008-10-28 | 2008-10-31 | 2157 | 斯贝单元80U-2（五） |
| 2159 | 镗孔 切槽 | 2008-10-31 | 2008-11-03 | 2158 | 斯贝单元立车 |
| 2160 | 铣槽 | 2008-11-03 | 2008-11-05 | 2159 | 万能铣床 |
| 2161 | 铣槽 | 2008-11-05 | 2008-11-08 | 2160 | 万能铣床 |
| 2162 | 铣槽 | 2008-11-08 | 2008-11-09 | 2161 | 万能铣床 |
| 2163 | 铣槽 | 2008-11-09 | 2008-11-13 | 2162 | 万能铣床 |
| 2164 | 铣槽 | 2008-11-13 | 2008-11-16 | 2163 | 万能铣床 |
| 2165 | 铣面 镗孔 | 2008-11-16 | 2008-11-18 | 2164 | 斯贝单元80U-2（五） |
| 2166 | 钻攻 | 2008-11-18 | 2008-11-20 | 2165 | 斯贝单元80U-2（五） |
| 2167 | 钻 铣 镗 | 2008-11-20 | 2008-11-24 | 2166 | 斯贝单元80U-2（五） |
| 2168 | 铣槽 | 2008-11-24 | 2008-11-25 | 2167 | 万能铣床 |
| 2169 | 钻 镗 铣 攻 | 2008-11-25 | 2008-11-28 | 2168 | 斯贝单元80P-1（五） |
| 2170 | 钻 铣 攻 | 2008-11-28 | 2008-12-02 | 2169 | 斯贝单元80P-1（五） |

| ID | Task | Start | Finish | Predecessors | Resources |
| --- | --- | --- | --- | --- | --- |
| 2171 | 钻 镗 铣 攻 | 2008-12-02 | 2008-12-04 | 2170 | 斯贝单元80U-2（五） |
| 2172 | 切槽 | 2008-12-04 | 2008-12-05 | 2171 | 斯贝单元立车 [100.07%] |
| 2173 | 钻 铣 镗 | 2008-12-05 | 2008-12-11 | 2172 | 斯贝单元80U-2（五） |
| 2174 | 划铣 | 2008-12-11 | 2008-12-11 | 2173 | 立式钻床 |
| 2175 | 攻螺纹 钻孔 | 2008-12-11 | 2008-12-22 | 2174 | 立式钻床 |
| 2176 | 清洗 | 2008-12-22 | 2008-12-23 | 2175 | 毛刺台一 |
| 2177 | 打毛刺 | 2008-12-23 | 2008-12-24 | 2176 | 毛刺台二 |
| 2178 | 去毛刺 | 2008-12-24 | 2008-12-24 | 2177 | 毛刺台二 |
| 2179 | 打磨 | 2008-12-24 | 2008-12-27 | 2178 | 立式钻床 |
| 2180 | 清洗 | 2008-12-27 | 2008-12-28 | 2179 | 毛刺台一 |
| 2181 | 检验 | 2008-12-28 | 2008-12-29 | 2180 | 检验 |
| 2182 | 检验 | 2008-12-29 | 2008-12-30 | 2181 | 检验 |
| 2183 | 检验 | 2008-12-30 | 2008-12-31 | 2182 | 检验 |
| 2184 | 浸泡 | 2008-12-31 | 2008-12-31 | 2183 | 试验间 |
| 2185 | 超声波清洗 | 2008-12-31 | 2009-01-01 | 2184 | 试验间 |
| 2186 | 冲洗 | 2009-01-01 | 2009-01-01 | 2185 | 试验间 |
| 2187 | 刻线 | 2009-01-01 | 2009-01-01 | 2186 | 毛刺台二 |
| 2188 | 铣镗孔 | 2009-01-04 | 2009-01-06 | 2187 | 斯贝单元80U-1（四） |
| 2189 | 攻螺纹 | 2009-01-07 | 2009-01-07 | 2188 | 立式钻床 |
| 2190 | 清洗 | 2009-01-07 | 2009-01-07 | 2189 | 毛刺台二 |
| 2191 | 精镗孔 | 2009-01-07 | 2009-01-13 | 2190 | 坐标镗 |
| 2192 | 精镗孔 | 2009-01-13 | 2009-01-18 | 2191 | 坐标镗 |
| 2193 | 精镗孔 | 2009-01-18 | 2009-01-20 | 2192 | 坐标镗 |
| 2194 | 精镗孔 | 2009-01-20 | 2009-01-23 | 2193 | 坐标镗 |
| 2195 | 精镗孔 | 2009-01-23 | 2009-01-26 | 2194 | 坐标镗 |
| 2196 | 铣镗 | 2009-01-26 | 2009-01-28 | 2195 | 斯贝单元80U-1（四） |
| 2197 | 铣 螺纹 切槽 | 2009-01-28 | 2009-01-29 | 2196 | 四轴立卧加 |
| 2198 | 抛光 | 2009-01-30 | 2009-01-30 | 2197 | 立式钻床 |
| 2199 | 清洗 | 2009-01-30 | 2009-01-31 | 2198 | 毛刺台一 |
| 2200 | 打毛刺 | 2009-01-31 | 2009-01-31 | 2199 | 毛刺台一 |
| 2201 | 清洗 | 2009-01-31 | 2009-02-01 | 2200 | 毛刺台一 |
| 2202 | 检验 | 2009-02-01 | 2009-02-02 | 2201 | 检验 |
| 2203 | 检验 | 2009-02-02 | 2009-02-03 | 2202 | 检验 |
| 2204 | 荧光检查 | 2009-02-03 | 2009-02-05 | 2203 | 外协 |
| 2205 | 清洗 | 2009-02-05 | 2009-02-05 | 2204 | 试验间 |
| 2206 | 浸泡 | 2009-02-05 | 2009-02-06 | 2205 | 试验间 |
| 2207 | 超声波清洗 | 2009-02-06 | 2009-02-06 | 2206 | 试验间 |
| 2208 | 冲洗 | 2009-02-06 | 2009-02-06 | 2207 | 试验间 |
| 2209 | 检验 | 2009-02-06 | 2009-02-06 | 2208 | 检验 |
| 2210 | 检验 | 2009-02-08 | 2009-02-09 | 2209 | 检验 |
| 2211 | 大壳体 | 2008-06-14 | 2009-01-20 |  |  |
| 2212 | 钻孔 | 2008-06-14 | 2008-06-14 |  | 立式钻床 |
| 2213 | 镗孔 | 2008-06-14 | 2008-06-14 | 2212 | 坐标镗 |
| 2214 | 镗孔 | 2008-06-14 | 2008-06-15 | 2213 | 四轴立卧加 |
| 2215 | 镗孔 | 2008-06-15 | 2008-06-16 | 2214 | 四轴立卧加 |
| 2216 | 去毛刺 | 2008-06-16 | 2008-06-16 | 2215 | 毛刺台二 |
| 2217 | 清洗 | 2008-06-16 | 2008-06-16 | 2216 | 无设备 |
| 2218 | 切槽 | 2008-06-17 | 2008-06-18 | 2217 | 斯贝单元立车 |
| 2219 | 切槽 | 2008-06-18 | 2008-06-20 | 2218 | 斯贝单元立车 |
| 2220 | 切槽 | 2008-06-20 | 2008-06-21 | 2219 | 斯贝单元立车 |
| 2221 | 切槽 | 2008-06-21 | 2008-06-24 | 2220 | 斯贝单元立车 |
| 2222 | 切槽 | 2008-06-24 | 2008-06-25 | 2221 | 斯贝单元立车 |
| 2223 | 钻铣 | 2008-06-25 | 2008-06-26 | 2222 | 四轴立卧加 |
| 2224 | 铣槽 | 2008-06-26 | 2008-06-30 | 2223 | 万能铣床 |
| 2225 | 去毛刺 | 2008-06-30 | 2008-07-01 | 2224 | 毛刺台一 |
| 2226 | 清洗 | 2008-07-01 | 2008-07-02 | 2225 | 毛刺台一 |
| 2227 | 检验 | 2008-07-02 | 2008-07-03 | 2226 | 检验 |
| 2228 | 荧光检查 | 2008-07-04 | 2008-07-06 | 2227 | 外协 |
| 2229 | 清洗 | 2008-07-06 | 2008-07-07 | 2228 | 毛刺台一 |
| 2230 | 铣平面 | 2008-07-07 | 2008-07-08 | 2229 | 斯贝单元80P-1（五） |
| 2231 | 铣平面 | 2008-07-08 | 2008-07-10 | 2230 | 斯贝单元80U-1（四） |
| 2232 | 去毛刺 | 2008-07-10 | 2008-07-10 | 2231 | 毛刺台一 |
| 2233 | 打号 | 2008-07-10 | 2008-07-10 | 2232 | 毛刺台二 |
| 2234 | 铣外形 | 2008-07-10 | 2008-07-14 | 2233 | 双头仿型铣 |
| 2235 | 铣外形 | 2008-07-14 | 2008-07-17 | 2234 | 双头仿型铣 |
| 2236 | 铣外形 | 2008-07-17 | 2008-07-21 | 2235 | 双头仿型铣 |
| 2237 | 铣外形 | 2008-07-21 | 2008-07-23 | 2236 | 双头仿型铣 |
| 2238 | 铣外形 | 2008-07-23 | 2008-07-27 | 2237 | 双头仿型铣 |
| 2239 | 铣外形 | 2008-07-27 | 2008-07-30 | 2238 | 双头仿型铣 |
| 2240 | 铣外形 | 2008-07-30 | 2008-08-03 | 2239 | 双头仿型铣 |

| ID | Task | Start | Finish | Predecessors | Resources |
| --- | --- | --- | --- | --- | --- |
| 2241 | 铣外形 | 2008-08-03 | 2008-08-03 | 2240 | 双头仿型铣 |
| 2242 | 铣外形 | 2008-08-03 | 2008-08-04 | 2241 | 双头仿型铣 |
| 2243 | 打磨外形 | 2008-08-04 | 2008-08-04 | 2242 | 毛刺台二 |
| 2244 | 打号 | 2008-08-04 | 2008-08-04 | 2243 | 毛刺台二 |
| 2245 | 清洗 | 2008-08-04 | 2008-08-05 | 2244 | 毛刺台二 |
| 2246 | 清洗 | 2008-08-09 | 2008-08-09 | 2245 | 毛刺台一 |
| 2247 | 铣面 钻镗孔 | 2008-08-09 | 2008-08-12 | 2246 | 斯贝单元80P-1（五） |
| 2248 | 镗孔 | 2008-08-12 | 2008-08-13 | 2247 | 斯贝单元80U-1（四） |
| 2249 | 切槽 | 2008-08-13 | 2008-08-15 | 2248 | 斯贝单元立车 |
| 2250 | 切槽 | 2008-08-15 | 2008-08-15 | 2249 | 斯贝单元立车 |
| 2251 | 切槽 | 2008-08-15 | 2008-08-16 | 2250 | 斯贝单元立车 |
| 2252 | 切槽 | 2008-08-16 | 2008-08-18 | 2251 | 斯贝单元立车 |
| 2253 | 镗孔切槽 | 2008-08-18 | 2008-08-19 | 2252 | 斯贝单元立车 |
| 2254 | 车槽 | 2008-08-19 | 2008-08-20 | 2253 | 斯贝单元立车 |
| 2255 | 切槽 | 2008-08-20 | 2008-08-21 | 2254 | 斯贝单元立车 |
| 2256 | 切槽 | 2008-08-21 | 2008-08-23 | 2255 | 斯贝单元立车 |
| 2257 | 铣 镗 攻 | 2008-08-23 | 2008-08-26 | 2256 | 斯贝单元80U-1（四） |
| 2258 | 铣面 镗孔 | 2008-08-26 | 2008-08-29 | 2257 | 斯贝单元80U-2（五） |
| 2259 | 铣面 镗孔 | 2008-08-29 | 2008-09-01 | 2258 | 斯贝单元80U-1（四） |
| 2260 | 铣镗 | 2008-09-01 | 2008-09-05 | 2259 | 斯贝单元80U-2（五） |
| 2261 | 钻 铣 镗 | 2008-09-05 | 2008-09-09 | 2260 | 斯贝单元80P-1（五） |
| 2262 | 钻 扩 攻 | 2008-09-09 | 2008-09-10 | 2261 | 斯贝单元80P-1（五） |
| 2263 | 铣槽 | 2008-09-10 | 2008-09-15 | 2262 | 万能铣床 |
| 2264 | 切槽 | 2008-09-15 | 2008-09-17 | 2263 | 斯贝单元立车 |
| 2265 | 切槽 | 2008-09-17 | 2008-09-18 | 2264 | 斯贝单元立车 |
| 2266 | 切槽 | 2008-09-18 | 2008-09-20 | 2265 | 斯贝单元立车 |
| 2267 | 铣槽 | 2008-09-21 | 2008-09-22 | 2266 | 万能铣床 |
| 2268 | 钻孔 | 2008-09-22 | 2008-09-24 | 2267 | 斯贝单元80P-1（五） |
| 2269 | 铣镗 | 2008-09-24 | 2008-09-27 | 2268 | 斯贝单元80U-1（四） |
| 2270 | 清洗 | 2008-09-27 | 2008-09-27 | 2269 | 无设备 |
| 2271 | 铣槽 | 2008-09-29 | 2008-10-04 | 2270 | 万能铣床 |
| 2272 | 铣槽 | 2008-10-04 | 2008-10-05 | 2271 | 万能铣床 |
| 2273 | 切槽 | 2008-10-05 | 2008-10-06 | 2272 | 斯贝单元立车 |
| 2274 | 钻 铣 镗 | 2008-10-06 | 2008-10-09 | 2273 | 斯贝单元80U-1（四） |
| 2275 | 钻 铣 攻 | 2008-10-09 | 2008-10-10 | 2274 | 斯贝单元80P-1（五） |
| 2276 | 清洗 | 2008-10-10 | 2008-10-10 | 2275 | 毛刺台二 |
| 2277 | 镗孔 | 2008-10-10 | 2008-10-12 | 2276 | 坐标镗 |
| 2278 | 研孔 | 2008-10-13 | 2008-10-13 | 2277 | 研磨台 |
| 2279 | 浸泡 | 2008-10-13 | 2008-10-13 | 2278 | 试验工作中心 |
| 2280 | 超声波清洗 | 2008-10-13 | 2008-10-14 | 2279 | 试验工作中心 |
| 2281 | 钻 划 攻 | 2008-10-14 | 2008-10-15 | 2280 | 斯贝单元80P-1（五） |
| 2282 | 铣 镗 攻 | 2008-10-15 | 2008-10-17 | 2281 | 斯贝单元80U-2（五） |
| 2283 | 镗孔 切槽 | 2008-10-17 | 2008-10-20 | 2282 | 斯贝单元立车 |
| 2284 | 铣槽 | 2008-10-21 | 2008-10-23 | 2283 | 万能铣床 |
| 2285 | 铣槽 | 2008-10-23 | 2008-10-25 | 2284 | 万能铣床 |
| 2286 | 铣槽 | 2008-10-25 | 2008-10-26 | 2285 | 万能铣床 |
| 2287 | 铣槽 | 2008-10-26 | 2008-10-30 | 2286 | 万能铣床 |
| 2288 | 铣槽 | 2008-10-30 | 2008-11-01 | 2287 | 万能铣床 |
| 2289 | 铣面 镗孔 | 2008-11-01 | 2008-11-03 | 2288 | 斯贝单元80U-2（五） |
| 2290 | 钻攻 | 2008-11-03 | 2008-11-05 | 2289 | 斯贝单元80U-2（五） |
| 2291 | 钻 铣 镗 | 2008-11-05 | 2008-11-08 | 2290 | 斯贝单元80U-2（五） |
| 2292 | 铣槽 | 2008-11-09 | 2008-11-10 | 2291 | 万能铣床 |
| 2293 | 钻 镗 铣 攻 | 2008-11-10 | 2008-11-12 | 2292 | 斯贝单元80P-1（五） |
| 2294 | 钻 铣 攻 | 2008-11-12 | 2008-11-15 | 2293 | 斯贝单元80P-1（五） |
| 2295 | 钻 镗 铣 攻 | 2008-11-15 | 2008-11-18 | 2294 | 斯贝单元80U-2（五） |
| 2296 | 切槽 | 2008-11-18 | 2008-11-19 | 2295 | 斯贝单元立车 |
| 2297 | 钻 铣 镗 | 2008-11-19 | 2008-11-24 | 2296 | 斯贝单元80U-2（五） |
| 2298 | 划铣 | 2008-11-24 | 2008-11-25 | 2297 | 立式钻床 |
| 2299 | 攻螺纹 钻孔 | 2008-11-25 | 2008-12-04 | 2298 | 立式钻床 |
| 2300 | 清洗 | 2008-12-04 | 2008-12-05 | 2299 | 毛刺台一 |
| 2301 | 打毛刺 | 2008-12-05 | 2008-12-06 | 2300 | 毛刺台二 |
| 2302 | 去毛刺 | 2008-12-06 | 2008-12-07 | 2301 | 毛刺台二 |
| 2303 | 打磨 | 2008-12-07 | 2008-12-09 | 2302 | 立式钻床 |
| 2304 | 清洗 | 2008-12-09 | 2008-12-10 | 2303 | 毛刺台一 |
| 2305 | 检验 | 2008-12-10 | 2008-12-11 | 2304 | 检验 |
| 2306 | 检验 | 2008-12-11 | 2008-12-12 | 2305 | 检验 |
| 2307 | 检验 | 2008-12-12 | 2008-12-13 | 2306 | 检验 |
| 2308 | 浸泡 | 2008-12-13 | 2008-12-14 | 2307 | 试验间 |
| 2309 | 超声波清洗 | 2008-12-14 | 2008-12-15 | 2308 | 试验间 |
| 2310 | 冲洗 | 2008-12-15 | 2008-12-15 | 2309 | 试验间 |

| ID | Task | Start | Finish | Predecessors | Complete | Resources |
| --- | --- | --- | --- | --- | --- | --- |
| 2311 | 刻线 | 2008-12-15 | 2008-12-15 | 2310 |  | 毛刺台二 |
| 2312 | 铣镗孔 | 2008-12-17 | 2008-12-19 | 2311 |  | 斯贝单元80U-1（四） |
| 2313 | 攻螺纹 | 2008-12-20 | 2008-12-20 | 2312 |  | 立式钻床 |
| 2314 | 清洗 | 2008-12-20 | 2008-12-21 | 2313 |  | 毛刺台二 |
| 2315 | 精镗孔 | 2008-12-21 | 2008-12-25 | 2314 |  | 坐标镗 [100.41%] |
| 2316 | 精镗孔 | 2008-12-25 | 2008-12-30 | 2315 |  | 坐标镗 [133.33%] |
| 2317 | 精镗孔 | 2008-12-30 | 2009-01-01 | 2316 |  | 坐标镗 |
| 2318 | 精镗孔 | 2009-01-01 | 2009-01-04 | 2317 |  | 坐标镗 |
| 2319 | 精镗孔 | 2009-01-04 | 2009-01-06 | 2318 |  | 坐标镗 |
| 2320 | 铣镗 | 2009-01-06 | 2009-01-08 | 2319 |  | 斯贝单元80U-1（四） |
| 2321 | 铣 螺纹 切槽 | 2009-01-08 | 2009-01-09 | 2320 |  | 四轴立卧加 |
| 2322 | 抛光 | 2009-01-10 | 2009-01-10 | 2321 |  | 立式钻床 |
| 2323 | 清洗 | 2009-01-10 | 2009-01-11 | 2322 |  | 毛刺台一 |
| 2324 | 打毛刺 | 2009-01-11 | 2009-01-12 | 2323 |  | 毛刺台一 |
| 2325 | 清洗 | 2009-01-12 | 2009-01-12 | 2324 |  | 毛刺台一 |
| 2326 | 检验 | 2009-01-12 | 2009-01-13 | 2325 |  | 检验 |
| 2327 | 检验 | 2009-01-13 | 2009-01-14 | 2326 |  | 检验 |
| 2328 | 荧光检查 | 2009-01-14 | 2009-01-16 | 2327 |  | 外协 |
| 2329 | 清洗 | 2009-01-16 | 2009-01-16 | 2328 |  | 试验间 |
| 2330 | 浸泡 | 2009-01-16 | 2009-01-17 | 2329 |  | 试验间 |
| 2331 | 超声波清洗 | 2009-01-17 | 2009-01-18 | 2330 |  | 试验间 |
| 2332 | 冲洗 | 2009-01-18 | 2009-01-19 | 2331 |  | 试验间 |
| 2333 | 检验 | 2009-01-19 | 2009-01-19 | 2332 |  | 检验 |
| 2334 | 检验 | 2009-01-20 | 2009-01-20 | 2333 |  | 检验 |
| 2335 | 壳体 | 2008-06-15 | 2008-06-16 |  |  |  |
| 2336 | 大流量冲洗 | 2008-06-15 | 2008-06-15 |  |  | 试验间 |
| 2337 | 洗涤 | 2008-06-16 | 2008-06-16 | 2336 |  | 毛刺台一 |
| 2338 | 壳体 | 2008-06-15 | 2008-06-26 |  |  |  |
| 2339 | 铣凸耳 | 2008-06-15 | 2008-06-16 |  |  | 立铣 |
| 2340 | 划面 | 2008-06-16 | 2008-06-16 | 2339 |  | 立铣 [99.81%] |
| 2341 | 去毛刺 | 2008-06-16 | 2008-06-17 | 2340 |  | 毛刺台一 |
| 2342 | 清洗 | 2008-06-17 | 2008-06-17 | 2341 |  | 无设备 |
| 2343 | 铣平面 | 2008-06-17 | 2008-06-18 | 2342 |  | 立铣 |
| 2344 | 钻镗 | 2008-06-18 | 2008-06-18 | 2343 |  | 坐标镗 |
| 2345 | 铣外形 | 2008-06-18 | 2008-06-19 | 2344 |  | 双头仿型铣 [101.16%] |
| 2346 | 研磨平面 | 2008-06-20 | 2008-06-20 | 2345 |  | 研磨台 |
| 2347 | 洗涤 | 2008-06-20 | 2008-06-21 | 2346 |  | 毛刺台一 |
| 2348 | 去毛刺 | 2008-06-21 | 2008-06-22 | 2347 |  | 毛刺台一 |
| 2349 | 洗涤 | 2008-06-22 | 2008-06-22 | 2348 |  | 毛刺台一 |
| 2350 | 清洗 | 2008-06-23 | 2008-06-24 | 2349 |  | 毛刺台一 |
| 2351 | 检验 | 2008-06-24 | 2008-06-25 | 2350 |  | 检验 |
| 2352 | 阳极化 涂漆 | 2008-06-25 | 2008-06-26 | 2351 |  |  |
| 2353 | 壳体 | 2007-12-11 | 2008-08-14 |  |  |  |
| 2354 | 铣槽 | 2008-06-15 | 2008-06-16 |  |  | 双头仿型铣 |
| 2355 | 磨修 | 2008-06-16 | 2008-06-17 | 2354 |  | 研磨台 |
| 2356 | 铣平面 | 2008-06-17 | 2008-06-18 | 2355 |  | 立铣 |
| 2357 | 已完成任务 | 2007-12-11 | 2007-12-11 | 2356 | 100% |  |
| 2358 | 铣凸台 | 2008-06-15 | 2008-06-16 | 2357 |  | 立铣 |
| 2359 | 铣平面 | 2008-06-16 | 2008-06-17 | 2358 |  | 立铣 |
| 2360 | 去毛刺 | 2008-06-17 | 2008-06-17 | 2359 |  | 毛刺台一 |
| 2361 | 清洗 | 2008-06-17 | 2008-06-18 | 2360 |  | 无设备 |
| 2362 | 钻镗 | 2008-06-18 | 2008-06-20 | 2361 |  | 一工段数控车班 |
| 2363 | 钻镗 | 2008-06-20 | 2008-06-25 | 2362 |  | 中型普车 |
| 2364 | 铣槽 | 2008-06-25 | 2008-06-25 | 2363 |  | 立铣 |
| 2365 | 铣平面 | 2008-06-25 | 2008-06-26 | 2364 |  | 立铣 |
| 2366 | 铣平面 | 2008-06-26 | 2008-06-27 | 2365 |  | 立铣 |
| 2367 | 钻孔 攻螺纹 | 2008-06-27 | 2008-06-28 | 2366 |  | 立式钻床 |
| 2368 | 钻孔攻螺纹 | 2008-06-28 | 2008-06-30 | 2367 |  | 立式钻床 |
| 2369 | 钻镗孔 | 2008-06-30 | 2008-07-01 | 2368 |  | 一工段数控车班 |
| 2370 | 钻镗孔 | 2008-07-01 | 2008-07-03 | 2369 |  | 一工段数控车班 |
| 2371 | 钻孔 | 2008-07-04 | 2008-07-05 | 2370 |  | 立式钻床 |
| 2372 | 钻孔 | 2008-07-05 | 2008-07-06 | 2371 |  | 立式钻床 |
| 2373 | 钻孔 | 2008-07-06 | 2008-07-07 | 2372 |  | 立式钻床 |
| 2374 | 钻孔 | 2008-07-07 | 2008-07-09 | 2373 |  | 立式钻床 |
| 2375 | 钻孔 | 2008-07-09 | 2008-07-09 | 2374 |  | 立式钻床 |
| 2376 | 钻孔 | 2008-07-09 | 2008-07-10 | 2375 |  | 立式钻床 |
| 2377 | 铣平面 | 2008-07-10 | 2008-07-11 | 2376 |  | 立铣 |
| 2378 | 研磨 | 2008-07-11 | 2008-07-12 | 2377 |  | 研磨台 |
| 2379 | 洗涤 | 2008-07-12 | 2008-07-13 | 2378 |  | 毛刺台一 |
| 2380 | 镗孔 | 2008-07-13 | 2008-07-16 | 2379 |  | 坐标镗 |

| ID | Task | Start | Finish | Predecessors | Resources |
| --- | --- | --- | --- | --- | --- |
| 2381 | 镗孔 | 2008-07-16 | 2008-07-17 | 2380 | 坐标镗 |
| 2382 | 镗孔 | 2008-07-17 | 2008-07-19 | 2381 | 坐标镗 |
| 2383 | 钻孔 | 2008-07-19 | 2008-07-20 | 2382 | 立式钻床 |
| 2384 | 钻镗孔 | 2008-07-20 | 2008-07-21 | 2383 | 坐标镗 [100.15%] |
| 2385 | 攻螺纹 | 2008-07-21 | 2008-07-22 | 2384 | 立式钻床 |
| 2386 | 攻螺纹 | 2008-07-22 | 2008-07-23 | 2385 | 立式钻床 |
| 2387 | 攻螺纹 | 2008-07-23 | 2008-07-24 | 2386 | 立式钻床 |
| 2388 | 攻螺纹 | 2008-07-24 | 2008-07-25 | 2387 | 立式钻床 |
| 2389 | 攻螺纹 | 2008-07-25 | 2008-07-26 | 2388 | 立式钻床 |
| 2390 | 攻螺纹 | 2008-07-26 | 2008-07-28 | 2389 | 立式钻床 |
| 2391 | 修整抛光 | 2008-07-28 | 2008-07-28 | 2390 | 钳工台 |
| 2392 | 精镗 | 2008-07-28 | 2008-07-31 | 2391 | 中型普车 [100.48%] |
| 2393 | 铣凸耳 | 2008-07-31 | 2008-08-02 | 2392 | 立铣 |
| 2394 | 划面 | 2008-08-02 | 2008-08-03 | 2393 | 立铣 [101.12%] |
| 2395 | 去毛刺 | 2008-08-03 | 2008-08-04 | 2394 | 毛刺台一 |
| 2396 | 清洗 | 2008-08-04 | 2008-08-04 | 2395 | 无设备 |
| 2397 | 铣平面 | 2008-08-04 | 2008-08-05 | 2396 | 立铣 [100.16%] |
| 2398 | 钻镗 | 2008-08-05 | 2008-08-06 | 2397 | 坐标镗 |
| 2399 | 铣外形 | 2008-08-06 | 2008-08-07 | 2398 | 双头仿型铣 [100.06%] |
| 2400 | 研磨平面 | 2008-08-08 | 2008-08-08 | 2399 | 研磨台 |
| 2401 | 洗涤 | 2008-08-08 | 2008-08-09 | 2400 | 毛刺台一 |
| 2402 | 去毛刺 | 2008-08-09 | 2008-08-10 | 2401 | 毛刺台一 |
| 2403 | 洗涤 | 2008-08-10 | 2008-08-10 | 2402 | 毛刺台一 |
| 2404 | 清洗 | 2008-08-11 | 2008-08-12 | 2403 | 毛刺台一 |
| 2405 | 检验 | 2008-08-12 | 2008-08-13 | 2404 | 检验 |
| 2406 | 阳极化 涂漆 | 2008-08-13 | 2008-08-14 | 2405 |  |
| 2407 | 壳体 | 2008-06-15 | 2008-07-22 |  |  |
| 2408 | 铣槽 | 2008-06-15 | 2008-06-15 |  | 双头仿型铣 |
| 2409 | 磨修 | 2008-06-15 | 2008-06-16 | 2408 | 研磨台 |
| 2410 | 铣平面 | 2008-06-16 | 2008-06-17 | 2409 | 立铣 |
| 2411 | 研磨平面 | 2008-06-17 | 2008-06-17 | 2410 | 研磨台 |
| 2412 | 铣平面 | 2008-06-17 | 2008-06-18 | 2411 | 立铣 |
| 2413 | 铣凸台 | 2008-06-18 | 2008-06-18 | 2412 | 立铣 |
| 2414 | 铣平面 | 2008-06-18 | 2008-06-18 | 2413 | 立铣 |
| 2415 | 去毛刺 | 2008-06-18 | 2008-06-19 | 2414 | 毛刺台一 |
| 2416 | 清洗 | 2008-06-19 | 2008-06-19 | 2415 | 无设备 |
| 2417 | 钻镗 | 2008-06-19 | 2008-06-20 | 2416 | 一工段数控车班 |
| 2418 | 钻镗 | 2008-06-20 | 2008-06-23 | 2417 | 中型普车 |
| 2419 | 铣槽 | 2008-06-23 | 2008-06-23 | 2418 | 立铣 |
| 2420 | 铣平面 | 2008-06-23 | 2008-06-24 | 2419 | 立铣 |
| 2421 | 铣平面 | 2008-06-24 | 2008-06-24 | 2420 | 立铣 |
| 2422 | 钻孔 攻螺纹 | 2008-06-24 | 2008-06-24 | 2421 | 立式钻床 [100.18%] |
| 2423 | 钻孔攻螺纹 | 2008-06-24 | 2008-06-25 | 2422 | 立式钻床 |
| 2424 | 钻镗孔 | 2008-06-25 | 2008-06-26 | 2423 | 一工段数控车班 |
| 2425 | 钻镗孔 | 2008-06-26 | 2008-06-26 | 2424 | 一工段数控车班 |
| 2426 | 钻孔 | 2008-06-27 | 2008-06-27 | 2425 | 立式钻床 |
| 2427 | 钻孔 | 2008-06-27 | 2008-06-28 | 2426 | 立式钻床 |
| 2428 | 钻孔 | 2008-06-28 | 2008-06-28 | 2427 | 立式钻床 |
| 2429 | 钻孔 | 2008-06-28 | 2008-06-29 | 2428 | 立式钻床 |
| 2430 | 钻孔 | 2008-06-29 | 2008-06-30 | 2429 | 立式钻床 |
| 2431 | 钻孔 | 2008-06-30 | 2008-06-30 | 2430 | 立式钻床 |
| 2432 | 铣平面 | 2008-06-30 | 2008-06-30 | 2431 | 立铣 |
| 2433 | 研磨 | 2008-06-30 | 2008-07-01 | 2432 | 研磨台 |
| 2434 | 洗涤 | 2008-07-01 | 2008-07-02 | 2433 | 毛刺台一 |
| 2435 | 镗孔 | 2008-07-02 | 2008-07-03 | 2434 | 坐标镗 |
| 2436 | 镗孔 | 2008-07-03 | 2008-07-04 | 2435 | 坐标镗 |
| 2437 | 镗孔 | 2008-07-04 | 2008-07-04 | 2436 | 坐标镗 |
| 2438 | 钻孔 | 2008-07-05 | 2008-07-05 | 2437 | 立式钻床 |
| 2439 | 钻镗孔 | 2008-07-05 | 2008-07-06 | 2438 | 坐标镗 [111.11%] |
| 2440 | 攻螺纹 | 2008-07-06 | 2008-07-07 | 2439 | 立式钻床 |
| 2441 | 攻螺纹 | 2008-07-07 | 2008-07-07 | 2440 | 立式钻床 |
| 2442 | 攻螺纹 | 2008-07-07 | 2008-07-07 | 2441 | 立式钻床 |
| 2443 | 攻螺纹 | 2008-07-07 | 2008-07-08 | 2442 | 立式钻床 |
| 2444 | 攻螺纹 | 2008-07-08 | 2008-07-08 | 2443 | 立式钻床 |
| 2445 | 攻螺纹 | 2008-07-08 | 2008-07-09 | 2444 | 立式钻床 |
| 2446 | 修整抛光 | 2008-07-09 | 2008-07-09 | 2445 | 钳工台 |
| 2447 | 精镗 | 2008-07-09 | 2008-07-11 | 2446 | 中型普车 [111.11%] |
| 2448 | 铣凸耳 | 2008-07-11 | 2008-07-12 | 2447 | 立铣 |
| 2449 | 划面 | 2008-07-12 | 2008-07-12 | 2448 | 立铣 [100.24%] |
| 2450 | 去毛刺 | 2008-07-12 | 2008-07-13 | 2449 | 毛刺台一 |

| ID | Task | Start | Finish | Predecessors | Complete | Resources |
| --- | --- | --- | --- | --- | --- | --- |
| 2451 | 清洗 | 2008-07-13 | 2008-07-13 | 2450 |  | 无设备 |
| 2452 | 铣平面 | 2008-07-13 | 2008-07-14 | 2451 |  | 立铣 |
| 2453 | 钻镗 | 2008-07-14 | 2008-07-14 | 2452 |  | 坐标镗 |
| 2454 | 铣外形 | 2008-07-14 | 2008-07-15 | 2453 |  | 双头仿型铣 |
| 2455 | 研磨平面 | 2008-07-15 | 2008-07-16 | 2454 |  | 研磨台 |
| 2456 | 洗涤 | 2008-07-16 | 2008-07-16 | 2455 |  | 毛刺台一 |
| 2457 | 去毛刺 | 2008-07-16 | 2008-07-17 | 2456 |  | 毛刺台一 |
| 2458 | 洗涤 | 2008-07-17 | 2008-07-17 | 2457 |  | 毛刺台一 |
| 2459 | 清洗 | 2008-07-19 | 2008-07-19 | 2458 |  | 毛刺台一 |
| 2460 | 检验 | 2008-07-19 | 2008-07-21 | 2459 |  | 检验 |
| 2461 | 阳极化 涂漆 | 2008-07-21 | 2008-07-22 | 2460 |  |  |
| 2462 | 盖子组合件 | 2008-06-15 | 2008-07-15 |  |  |  |
| 2463 | 准备组件 | 2008-06-15 | 2008-06-15 |  |  | 立式钻床 |
| 2464 | 安装钢丝螺套 | 2008-06-15 | 2008-06-17 | 2463 |  | 立式钻床 |
| 2465 | 冲洗油路 | 2008-06-17 | 2008-06-17 | 2464 |  | 试验间 |
| 2466 | 安装堵头 | 2008-07-13 | 2008-07-13 | 2465, 2469 |  | 立式钻床 |
| 2467 | 堵头试验 | 2008-07-13 | 2008-07-14 | 2466 |  | 试验间 |
| 2468 | 检验 | 2008-07-14 | 2008-07-15 | 2467 |  | 检验 |
| 2469 | 盖子 | 2008-01-15 | 2008-07-13 |  |  |  |
| 2470 | 车孔倒角切槽 | 2008-06-15 | 2008-06-16 |  |  | 中型普车 |
| 2471 | 已完成任务 | 2008-01-15 | 2008-01-15 | 2470 | 100% |  |
| 2472 | 车孔切槽 | 2008-06-15 | 2008-06-19 | 2471 |  | 中型普车 |
| 2473 | 钻孔 | 2008-06-19 | 2008-06-19 | 2472 |  | 立式钻床 |
| 2474 | 钻铰孔 | 2008-06-19 | 2008-06-19 | 2473 |  | 立式钻床 |
| 2475 | 钻铰孔 | 2008-06-19 | 2008-06-20 | 2474 |  | 立式钻床 |
| 2476 | 研磨平面 | 2008-06-20 | 2008-06-20 | 2475 |  | 研磨台 |
| 2477 | 超声波洗涤 | 2008-06-20 | 2008-06-20 | 2476 |  | 试验间 |
| 2478 | 精镗孔 | 2008-06-20 | 2008-06-23 | 2477 |  | 坐标镗 |
| 2479 | 精镗孔 | 2008-06-23 | 2008-06-24 | 2478 |  | 坐标镗 |
| 2480 | 精镗孔 | 2008-06-24 | 2008-06-25 | 2479 |  | 坐标镗 |
| 2481 | 钻孔 | 2008-06-26 | 2008-06-26 | 2480 |  | 立式钻床 [100.34%] |
| 2482 | 划线 | 2008-06-26 | 2008-06-26 | 2481 |  | 立式钻床 |
| 2483 | 洗涤 | 2008-06-26 | 2008-06-27 | 2482 |  | 毛刺台一 |
| 2484 | 去毛刺 | 2008-06-27 | 2008-06-27 | 2483 |  | 毛刺台一 |
| 2485 | 洗涤 | 2008-06-27 | 2008-06-28 | 2484 |  | 毛刺台一 |
| 2486 | 检验 | 2008-06-29 | 2008-06-30 | 2485 |  | 检验 |
| 2487 | 铣外形 | 2008-06-30 | 2008-06-30 | 2486 |  | 立铣 |
| 2488 | 洗涤 | 2008-06-30 | 2008-07-01 | 2487 |  | 毛刺台一 |
| 2489 | 去毛刺 | 2008-07-01 | 2008-07-02 | 2488 |  | 毛刺台一 |
| 2490 | 洗涤 | 2008-07-02 | 2008-07-02 | 2489 |  | 毛刺台一 |
| 2491 | 研磨 | 2008-07-02 | 2008-07-03 | 2490 |  | 研磨台 |
| 2492 | 超声波冲洗 | 2008-07-03 | 2008-07-03 | 2491 |  | 试验间 |
| 2493 | 精研大结合面 | 2008-07-04 | 2008-07-04 | 2492 |  | 研磨台 |
| 2494 | 超声波冲洗 | 2008-07-04 | 2008-07-04 | 2493 |  | 试验间 |
| 2495 | 检验 | 2008-07-05 | 2008-07-06 | 2494 |  | 检验 |
| 2496 | 荧光检查 | 2008-07-07 | 2008-07-08 | 2495 |  | 外协 |
| 2497 | 清洗 | 2008-07-08 | 2008-07-09 | 2496 |  | 毛刺台一 |
| 2498 | 清洗 | 2008-07-11 | 2008-07-11 | 2497 |  | 毛刺台一 |
| 2499 | 检验 | 2008-07-12 | 2008-07-13 | 2498 |  | 检验 |
| 2500 | 盖子 | 2008-04-10 | 2008-07-24 |  |  |  |
| 2501 | 钻孔铣内腔 | 2008-06-15 | 2008-06-17 |  |  | 一工段立加三轴64V(V600) |
| 2502 | 已完成任务 | 2008-04-10 | 2008-04-10 | 2501 | 100% |  |
| 2503 | 研磨 | 2008-06-15 | 2008-06-15 | 2502 |  | 研磨台 |
| 2504 | 铣平面 | 2008-06-15 | 2008-06-16 | 2503 |  | 万能铣床 |
| 2505 | 铣面钻孔 | 2008-06-16 | 2008-06-17 | 2504 |  | 一工段五轴 |
| 2506 | 钻铰孔 | 2008-06-18 | 2008-06-18 | 2505 |  | 立式钻床 |
| 2507 | 钻孔 | 2008-06-18 | 2008-06-18 | 2506 |  | 立式钻床 |
| 2508 | 钻孔 | 2008-06-18 | 2008-06-19 | 2507 |  | 立式钻床 |
| 2509 | 钻铰孔 | 2008-06-19 | 2008-06-19 | 2508 |  | 立式钻床 |
| 2510 | 钻孔倒角 | 2008-06-19 | 2008-06-20 | 2509 |  | 立式钻床 |
| 2511 | 钻孔倒角 | 2008-06-20 | 2008-06-20 | 2510 |  | 立式钻床 |
| 2512 | 攻螺纹 | 2008-06-20 | 2008-06-21 | 2511 |  | 立式钻床 |
| 2513 | 攻螺纹 | 2008-06-21 | 2008-06-22 | 2512 |  | 立式钻床 |
| 2514 | 扩孔攻螺纹 | 2008-06-22 | 2008-06-23 | 2513 |  | 一工段立加三轴64V(V600) |
| 2515 | 钻孔 | 2008-06-24 | 2008-06-24 | 2514 |  | 立式钻床 |
| 2516 | 精铣结合面 | 2008-06-24 | 2008-06-25 | 2515 |  | 立铣 |
| 2517 | 洗涤 | 2008-06-25 | 2008-06-25 | 2516 |  | 毛刺台一 |
| 2518 | 去毛刺 | 2008-06-25 | 2008-06-26 | 2517 |  | 毛刺台一 |
| 2519 | 倒角攻螺纹 | 2008-06-26 | 2008-06-26 | 2518 |  | 立式钻床 |
| 2520 | 倒角攻螺纹 | 2008-06-26 | 2008-06-26 | 2519 |  | 立式钻床 |

| ID | Task | Start | Finish | Predecessors | Complete | Resources |
| --- | --- | --- | --- | --- | --- | --- |
| 2521 | 车孔倒角 | 2008-06-26 | 2008-06-28 | 2520 |  | 中型普车 |
| 2522 | 车孔倒角 | 2008-06-28 | 2008-06-29 | 2521 |  | 中型普车 |
| 2523 | 车孔倒角 | 2008-06-29 | 2008-06-29 | 2522 |  | 中型普车 |
| 2524 | 车孔倒角切槽 | 2008-06-29 | 2008-06-30 | 2523 |  | 中型普车 |
| 2525 | 车孔切槽攻螺纹 | 2008-06-30 | 2008-07-02 | 2524 |  | 中型普车 |
| 2526 | 车孔切槽 | 2008-07-02 | 2008-07-04 | 2525 |  | 中型普车 |
| 2527 | 钻孔 | 2008-07-04 | 2008-07-04 | 2526 |  | 立式钻床 |
| 2528 | 钻铰孔 | 2008-07-04 | 2008-07-04 | 2527 |  | 立式钻床 |
| 2529 | 钻铰孔 | 2008-07-04 | 2008-07-05 | 2528 |  | 立式钻床 |
| 2530 | 研磨平面 | 2008-07-05 | 2008-07-05 | 2529 |  | 研磨台 |
| 2531 | 超声波洗涤 | 2008-07-05 | 2008-07-06 | 2530 |  | 试验间 |
| 2532 | 精镗孔 | 2008-07-06 | 2008-07-07 | 2531 |  | 坐标镗 |
| 2533 | 精镗孔 | 2008-07-07 | 2008-07-08 | 2532 |  | 坐标镗 |
| 2534 | 精镗孔 | 2008-07-08 | 2008-07-09 | 2533 |  | 坐标镗 |
| 2535 | 钻孔 | 2008-07-09 | 2008-07-09 | 2534 |  | 立式钻床 |
| 2536 | 划线 | 2008-07-09 | 2008-07-09 | 2535 |  | 立式钻床 |
| 2537 | 洗涤 | 2008-07-09 | 2008-07-09 | 2536 |  | 毛刺台一 |
| 2538 | 去毛刺 | 2008-07-09 | 2008-07-10 | 2537 |  | 毛刺台一 |
| 2539 | 洗涤 | 2008-07-10 | 2008-07-11 | 2538 |  | 毛刺台一 |
| 2540 | 检验 | 2008-07-11 | 2008-07-13 | 2539 |  | 检验 |
| 2541 | 铣外形 | 2008-07-13 | 2008-07-13 | 2540 |  | 立铣 |
| 2542 | 洗涤 | 2008-07-13 | 2008-07-14 | 2541 |  | 毛刺台一 |
| 2543 | 去毛刺 | 2008-07-14 | 2008-07-15 | 2542 |  | 毛刺台一 |
| 2544 | 洗涤 | 2008-07-15 | 2008-07-15 | 2543 |  | 毛刺台一 |
| 2545 | 研磨 | 2008-07-15 | 2008-07-16 | 2544 |  | 研磨台 |
| 2546 | 超声波冲洗 | 2008-07-16 | 2008-07-16 | 2545 |  | 试验间 |
| 2547 | 精研大结合面 | 2008-07-17 | 2008-07-17 | 2546 |  | 研磨台 |
| 2548 | 超声波冲洗 | 2008-07-17 | 2008-07-17 | 2547 |  | 试验间 |
| 2549 | 检验 | 2008-07-18 | 2008-07-18 | 2548 |  | 检验 |
| 2550 | 荧光检查 | 2008-07-19 | 2008-07-21 | 2549 |  | 外协 |
| 2551 | 清洗 | 2008-07-21 | 2008-07-21 | 2550 |  | 毛刺台一 |
| 2552 | 清洗 | 2008-07-23 | 2008-07-23 | 2551 |  | 毛刺台一 |
| 2553 | 检验 | 2008-07-24 | 2008-07-24 | 2552 |  | 检验 |
| 2554 | 盖子 | 2008-01-14 | 2008-07-10 |  |  |  |
| 2555 | 车孔倒角切槽 | 2008-06-15 | 2008-06-16 |  |  | 中型普车 |
| 2556 | 已完成任务 | 2008-01-14 | 2008-01-14 | 2555 | 100% |  |
| 2557 | 车孔切槽 | 2008-06-15 | 2008-06-18 | 2556 |  | 中型普车 |
| 2558 | 钻孔 | 2008-06-18 | 2008-06-19 | 2557 |  | 立式钻床 |
| 2559 | 钻铰孔 | 2008-06-19 | 2008-06-19 | 2558 |  | 立式钻床 |
| 2560 | 钻铰孔 | 2008-06-19 | 2008-06-19 | 2559 |  | 立式钻床 [99.55%] |
| 2561 | 研磨平面 | 2008-06-19 | 2008-06-20 | 2560 |  | 研磨台 |
| 2562 | 超声波洗涤 | 2008-06-20 | 2008-06-20 | 2561 |  | 试验间 |
| 2563 | 精镗孔 | 2008-06-20 | 2008-06-22 | 2562 |  | 坐标镗 |
| 2564 | 精镗孔 | 2008-06-22 | 2008-06-24 | 2563 |  | 坐标镗 |
| 2565 | 精镗孔 | 2008-06-24 | 2008-06-25 | 2564 |  | 坐标镗 |
| 2566 | 钻孔 | 2008-06-25 | 2008-06-25 | 2565 |  | 立式钻床 [100.19%] |
| 2567 | 划线 | 2008-06-25 | 2008-06-25 | 2566 |  | 立式钻床 |
| 2568 | 洗涤 | 2008-06-25 | 2008-06-25 | 2567 |  | 毛刺台一 |
| 2569 | 去毛刺 | 2008-06-25 | 2008-06-26 | 2568 |  | 毛刺台一 |
| 2570 | 洗涤 | 2008-06-26 | 2008-06-27 | 2569 |  | 毛刺台一 |
| 2571 | 检验 | 2008-06-27 | 2008-06-29 | 2570 |  | 检验 |
| 2572 | 铣外形 | 2008-06-29 | 2008-06-30 | 2571 |  | 立铣 |
| 2573 | 洗涤 | 2008-06-30 | 2008-06-30 | 2572 |  | 毛刺台一 |
| 2574 | 去毛刺 | 2008-06-30 | 2008-07-01 | 2573 |  | 毛刺台一 |
| 2575 | 洗涤 | 2008-07-01 | 2008-07-01 | 2574 |  | 毛刺台一 |
| 2576 | 研磨 | 2008-07-01 | 2008-07-02 | 2575 |  | 研磨台 |
| 2577 | 超声波冲洗 | 2008-07-02 | 2008-07-02 | 2576 |  | 试验间 |
| 2578 | 精研大结合面 | 2008-07-03 | 2008-07-03 | 2577 |  | 研磨台 |
| 2579 | 超声波冲洗 | 2008-07-03 | 2008-07-03 | 2578 |  | 试验间 |
| 2580 | 检验 | 2008-07-04 | 2008-07-04 | 2579 |  | 检验 |
| 2581 | 荧光检查 | 2008-07-05 | 2008-07-07 | 2580 |  | 外协 |
| 2582 | 清洗 | 2008-07-07 | 2008-07-07 | 2581 |  | 毛刺台一 |
| 2583 | 清洗 | 2008-07-09 | 2008-07-09 | 2582 |  | 毛刺台一 |
| 2584 | 检验 | 2008-07-10 | 2008-07-10 | 2583 |  | 检验 |
| 2585 | 壳体 | 2008-06-15 | 2008-06-28 |  |  |  |
| 2586 | 钻铰孔 | 2008-06-15 | 2008-06-16 |  |  | 立式钻床 |
| 2587 | 镗孔 | 2008-06-16 | 2008-06-17 | 2586 |  | 一工段立加三轴64V(V600) |
| 2588 | 洗涤 | 2008-06-17 | 2008-06-17 | 2587 |  | 毛刺台一 |
| 2589 | 去毛刺 | 2008-06-17 | 2008-06-18 | 2588 |  | 毛刺台一 |
| 2590 | 铣面 钻镗孔 | 2008-06-18 | 2008-06-19 | 2589 |  | 一工段四轴卧加 |

| ID | Task | Start | Finish | Predecessors | Resources |
| --- | --- | --- | --- | --- | --- |
| 2591 | 镗孔 | 2008-06-19 | 2008-06-19 | 2590 | 一工段立加三轴64V(V600) |
| 2592 | 攻螺纹 | 2008-06-20 | 2008-06-20 | 2591 | 立式钻床 |
| 2593 | 攻螺纹 | 2008-06-20 | 2008-06-21 | 2592 | 立式钻床 |
| 2594 | 攻螺纹 | 2008-06-21 | 2008-06-23 | 2593 | 立式钻床 |
| 2595 | 洗涤 | 2008-06-23 | 2008-06-23 | 2594 | 毛刺台一 |
| 2596 | 去毛刺 | 2008-06-23 | 2008-06-24 | 2595 | 毛刺台一 |
| 2597 | 荧光检查 | 2008-06-24 | 2008-06-26 | 2596 | 外协 |
| 2598 | 超声波洗涤 | 2008-06-26 | 2008-06-26 | 2597 | 试验间 |
| 2599 | 检验 | 2008-06-26 | 2008-06-27 | 2598 | 检验 |
| 2600 | 阳极化涂漆 | 2008-06-27 | 2008-06-28 | 2599 |  |
| 2601 | 壳体 | 2008-06-14 | 2008-06-15 |  |  |
| 2602 | 壳体 | 2008-06-15 | 2008-07-24 |  |  |
| 2603 | 铣平面 | 2008-06-15 | 2008-06-15 |  | 立铣 |
| 2604 | 切槽 | 2008-06-15 | 2008-06-15 | 2603 | 小型普车 [100.53%] |
| 2605 | 铣凸台圆弧 | 2008-06-15 | 2008-06-16 | 2604 | 一工段立加三轴64V(V600) |
| 2606 | 铣小端面 | 2008-06-16 | 2008-06-17 | 2605 | 一工段立加三轴64V(V600) |
| 2607 | 镗孔切槽 | 2008-06-17 | 2008-06-19 | 2606 | 小型普车 |
| 2608 | 倒角车螺纹 | 2008-06-19 | 2008-06-21 | 2607 | 小型普车 |
| 2609 | 铣槽 | 2008-06-21 | 2008-06-22 | 2608 | 立铣 |
| 2610 | 镗孔切槽车螺纹 | 2008-06-22 | 2008-06-26 | 2609 | 小型普车 |
| 2611 | 镗孔切槽 | 2008-06-26 | 2008-07-01 | 2610 | 小型普车 |
| 2612 | 镗孔 | 2008-07-01 | 2008-07-03 | 2611 | 四轴卧加 |
| 2613 | 镗孔 | 2008-07-03 | 2008-07-06 | 2612 | 四轴卧加 |
| 2614 | 铣凸耳凹槽 | 2008-07-06 | 2008-07-07 | 2613 | 四轴立卧加 |
| 2615 | 镗孔 | 2008-07-07 | 2008-07-08 | 2614 | 四轴立卧加 |
| 2616 | 铣槽 | 2008-07-08 | 2008-07-08 | 2615 | 立铣 [100.09%] |
| 2617 | 铣槽 | 2008-07-08 | 2008-07-08 | 2616 | 立铣 [99.82%] |
| 2618 | 镗孔 | 2008-07-08 | 2008-07-09 | 2617 | 坐标镗 [114.29%] |
| 2619 | 钻镗孔 | 2008-07-09 | 2008-07-09 | 2618 | 坐标镗 |
| 2620 | 攻螺纹 | 2008-07-10 | 2008-07-10 | 2619 | 立式钻床 [99.75%] |
| 2621 | 钻锁紧孔 | 2008-07-10 | 2008-07-10 | 2620 | 立式钻床 [99.54%] |
| 2622 | 清洗 | 2008-07-10 | 2008-07-11 | 2621 | 毛刺台一 |
| 2623 | 去毛刺 | 2008-07-11 | 2008-07-11 | 2622 | 毛刺台一 |
| 2624 | 清洗 | 2008-07-11 | 2008-07-12 | 2623 | 毛刺台一 |
| 2625 | 研磨 | 2008-07-12 | 2008-07-13 | 2624 | 研磨台 |
| 2626 | 研磨 | 2008-07-13 | 2008-07-14 | 2625 | 研磨台 |
| 2627 | 研磨 | 2008-07-14 | 2008-07-14 | 2626 | 研磨台 |
| 2628 | 浸泡 | 2008-07-14 | 2008-07-14 | 2627 | 试验间 |
| 2629 | 超声波清洗 | 2008-07-14 | 2008-07-14 | 2628 | 试验间 |
| 2630 | 研磨 | 2008-07-15 | 2008-07-15 | 2629 | 研磨台 |
| 2631 | 浸泡 | 2008-07-15 | 2008-07-15 | 2630 | 试验间 |
| 2632 | 超声波清洗 | 2008-07-15 | 2008-07-15 | 2631 | 试验间 |
| 2633 | 研磨 | 2008-07-16 | 2008-07-16 | 2632 | 研磨台 |
| 2634 | 浸泡 | 2008-07-16 | 2008-07-16 | 2633 | 试验间 |
| 2635 | 超声波清洗 | 2008-07-16 | 2008-07-16 | 2634 | 试验间 |
| 2636 | 研磨 | 2008-07-17 | 2008-07-18 | 2635 | 立式钻床 |
| 2637 | 浸泡 | 2008-07-18 | 2008-07-18 | 2636 | 试验间 |
| 2638 | 超声波清洗 | 2008-07-18 | 2008-07-18 | 2637 | 试验间 |
| 2639 | 检验 | 2008-07-19 | 2008-07-20 | 2638 | 检验 |
| 2640 | 荧光检验 | 2008-07-21 | 2008-07-22 | 2639 | 外协 |
| 2641 | 清洗 | 2008-07-22 | 2008-07-23 | 2640 | 毛刺台一 |
| 2642 | 阳极化涂漆 | 2008-07-23 | 2008-07-24 | 2641 |  |
| 2643 | 壳体 | 2008-06-15 | 2008-11-19 |  |  |
| 2644 | 车锥台切槽 | 2008-06-15 | 2008-06-29 |  | 中型普车 |
| 2645 | 清洗 | 2008-06-29 | 2008-06-29 | 2644 | 毛刺台一 |
| 2646 | 去毛刺 | 2008-06-29 | 2008-06-30 | 2645 | 毛刺台一 |
| 2647 | 清洗 | 2008-06-30 | 2008-07-01 | 2646 | 毛刺台一 |
| 2648 | 研平面 | 2008-07-03 | 2008-07-03 | 2647 | 研磨台 |
| 2649 | 清洗 | 2008-07-03 | 2008-07-04 | 2648 | 毛刺台一 |
| 2650 | 铣平面 | 2008-07-04 | 2008-07-06 | 2649 | 立铣 [100.67%] |
| 2651 | 铣平面凸台 | 2008-07-06 | 2008-07-10 | 2650 | 一工段立加三轴64V(V600) |
| 2652 | 清洗 | 2008-07-10 | 2008-07-10 | 2651 | 毛刺台一 |
| 2653 | 去毛刺 | 2008-07-10 | 2008-07-11 | 2652 | 毛刺台一 |
| 2654 | 清洗 | 2008-07-11 | 2008-07-11 | 2653 | 毛刺台一 |
| 2655 | 铣平面 | 2008-07-11 | 2008-07-13 | 2654 | 立铣 |
| 2656 | 铣平面 | 2008-07-13 | 2008-07-14 | 2655 | 立铣 |
| 2657 | 铣平面 | 2008-07-14 | 2008-07-14 | 2656 | 立铣 [99.94%] |
| 2658 | 铣平面 | 2008-07-14 | 2008-07-15 | 2657 | 立铣 |
| 2659 | 铣平面 | 2008-07-15 | 2008-07-16 | 2658 | 立铣 |
| 2660 | 铣平面 | 2008-07-16 | 2008-07-16 | 2659 | 立铣 [99.87%] |

| ID | Task | Start | Finish | Predecessors | Resources |
| --- | --- | --- | --- | --- | --- |
| 2661 | 铣形面 | 2008-07-16 | 2008-07-18 | 2660 | 一工段立加三轴64V(V600) |
| 2662 | 钻孔攻螺纹 | 2008-07-18 | 2008-07-21 | 2661 | 立式钻床 |
| 2663 | 钻孔 | 2008-07-21 | 2008-07-22 | 2662 | 立式钻床 |
| 2664 | 钻孔 | 2008-07-22 | 2008-07-23 | 2663 | 立式钻床 |
| 2665 | 镗孔切槽 | 2008-07-23 | 2008-07-30 | 2664 | 中型普车 |
| 2666 | 钻孔攻螺纹 | 2008-07-30 | 2008-07-31 | 2665 | 立式钻床 [100.22%] |
| 2667 | 钻孔攻螺纹 | 2008-07-31 | 2008-08-02 | 2666 | 立式钻床 |
| 2668 | 钻孔攻螺纹 | 2008-08-02 | 2008-08-04 | 2667 | 立式钻床 |
| 2669 | 钻孔 | 2008-08-04 | 2008-08-04 | 2668 | 立式钻床 [99.92%] |
| 2670 | 钻孔 | 2008-08-04 | 2008-08-05 | 2669 | 立式钻床 |
| 2671 | 钻铰孔攻螺纹 | 2008-08-05 | 2008-08-06 | 2670 | 立式钻床 [100.15%] |
| 2672 | 钻铰孔攻螺纹 | 2008-08-06 | 2008-08-08 | 2671 | 立式钻床 |
| 2673 | 车槽 | 2008-08-08 | 2008-08-09 | 2672 | 肖布林150A [101.19%] |
| 2674 | 镗孔切槽 | 2008-08-09 | 2008-08-14 | 2673 | 中型普车 |
| 2675 | 钻铰孔攻螺纹 | 2008-08-14 | 2008-08-16 | 2674 | 立式钻床 |
| 2676 | 钻铰孔 | 2008-08-16 | 2008-08-17 | 2675 | 立式钻床 |
| 2677 | 钻孔 | 2008-08-17 | 2008-08-18 | 2676 | 立式钻床 |
| 2678 | 钻孔 | 2008-08-18 | 2008-08-19 | 2677 | 立式钻床 |
| 2679 | 钻孔 | 2008-08-19 | 2008-08-21 | 2678 | 立式钻床 |
| 2680 | 钻孔 | 2008-08-21 | 2008-08-22 | 2679 | 立式钻床 |
| 2681 | 钻孔 | 2008-08-22 | 2008-08-23 | 2680 | 立式钻床 |
| 2682 | 钻孔 | 2008-08-23 | 2008-08-24 | 2681 | 立式钻床 |
| 2683 | 钻孔 | 2008-08-24 | 2008-08-26 | 2682 | 立式钻床 |
| 2684 | 钻孔 | 2008-08-26 | 2008-08-27 | 2683 | 立式钻床 |
| 2685 | 清洗 | 2008-08-27 | 2008-08-27 | 2684 | 毛刺台一 |
| 2686 | 去毛刺 | 2008-08-27 | 2008-08-28 | 2685 | 毛刺台一 |
| 2687 | 钻孔 | 2008-08-28 | 2008-08-30 | 2686 | 立式钻床 |
| 2688 | 攻螺纹 | 2008-08-30 | 2008-09-01 | 2687 | 立式钻床 |
| 2689 | 铣槽 | 2008-09-01 | 2008-09-02 | 2688 | 立铣 [102.56%] |
| 2690 | 去毛刺 | 2008-09-02 | 2008-09-02 | 2689 | 毛刺台一 |
| 2691 | 清洗 | 2008-09-02 | 2008-09-03 | 2690 | 毛刺台一 |
| 2692 | 钻孔 | 2008-09-03 | 2008-09-05 | 2691 | 立式钻床 |
| 2693 | 攻螺纹 | 2008-09-05 | 2008-09-08 | 2692 | 立式钻床 |
| 2694 | 划面 | 2008-09-08 | 2008-09-08 | 2693 | 立式钻床 [99.8%] |
| 2695 | 铣平面 | 2008-09-08 | 2008-09-10 | 2694 | 立铣 |
| 2696 | 切槽 | 2008-09-10 | 2008-09-14 | 2695 | 小型普车 |
| 2697 | 铣凸台圆弧 | 2008-09-14 | 2008-09-16 | 2696 | 一工段立加三轴64V(V600) |
| 2698 | 铣小端面 | 2008-09-16 | 2008-09-20 | 2697 | 一工段立加三轴64V(V600) |
| 2699 | 镗孔切槽 | 2008-09-20 | 2008-09-26 | 2698 | 小型普车 |
| 2700 | 倒角车螺纹 | 2008-09-26 | 2008-09-30 | 2699 | 小型普车 |
| 2701 | 铣槽 | 2008-09-30 | 2008-10-01 | 2700 | 立铣 |
| 2702 | 镗孔切槽车螺纹 | 2008-10-01 | 2008-10-08 | 2701 | 小型普车 |
| 2703 | 镗孔切槽 | 2008-10-08 | 2008-10-15 | 2702 | 小型普车 |
| 2704 | 镗孔 | 2008-10-15 | 2008-10-20 | 2703 | 一工段四轴卧加 |
| 2705 | 镗孔 | 2008-10-20 | 2008-10-25 | 2704 | 一工段四轴卧加 |
| 2706 | 铣凸耳凹槽 | 2008-10-25 | 2008-10-27 | 2705 | 一工段立加三轴64V(V600) [100.11%] |
| 2707 | 镗孔 | 2008-10-27 | 2008-10-29 | 2706 | 一工段四轴卧加 |
| 2708 | 铣槽 | 2008-10-29 | 2008-10-29 | 2707 | 立铣 [99.94%] |
| 2709 | 铣槽 | 2008-10-29 | 2008-10-30 | 2708 | 立铣 |
| 2710 | 镗孔 | 2008-10-30 | 2008-10-31 | 2709 | 坐标镗 [102.7%] |
| 2711 | 钻镗孔 | 2008-10-31 | 2008-11-01 | 2710 | 坐标镗 [100.1%] |
| 2712 | 攻螺纹 | 2008-11-01 | 2008-11-02 | 2711 | 立式钻床 |
| 2713 | 钻锁紧孔 | 2008-11-02 | 2008-11-02 | 2712 | 立式钻床 [100.31%] |
| 2714 | 清洗 | 2008-11-02 | 2008-11-03 | 2713 | 毛刺台一 |
| 2715 | 去毛刺 | 2008-11-03 | 2008-11-04 | 2714 | 毛刺台一 |
| 2716 | 清洗 | 2008-11-04 | 2008-11-04 | 2715 | 毛刺台一 |
| 2717 | 研磨 | 2008-11-04 | 2008-11-05 | 2716 | 研磨台 |
| 2718 | 研磨 | 2008-11-05 | 2008-11-06 | 2717 | 研磨台 |
| 2719 | 研磨 | 2008-11-06 | 2008-11-07 | 2718 | 研磨台 |
| 2720 | 浸泡 | 2008-11-07 | 2008-11-07 | 2719 | 试验间 |
| 2721 | 超声波清洗 | 2008-11-07 | 2008-11-07 | 2720 | 试验间 |
| 2722 | 研磨 | 2008-11-08 | 2008-11-08 | 2721 | 研磨台 |
| 2723 | 浸泡 | 2008-11-08 | 2008-11-08 | 2722 | 试验间 |
| 2724 | 超声波清洗 | 2008-11-08 | 2008-11-09 | 2723 | 试验间 |
| 2725 | 研磨 | 2008-11-09 | 2008-11-10 | 2724 | 研磨台 |
| 2726 | 浸泡 | 2008-11-10 | 2008-11-10 | 2725 | 试验间 |
| 2727 | 超声波清洗 | 2008-11-10 | 2008-11-10 | 2726 | 试验间 |
| 2728 | 研磨 | 2008-11-11 | 2008-11-13 | 2727 | 立式钻床 |
| 2729 | 浸泡 | 2008-11-13 | 2008-11-13 | 2728 | 试验间 |
| 2730 | 超声波清洗 | 2008-11-13 | 2008-11-13 | 2729 | 试验间 |

| ID | Task | Start | Finish | Predecessors | Resources |
| --- | --- | --- | --- | --- | --- |
| 2731 | 检验 | 2008-11-14 | 2008-11-14 | 2730 | 检验 |
| 2732 | 荧光检验 | 2008-11-15 | 2008-11-17 | 2731 | 外协 |
| 2733 | 清洗 | 2008-11-17 | 2008-11-17 | 2732 | 毛刺台一 |
| 2734 | 阳极化涂漆 | 2008-11-18 | 2008-11-19 | 2733 |  |
| 2735 | 壳体 | 2008-06-15 | 2008-11-21 |  |  |
| 2736 | 车锥台切槽 | 2008-06-15 | 2008-06-29 |  | 中型普车 |
| 2737 | 清洗 | 2008-06-29 | 2008-06-30 | 2736 | 毛刺台一 |
| 2738 | 去毛刺 | 2008-06-30 | 2008-06-30 | 2737 | 毛刺台一 |
| 2739 | 清洗 | 2008-06-30 | 2008-07-01 | 2738 | 毛刺台一 |
| 2740 | 研平面 | 2008-07-03 | 2008-07-03 | 2739 | 研磨台 |
| 2741 | 清洗 | 2008-07-03 | 2008-07-04 | 2740 | 毛刺台一 |
| 2742 | 铣平面 | 2008-07-04 | 2008-07-06 | 2741 | 立铣 |
| 2743 | 铣平面凸台 | 2008-07-06 | 2008-07-10 | 2742 | 一工段立加三轴64V(V600) |
| 2744 | 清洗 | 2008-07-10 | 2008-07-10 | 2743 | 毛刺台一 |
| 2745 | 去毛刺 | 2008-07-10 | 2008-07-11 | 2744 | 毛刺台一 |
| 2746 | 清洗 | 2008-07-11 | 2008-07-12 | 2745 | 毛刺台一 |
| 2747 | 铣平面 | 2008-07-12 | 2008-07-13 | 2746 | 立铣 |
| 2748 | 铣平面 | 2008-07-13 | 2008-07-14 | 2747 | 立铣 |
| 2749 | 铣平面 | 2008-07-14 | 2008-07-15 | 2748 | 立铣 |
| 2750 | 铣平面 | 2008-07-15 | 2008-07-15 | 2749 | 立铣 |
| 2751 | 铣平面 | 2008-07-15 | 2008-07-16 | 2750 | 立铣 |
| 2752 | 铣平面 | 2008-07-16 | 2008-07-17 | 2751 | 立铣 |
| 2753 | 铣形面 | 2008-07-17 | 2008-07-19 | 2752 | 一工段立加三轴64V(V600) |
| 2754 | 钻孔攻螺纹 | 2008-07-19 | 2008-07-22 | 2753 | 立式钻床 |
| 2755 | 钻孔 | 2008-07-22 | 2008-07-23 | 2754 | 立式钻床 |
| 2756 | 钻孔 | 2008-07-23 | 2008-07-24 | 2755 | 立式钻床 |
| 2757 | 镗孔切槽 | 2008-07-24 | 2008-07-31 | 2756 | 中型普车 |
| 2758 | 钻孔攻螺纹 | 2008-07-31 | 2008-08-01 | 2757 | 立式钻床 |
| 2759 | 钻孔攻螺纹 | 2008-08-01 | 2008-08-03 | 2758 | 立式钻床 |
| 2760 | 钻孔攻螺纹 | 2008-08-03 | 2008-08-04 | 2759 | 立式钻床 |
| 2761 | 钻孔 | 2008-08-04 | 2008-08-05 | 2760 | 立式钻床 |
| 2762 | 钻孔 | 2008-08-05 | 2008-08-05 | 2761 | 立式钻床 |
| 2763 | 钻铰孔攻螺纹 | 2008-08-05 | 2008-08-07 | 2762 | 立式钻床 |
| 2764 | 钻铰孔攻螺纹 | 2008-08-07 | 2008-08-09 | 2763 | 立式钻床 |
| 2765 | 车槽 | 2008-08-09 | 2008-08-10 | 2764 | 肖布林150A |
| 2766 | 镗孔切槽 | 2008-08-10 | 2008-08-15 | 2765 | 中型普车 |
| 2767 | 钻铰孔攻螺纹 | 2008-08-15 | 2008-08-17 | 2766 | 立式钻床 |
| 2768 | 钻铰孔 | 2008-08-17 | 2008-08-18 | 2767 | 立式钻床 |
| 2769 | 钻孔 | 2008-08-18 | 2008-08-19 | 2768 | 立式钻床 |
| 2770 | 钻孔 | 2008-08-19 | 2008-08-20 | 2769 | 立式钻床 |
| 2771 | 钻孔 | 2008-08-20 | 2008-08-22 | 2770 | 立式钻床 |
| 2772 | 钻孔 | 2008-08-22 | 2008-08-23 | 2771 | 立式钻床 |
| 2773 | 钻孔 | 2008-08-23 | 2008-08-25 | 2772 | 立式钻床 |
| 2774 | 钻孔 | 2008-08-25 | 2008-08-26 | 2773 | 立式钻床 |
| 2775 | 钻孔 | 2008-08-26 | 2008-08-27 | 2774 | 立式钻床 |
| 2776 | 钻孔 | 2008-08-27 | 2008-08-28 | 2775 | 立式钻床 |
| 2777 | 清洗 | 2008-08-28 | 2008-08-28 | 2776 | 毛刺台一 |
| 2778 | 去毛刺 | 2008-08-28 | 2008-08-29 | 2777 | 毛刺台一 |
| 2779 | 钻孔 | 2008-08-29 | 2008-09-01 | 2778 | 立式钻床 |
| 2780 | 攻螺纹 | 2008-09-01 | 2008-09-02 | 2779 | 立式钻床 |
| 2781 | 铣槽 | 2008-09-02 | 2008-09-03 | 2780 | 立铣 |
| 2782 | 去毛刺 | 2008-09-03 | 2008-09-04 | 2781 | 毛刺台一 |
| 2783 | 清洗 | 2008-09-04 | 2008-09-04 | 2782 | 毛刺台一 |
| 2784 | 钻孔 | 2008-09-04 | 2008-09-07 | 2783 | 立式钻床 |
| 2785 | 攻螺纹 | 2008-09-07 | 2008-09-09 | 2784 | 立式钻床 |
| 2786 | 划面 | 2008-09-09 | 2008-09-10 | 2785 | 立式钻床 |
| 2787 | 铣平面 | 2008-09-10 | 2008-09-12 | 2786 | 立铣 |
| 2788 | 切槽 | 2008-09-12 | 2008-09-16 | 2787 | 小型普车 |
| 2789 | 铣凸台圆弧 | 2008-09-16 | 2008-09-18 | 2788 | 一工段立加三轴64V(V600) |
| 2790 | 铣小端面 | 2008-09-18 | 2008-09-22 | 2789 | 一工段立加三轴64V(V600) |
| 2791 | 镗孔切槽 | 2008-09-23 | 2008-09-29 | 2790 | 小型普车 |
| 2792 | 倒角车螺纹 | 2008-09-29 | 2008-10-02 | 2791 | 小型普车 |
| 2793 | 铣槽 | 2008-10-02 | 2008-10-03 | 2792 | 立铣 |
| 2794 | 镗孔切槽车螺纹 | 2008-10-03 | 2008-10-11 | 2793 | 小型普车 |
| 2795 | 镗孔切槽 | 2008-10-11 | 2008-10-18 | 2794 | 小型普车 |
| 2796 | 镗孔 | 2008-10-18 | 2008-10-23 | 2795 | 一工段四轴卧加 |
| 2797 | 镗孔 | 2008-10-23 | 2008-10-29 | 2796 | 一工段四轴卧加 |
| 2798 | 铣凸耳凹槽 | 2008-10-29 | 2008-10-30 | 2797 | 一工段立加三轴64V(V600) |
| 2799 | 镗孔 | 2008-10-30 | 2008-11-01 | 2798 | 一工段四轴卧加 |
| 2800 | 铣槽 | 2008-11-01 | 2008-11-02 | 2799 | 立铣 |

| ID | Task | Start | Finish | Predecessors | Complete | Resources |
| --- | --- | --- | --- | --- | --- | --- |
| 2801 | 铣槽 | 2008-11-02 | 2008-11-03 | 2800 |  | 立铣 |
| 2802 | 镗孔 | 2008-11-03 | 2008-11-04 | 2801 |  | 坐标镗 |
| 2803 | 钻镗孔 | 2008-11-04 | 2008-11-05 | 2802 |  | 坐标镗 |
| 2804 | 攻螺纹 | 2008-11-05 | 2008-11-05 | 2803 |  | 立式钻床 |
| 2805 | 钻锁紧孔 | 2008-11-05 | 2008-11-05 | 2804 |  | 立式钻床 |
| 2806 | 清洗 | 2008-11-05 | 2008-11-06 | 2805 |  | 毛刺台一 |
| 2807 | 去毛刺 | 2008-11-06 | 2008-11-07 | 2806 |  | 毛刺台一 |
| 2808 | 清洗 | 2008-11-07 | 2008-11-07 | 2807 |  | 毛刺台一 |
| 2809 | 研磨 | 2008-11-07 | 2008-11-08 | 2808 |  | 研磨台 |
| 2810 | 研磨 | 2008-11-08 | 2008-11-10 | 2809 |  | 研磨台 |
| 2811 | 研磨 | 2008-11-10 | 2008-11-10 | 2810 |  | 研磨台 |
| 2812 | 浸泡 | 2008-11-10 | 2008-11-10 | 2811 |  | 试验间 |
| 2813 | 超声波清洗 | 2008-11-10 | 2008-11-10 | 2812 |  | 试验间 |
| 2814 | 研磨 | 2008-11-11 | 2008-11-11 | 2813 |  | 研磨台 |
| 2815 | 浸泡 | 2008-11-11 | 2008-11-11 | 2814 |  | 试验间 |
| 2816 | 超声波清洗 | 2008-11-11 | 2008-11-11 | 2815 |  | 试验间 |
| 2817 | 研磨 | 2008-11-12 | 2008-11-12 | 2816 |  | 研磨台 |
| 2818 | 浸泡 | 2008-11-12 | 2008-11-12 | 2817 |  | 试验间 |
| 2819 | 超声波清洗 | 2008-11-12 | 2008-11-12 | 2818 |  | 试验间 |
| 2820 | 研磨 | 2008-11-13 | 2008-11-15 | 2819 |  | 立式钻床 |
| 2821 | 浸泡 | 2008-11-15 | 2008-11-15 | 2820 |  | 试验间 |
| 2822 | 超声波清洗 | 2008-11-15 | 2008-11-16 | 2821 |  | 试验间 |
| 2823 | 检验 | 2008-11-17 | 2008-11-17 | 2822 |  | 检验 |
| 2824 | 荧光检验 | 2008-11-18 | 2008-11-19 | 2823 |  | 外协 |
| 2825 | 清洗 | 2008-11-19 | 2008-11-20 | 2824 |  | 毛刺台一 |
| 2826 | 阳极化涂漆 | 2008-11-20 | 2008-11-21 | 2825 |  |  |
| 2827 | 盖板和底板组合 | 2008-06-15 | 2008-06-24 |  |  |  |
| 2828 | 检查零件 配套 | 2008-06-15 | 2008-06-16 |  |  | 检验 |
| 2829 | 磨内孔 | 2008-06-16 | 2008-06-18 | 2828 |  | 坐标磨 |
| 2830 | 去毛刺 | 2008-06-18 | 2008-06-19 | 2829 |  | 毛刺台一 |
| 2831 | 清洗 | 2008-06-19 | 2008-06-19 | 2830 |  | 毛刺台一 |
| 2832 | 荧光检查 | 2008-06-19 | 2008-06-21 | 2831 |  | 外协 |
| 2833 | 清洗 | 2008-06-21 | 2008-06-22 | 2832 |  | 毛刺台一 |
| 2834 | 检验 | 2008-06-22 | 2008-06-23 | 2833 |  | 检验 |
| 2835 | 清洗 | 2008-06-23 | 2008-06-24 | 2834 |  | 毛刺台一 |
| 2836 | 盖板和底板组合 | 2008-06-15 | 2008-06-19 |  |  |  |
| 2837 | 去毛刺 | 2008-06-15 | 2008-06-15 |  |  | 毛刺台一 |
| 2838 | 清洗 | 2008-06-15 | 2008-06-16 | 2837 |  | 毛刺台一 |
| 2839 | 清洗 | 2008-06-17 | 2008-06-18 | 2838 |  | 毛刺台一 |
| 2840 | 检验 | 2008-06-18 | 2008-06-19 | 2839 |  | 检验 |
| 2841 | 清洗 | 2008-06-19 | 2008-06-19 | 2840 |  | 毛刺台一 |
| 2842 | 盖板和底板组合 | 2008-06-15 | 2008-06-16 |  |  |  |
| 2843 | 检验 | 2008-06-15 | 2008-06-16 |  |  | 检验 |
| 2844 | 清洗 | 2008-06-16 | 2008-06-16 | 2843 |  | 毛刺台一 |
| 2845 | 盖组合件 | 2008-06-15 | 2008-06-23 |  |  |  |
| 2846 | 配套 | 2008-06-15 | 2008-06-15 |  |  | 立式钻床 |
| 2847 | 压密封环座 | 2008-06-15 | 2008-06-16 | 2846 |  | 外协 |
| 2848 | 装钢丝螺套 | 2008-06-16 | 2008-06-17 | 2847 |  | 立式钻床 |
| 2849 | 挤压密封座孔口 | 2008-06-17 | 2008-06-17 | 2848 |  | 中型普车 |
| 2850 | 车端面 | 2008-06-17 | 2008-06-18 | 2849 |  | 中型普车 |
| 2851 | 研磨平面 | 2008-06-18 | 2008-06-19 | 2850 |  | 中型普车 |
| 2852 | 去毛刺 | 2008-06-19 | 2008-06-20 | 2851 |  | 毛刺台一 |
| 2853 | 清洗 | 2008-06-20 | 2008-06-21 | 2852 |  | 毛刺台一 |
| 2854 | 检验 | 2008-06-23 | 2008-06-23 | 2853 |  | 检验 |
| 2855 | 盖组合件 | 2008-06-15 | 2008-06-23 |  |  |  |
| 2856 | 配套 | 2008-06-15 | 2008-06-15 |  |  | 立式钻床 [98.48%] |
| 2857 | 压密封环座 | 2008-06-15 | 2008-06-16 | 2856 |  | 外协 |
| 2858 | 装钢丝螺套 | 2008-06-16 | 2008-06-17 | 2857 |  | 立式钻床 |
| 2859 | 挤压密封座孔口 | 2008-06-17 | 2008-06-17 | 2858 |  | 中型普车 [99.8%] |
| 2860 | 车端面 | 2008-06-17 | 2008-06-18 | 2859 |  | 中型普车 |
| 2861 | 研磨平面 | 2008-06-18 | 2008-06-19 | 2860 |  | 中型普车 |
| 2862 | 去毛刺 | 2008-06-19 | 2008-06-20 | 2861 |  | 毛刺台一 |
| 2863 | 清洗 | 2008-06-20 | 2008-06-20 | 2862 |  | 毛刺台一 |
| 2864 | 检验 | 2008-06-23 | 2008-06-23 | 2863 |  | 检验 |
| 2865 | 盖板组合件 | 2008-06-14 | 2008-06-16 |  |  |  |
| 2866 | 钻镗孔 | 2008-06-14 | 2008-06-15 |  |  | 坐标镗 |
| 2867 | 已完成任务 | 2008-06-14 | 2008-06-14 | 2866 | 100% |  |
| 2868 | 检验 | 2008-06-15 | 2008-06-16 | 2867 |  | 检验 |
| 2869 | 盖板组合件 | 2008-04-14 | 2008-06-15 |  |  |  |
| 2870 | 清洗 | 2008-06-15 | 2008-06-15 |  |  | 毛刺台一 |

| ID | Task | Start | Finish | Predecessors | Complete | Resources |
| --- | --- | --- | --- | --- | --- | --- |
| 2871 | 检验 | 2008-04-14 | 2008-04-14 | 2870 | 100% |  |
| 2872 | 底板组合件 | 2008-06-14 | 2008-06-26 |  |  |  |
| 2873 | 配套 | 2008-06-14 | 2008-06-14 |  |  | 立式钻床 |
| 2874 | 检查零件 | 2008-06-15 | 2008-06-16 | 2873 |  | 检验 |
| 2875 | 压套 | 2008-06-16 | 2008-06-17 | 2874 |  | 立式钻床 |
| 2876 | 钻镗孔 | 2008-06-17 | 2008-06-18 | 2875 |  | 坐标镗 |
| 2877 | 去毛刺 | 2008-06-19 | 2008-06-19 | 2876 |  | 毛刺台一 |
| 2878 | 车端面 | 2008-06-19 | 2008-06-21 | 2877 |  | 中型普车 |
| 2879 | 去轴承毛刺 | 2008-06-21 | 2008-06-22 | 2878 |  | 毛刺台一 |
| 2880 | 压销子 | 2008-06-23 | 2008-06-24 | 2879 |  | 立式钻床 |
| 2881 | 上钢丝螺套 | 2008-06-24 | 2008-06-24 | 2880 |  | 立式钻床 |
| 2882 | 清洗 | 2008-06-24 | 2008-06-25 | 2881 |  | 毛刺台一 |
| 2883 | 检验 | 2008-06-25 | 2008-06-26 | 2882 |  | 检验 |
| 2884 | 底板组合件 | 2008-05-27 | 2008-06-22 |  |  |  |
| 2885 | 配套 | 2008-06-14 | 2008-06-14 |  |  | 立式钻床 |
| 2886 | 已完成任务 | 2008-05-27 | 2008-05-27 | 2885 | 100% |  |
| 2887 | 钻镗孔 | 2008-06-14 | 2008-06-16 | 2886 |  | 坐标镗 |
| 2888 | 去毛刺 | 2008-06-16 | 2008-06-16 | 2887 |  | 毛刺台一 |
| 2889 | 车端面 | 2008-06-16 | 2008-06-17 | 2888 |  | 中型普车 |
| 2890 | 去轴承毛刺 | 2008-06-17 | 2008-06-18 | 2889 |  | 毛刺台一 |
| 2891 | 压销子 | 2008-06-19 | 2008-06-19 | 2890 |  | 立式钻床 [100.24%] |
| 2892 | 上钢丝螺套 | 2008-06-19 | 2008-06-20 | 2891 |  | 立式钻床 |
| 2893 | 清洗 | 2008-06-20 | 2008-06-20 | 2892 |  | 毛刺台一 |
| 2894 | 检验 | 2008-06-21 | 2008-06-22 | 2893 |  | 检验 |
| 2895 | 盖子组合件 | 2008-07-25 | 2008-07-29 |  |  |  |
| 2896 | 准备组件 | 2008-07-25 | 2008-07-25 | 2500 |  | 立式钻床 |
| 2897 | 安装钢丝螺套 | 2008-07-25 | 2008-07-27 | 2896 |  | 立式钻床 |
| 2898 | 冲洗油路 | 2008-07-27 | 2008-07-28 | 2897 |  | 试验间 |
| 2899 | 安装堵头 | 2008-07-28 | 2008-07-28 | 2898 |  | 立式钻床 |
| 2900 | 堵头试验 | 2008-07-28 | 2008-07-28 | 2899 |  | 试验间 |
| 2901 | 检验 | 2008-07-28 | 2008-07-29 | 2900 |  | 检验 |
| 2902 | 壳体丝套组件 | 2008-06-15 | 2008-06-20 |  |  |  |
| 2903 | 装螺套 | 2008-06-15 | 2008-06-20 |  |  | 钳工台 |
| 2904 | 壳体丝套组件 | 2008-07-25 | 2008-07-28 |  |  |  |
| 2905 | 安装堵头 | 2008-07-25 | 2008-07-25 | 2602 |  | 立式钻床 |
| 2906 | 堵头强度试验 | 2008-07-25 | 2008-07-25 | 2905 |  | 试验间 |
| 2907 | 清洗 | 2008-07-26 | 2008-07-26 | 2906 |  | 毛刺台一 |
| 2908 | 检验 | 2008-07-27 | 2008-07-28 | 2907 |  | 检验 |
| 2909 | 壳体丝套组件 | 2008-06-15 | 2008-06-18 |  |  |  |
| 2910 | 安装堵头 | 2008-06-15 | 2008-06-16 |  |  | 立式钻床 |
| 2911 | 堵头强度试验 | 2008-06-16 | 2008-06-16 | 2910 |  | 试验间 |
| 2912 | 清洗 | 2008-06-16 | 2008-06-17 | 2911 |  | 毛刺台一 |
| 2913 | 检验 | 2008-06-18 | 2008-06-18 | 2912 |  | 检验 |
| 2914 | 壳体丝套组件 | 2008-06-15 | 2008-06-18 |  |  |  |
| 2915 | 安装堵头 | 2008-06-15 | 2008-06-16 |  |  | 立式钻床 |
| 2916 | 堵头强度试验 | 2008-06-16 | 2008-06-16 | 2915 |  | 试验间 |
| 2917 | 清洗 | 2008-06-16 | 2008-06-17 | 2916 |  | 毛刺台一 |
| 2918 | 检验 | 2008-06-18 | 2008-06-18 | 2917 |  | 检验 |
| 2919 | 导向器壳体 | 2008-05-06 | 2008-07-22 |  |  |  |
| 2920 | 镗孔，车螺纹 | 2008-06-14 | 2008-06-16 |  |  | 数控车 |
| 2921 | 已完成任务 | 2008-05-06 | 2008-05-06 | 2920 | 100% |  |
| 2922 | 攻螺纹 | 2008-06-15 | 2008-06-15 | 2921 |  | 毛刺台二 |
| 2923 | 已完成任务 | 2008-05-09 | 2008-05-09 | 2922 | 100% |  |
| 2924 | 铣型面 | 2008-06-14 | 2008-06-16 | 2923 |  | 四轴立卧加 |
| 2925 | 铣面，钻镗孔 | 2008-06-14 | 2008-06-16 | 2923 |  | 五轴立卧加 |
| 2926 | 铣面，钻镗孔 | 2008-06-14 | 2008-06-16 | 2923 |  | 五轴立卧加 |
| 2927 | 铣面，钻镗孔 | 2008-06-14 | 2008-06-16 | 2923 |  | 五轴立卧加 |
| 2928 | 去毛刺抛光 | 2008-06-16 | 2008-06-17 | 2924, 2925, 2926, 2927 |  | 毛刺台二 |
| 2929 | 清洗 | 2008-06-17 | 2008-06-18 | 2928 |  | 毛刺台二 |
| 2930 | 镗孔 | 2008-06-18 | 2008-06-19 | 2929 |  | 数控车 |
| 2931 | 镗孔 | 2008-06-18 | 2008-06-19 | 2929 |  | 数控车 |
| 2932 | 镗孔 | 2008-06-18 | 2008-06-18 | 2929 |  | 数控车 |
| 2933 | 镗孔 | 2008-06-18 | 2008-06-19 | 2929 |  | 数控车 |
| 2934 | 车外圆，切槽 | 2008-06-19 | 2008-06-20 | 2930, 2931, 2932, 2933 |  | 数控车 |
| 2935 | 铣面，槽钻孔 | 2008-06-20 | 2008-06-21 | 2934 |  | 四轴立卧加 |
| 2936 | 去毛刺抛光 | 2008-06-29 | 2008-06-30 | 2935 |  | 毛刺台一 |
| 2937 | 清洗 | 2008-06-30 | 2008-06-30 | 2936 |  | 毛刺台一 |
| 2938 | 攻螺纹 | 2008-06-30 | 2008-06-30 | 2937 |  | 立式钻床 |
| 2939 | 攻螺纹 | 2008-06-30 | 2008-07-01 | 2938 |  | 立式钻床 |
| 2940 | 攻螺纹 | 2008-07-01 | 2008-07-01 | 2939 |  | 立式钻床 |

| ID | Task | Start | Finish | Predecessors | Complete | Resources |
| --- | --- | --- | --- | --- | --- | --- |
| 2941 | 去毛刺 | 2008-07-01 | 2008-07-01 | 2940 |  | 毛刺台二 |
| 2942 | 去毛刺 | 2008-07-01 | 2008-07-02 | 2941 |  | 毛刺台二 |
| 2943 | 清洗 | 2008-07-02 | 2008-07-03 | 2942 |  | 毛刺台二 |
| 2944 | 检验 | 2008-07-03 | 2008-07-04 | 2943 |  | 检验 |
| 2945 | 划面 | 2008-07-04 | 2008-07-05 | 2944 |  | 立式钻床 |
| 2946 | 镗孔 | 2008-07-05 | 2008-07-06 | 2945 |  | 二工段立加三轴64V [100.26%] |
| 2947 | 去毛刺 | 2008-07-06 | 2008-07-07 | 2946 |  | 毛刺台二 |
| 2948 | 清洗 | 2008-07-07 | 2008-07-08 | 2947 |  | 毛刺台二 |
| 2949 | 强度试验 | 2008-07-08 | 2008-07-08 | 2948 |  | 试验间 |
| 2950 | 强度试验 | 2008-07-08 | 2008-07-08 | 2949 |  | 试验间 |
| 2951 | 气密试验 | 2008-07-08 | 2008-07-09 | 2950 |  | 试验间 |
| 2952 | 冲洗 | 2008-07-09 | 2008-07-09 | 2951 |  | 试验间 |
| 2953 | 检验 | 2008-07-10 | 2008-07-10 | 2952 |  | 检验 |
| 2954 | 镗孔 | 2008-07-13 | 2008-07-14 | 2953 |  | 四轴卧加 |
| 2955 | 镗孔 | 2008-07-14 | 2008-07-15 | 2954 |  | 二工段立加三轴64V |
| 2956 | 研孔 | 2008-07-15 | 2008-07-15 | 2955 |  | 研磨台 |
| 2957 | 浸泡 | 2008-07-15 | 2008-07-15 | 2956 |  | 试验间 |
| 2958 | 超声波清洗 | 2008-07-15 | 2008-07-15 | 2957 |  | 试验间 |
| 2959 | 攻螺纹 | 2008-07-15 | 2008-07-16 | 2956, 2958 |  | 立式钻床 |
| 2960 | 铰锥度孔 | 2008-07-16 | 2008-07-16 | 2959 |  | 立式钻床 |
| 2961 | 铰锥度孔 | 2008-07-16 | 2008-07-16 | 2960 |  | 立式钻床 |
| 2962 | 铰锥度孔 | 2008-07-16 | 2008-07-17 | 2961 |  | 立式钻床 |
| 2963 | 去毛刺 | 2008-07-17 | 2008-07-17 | 2962 |  | 毛刺台二 |
| 2964 | 清洗 | 2008-07-17 | 2008-07-18 | 2963 |  | 毛刺台二 |
| 2965 | 检验 | 2008-07-19 | 2008-07-20 | 2964 |  | 检验 |
| 2966 | 冲洗 | 2008-07-20 | 2008-07-21 | 2965 |  | 试验间 |
| 2967 | 检验 | 2008-07-21 | 2008-07-22 | 2966 |  | 检验 |
| 2968 | 导向器壳体 | 2008-05-26 | 2008-06-29 |  |  |  |
| 2969 | 镗孔，车螺纹 | 2008-06-14 | 2008-06-16 |  |  | 数控车 |
| 2970 | 已完成任务 | 2008-05-26 | 2008-05-26 | 2969 | 100% |  |
| 2971 | 强度试验 | 2008-06-15 | 2008-06-15 | 2970 |  | 试验间 |
| 2972 | 强度试验 | 2008-06-16 | 2008-06-16 | 2971 |  | 试验间 |
| 2973 | 气密试验 | 2008-06-16 | 2008-06-16 | 2972 |  | 试验间 |
| 2974 | 冲洗 | 2008-06-16 | 2008-06-17 | 2973 |  | 试验间 |
| 2975 | 检验 | 2008-06-17 | 2008-06-18 | 2974 |  | 检验 |
| 2976 | 镗孔 | 2008-06-20 | 2008-06-21 | 2975 |  | 四轴卧加 |
| 2977 | 镗孔 | 2008-06-21 | 2008-06-23 | 2976 |  | 二工段立加三轴64V |
| 2978 | 研孔 | 2008-06-23 | 2008-06-23 | 2977 |  | 研磨台 |
| 2979 | 浸泡 | 2008-06-23 | 2008-06-23 | 2978 |  | 试验间 |
| 2980 | 超声波清洗 | 2008-06-23 | 2008-06-23 | 2979 |  | 试验间 |
| 2981 | 攻螺纹 | 2008-06-23 | 2008-06-23 | 2978, 2980 |  | 立式钻床 |
| 2982 | 铰锥度孔 | 2008-06-23 | 2008-06-24 | 2981 |  | 立式钻床 |
| 2983 | 铰锥度孔 | 2008-06-24 | 2008-06-24 | 2982 |  | 立式钻床 |
| 2984 | 铰锥度孔 | 2008-06-24 | 2008-06-24 | 2983 |  | 立式钻床 |
| 2985 | 去毛刺 | 2008-06-24 | 2008-06-25 | 2984 |  | 毛刺台二 |
| 2986 | 清洗 | 2008-06-25 | 2008-06-26 | 2985 |  | 毛刺台二 |
| 2987 | 检验 | 2008-06-26 | 2008-06-27 | 2986 |  | 检验 |
| 2988 | 冲洗 | 2008-06-27 | 2008-06-27 | 2987 |  | 试验间 |
| 2989 | 检验 | 2008-06-27 | 2008-06-29 | 2988 |  | 检验 |
| 2990 | 导向器壳体 | 2008-06-02 | 2008-06-16 |  |  |  |
| 2991 | 已完成任务 | 2008-06-02 | 2008-06-02 | 2969 | 100% |  |
| 2992 | 检验 | 2008-06-15 | 2008-06-16 | 2991 |  | 检验 |
| 2993 | 导向器壳体 | 2008-06-02 | 2008-09-03 |  |  |  |
| 2994 | 校毛坯 | 2008-06-14 | 2008-06-14 |  |  | 三工段车工班 |
| 2995 | 已完成任务 | 2008-06-02 | 2008-06-02 | 2994 | 100% |  |
| 2996 | 去毛刺 | 2008-06-15 | 2008-06-15 | 2995 |  | 毛刺台二 |
| 2997 | 铣面，钻镗孔 | 2008-06-17 | 2008-06-18 | 2996 |  | 二工段立加三轴64V |
| 2998 | 铣面 | 2008-06-18 | 2008-06-19 | 2997 |  | 四轴立卧加 |
| 2999 | 铣面，钻孔 | 2008-06-19 | 2008-06-20 | 2998 |  | 四轴立卧加 [100.35%] |
| 3000 | 打字 | 2008-06-21 | 2008-06-21 | 2999 |  | 毛刺台二 |
| 3001 | 铣面，钻镗孔 | 2008-06-21 | 2008-06-23 | 3000 |  | 四轴立卧加 [100.36%] |
| 3002 | 钻镗孔，铣槽 | 2008-06-23 | 2008-06-23 | 3001 |  | 四轴立卧加 [100.01%] |
| 3003 | 铣面，钻镗孔 | 2008-06-23 | 2008-06-24 | 3002 |  | 五轴立卧加 |
| 3004 | 铣面，钻铰孔 | 2008-06-24 | 2008-06-25 | 3003 |  | 四轴立卧加 [100.35%] |
| 3005 | 铣面，钻镗孔 | 2008-06-25 | 2008-06-27 | 3004 |  | 四轴立卧加 |
| 3006 | 铣面，钻镗孔 | 2008-06-27 | 2008-06-28 | 3005 |  | 五轴立卧加 [100.03%] |
| 3007 | 镗孔 | 2008-06-28 | 2008-06-30 | 3006 |  | 数控车 |
| 3008 | 镗孔 | 2008-06-30 | 2008-07-01 | 3007 |  | 数控车 |
| 3009 | 镗孔，车螺纹 | 2008-07-01 | 2008-07-02 | 3008 |  | 数控车 |
| 3010 | 铣面钻镗孔 | 2008-07-02 | 2008-07-04 | 3009 |  | 五轴立卧加 |

| ID | Task | Start | Finish | Predecessors | Complete | Resources |
| --- | --- | --- | --- | --- | --- | --- |
| 3011 | 铣面，钻镗孔 | 2008-07-04 | 2008-07-06 | 3010 |  | 四轴立卧加 [100.09%] |
| 3012 | 铣面，钻镗孔 | 2008-07-06 | 2008-07-09 | 3011 |  | 五轴立卧加 |
| 3013 | 镗孔，切槽 | 2008-07-09 | 2008-07-10 | 3012 |  | 数控车 |
| 3014 | 镗孔，车螺纹 | 2008-07-10 | 2008-07-11 | 3013 |  | 数控车 |
| 3015 | 去毛刺抛光打字 | 2008-07-11 | 2008-07-12 | 3014 |  | 毛刺台二 |
| 3016 | 清洗 | 2008-07-12 | 2008-07-12 | 3015 |  | 毛刺台二 |
| 3017 | 攻螺纹 | 2008-07-13 | 2008-07-13 | 3016 |  | 毛刺台二 |
| 3018 | 铣型面 | 2008-07-13 | 2008-07-16 | 3017 |  | 二工段立加三轴64V |
| 3019 | 铣型面 | 2008-07-16 | 2008-07-19 | 3018 |  | 四轴立卧加 |
| 3020 | 铣面，钻镗孔 | 2008-07-19 | 2008-07-22 | 3019 |  | 五轴立卧加 |
| 3021 | 铣面，钻镗孔 | 2008-07-22 | 2008-07-24 | 3020 |  | 五轴立卧加 |
| 3022 | 铣面，钻镗孔 | 2008-07-24 | 2008-07-26 | 3021 |  | 五轴立卧加 |
| 3023 | 去毛刺抛光 | 2008-07-27 | 2008-07-27 | 3022 |  | 毛刺台二 |
| 3024 | 清洗 | 2008-07-27 | 2008-07-28 | 3023 |  | 毛刺台二 |
| 3025 | 镗孔 | 2008-07-28 | 2008-07-29 | 3024 |  | 数控车 |
| 3026 | 镗孔 | 2008-07-29 | 2008-07-30 | 3025 |  | 数控车 |
| 3027 | 镗孔 | 2008-07-30 | 2008-07-31 | 3026 |  | 数控车 |
| 3028 | 镗孔 | 2008-07-31 | 2008-08-01 | 3027 |  | 数控车 |
| 3029 | 车外圆，切槽 | 2008-08-01 | 2008-08-03 | 3028 |  | 数控车 |
| 3030 | 铣面，槽钻孔 | 2008-08-03 | 2008-08-04 | 3029 |  | 四轴立卧加 |
| 3031 | 去毛刺抛光 | 2008-08-13 | 2008-08-13 | 3030 |  | 毛刺台一 |
| 3032 | 清洗 | 2008-08-13 | 2008-08-14 | 3031 |  | 毛刺台一 |
| 3033 | 攻螺纹 | 2008-08-14 | 2008-08-14 | 3032 |  | 立式钻床 [100.34%] |
| 3034 | 攻螺纹 | 2008-08-14 | 2008-08-14 | 3033 |  | 立式钻床 |
| 3035 | 攻螺纹 | 2008-08-14 | 2008-08-15 | 3034 |  | 立式钻床 |
| 3036 | 去毛刺 | 2008-08-15 | 2008-08-15 | 3035 |  | 毛刺台二 |
| 3037 | 去毛刺 | 2008-08-15 | 2008-08-16 | 3036 |  | 毛刺台二 |
| 3038 | 清洗 | 2008-08-16 | 2008-08-17 | 3037 |  | 毛刺台二 |
| 3039 | 检验 | 2008-08-18 | 2008-08-18 | 3038 |  | 检验 |
| 3040 | 划面 | 2008-08-19 | 2008-08-19 | 3039 |  | 立式钻床 [100.38%] |
| 3041 | 镗孔 | 2008-08-19 | 2008-08-20 | 3040 |  | 二工段立加三轴64V |
| 3042 | 去毛刺 | 2008-08-20 | 2008-08-20 | 3041 |  | 毛刺台二 |
| 3043 | 清洗 | 2008-08-20 | 2008-08-21 | 3042 |  | 毛刺台二 |
| 3044 | 强度试验 | 2008-08-21 | 2008-08-21 | 3043 |  | 试验间 |
| 3045 | 强度试验 | 2008-08-21 | 2008-08-22 | 3044 |  | 试验间 |
| 3046 | 气密试验 | 2008-08-22 | 2008-08-22 | 3045 |  | 试验间 |
| 3047 | 冲洗 | 2008-08-22 | 2008-08-22 | 3046 |  | 试验间 |
| 3048 | 检验 | 2008-08-23 | 2008-08-24 | 3047 |  | 检验 |
| 3049 | 镗孔 | 2008-08-27 | 2008-08-28 | 3048 |  | 四轴卧加 |
| 3050 | 镗孔 | 2008-08-28 | 2008-08-28 | 3049 |  | 二工段立加三轴64V |
| 3051 | 研孔 | 2008-08-28 | 2008-08-29 | 3050 |  | 研磨台 |
| 3052 | 浸泡 | 2008-08-29 | 2008-08-29 | 3051 |  | 试验间 |
| 3053 | 超声波清洗 | 2008-08-29 | 2008-08-29 | 3052 |  | 试验间 |
| 3054 | 攻螺纹 | 2008-08-29 | 2008-08-30 | 3053 |  | 立式钻床 |
| 3055 | 铰锥度孔 | 2008-08-30 | 2008-08-30 | 3054 |  | 立式钻床 [99.7%] |
| 3056 | 铰锥度孔 | 2008-08-30 | 2008-08-30 | 3055 |  | 立式钻床 |
| 3057 | 铰锥度孔 | 2008-08-30 | 2008-08-31 | 3056 |  | 立式钻床 |
| 3058 | 去毛刺 | 2008-08-31 | 2008-09-01 | 3057 |  | 毛刺台二 |
| 3059 | 清洗 | 2008-09-01 | 2008-09-01 | 3058 |  | 毛刺台二 |
| 3060 | 检验 | 2008-09-02 | 2008-09-02 | 3059 |  | 检验 |
| 3061 | 冲洗 | 2008-09-02 | 2008-09-03 | 3060 |  | 试验间 |
| 3062 | 检验 | 2008-09-03 | 2008-09-03 | 3061 |  | 检验 |
| 3063 | 导向器壳体 | 2008-05-21 | 2008-09-16 |  |  |  |
| 3064 | 研平面 | 2008-06-15 | 2008-06-15 |  |  | 毛刺台二 |
| 3065 | 已完成任务 | 2008-05-28 | 2008-05-28 | 3064 | 100% |  |
| 3066 | 校毛坯 | 2008-06-14 | 2008-06-14 | 3065 |  | 三工段车工班 |
| 3067 | 已完成任务 | 2008-05-21 | 2008-05-21 | 3066 | 100% |  |
| 3068 | 铣面，钻镗孔 | 2008-06-14 | 2008-06-16 | 3067 |  | 四轴立卧加 |
| 3069 | 铣型面 | 2008-06-16 | 2008-06-18 | 3068 |  | 二工段立加三轴64V |
| 3070 | 去毛刺 | 2008-06-18 | 2008-06-19 | 3069 |  | 毛刺台二 |
| 3071 | 铣面，钻镗孔 | 2008-06-20 | 2008-06-23 | 3070 |  | 二工段立加三轴64V |
| 3072 | 铣面 | 2008-06-23 | 2008-06-25 | 3071 |  | 四轴立卧加 |
| 3073 | 铣面，钻孔 | 2008-06-25 | 2008-06-26 | 3072 |  | 四轴立卧加 |
| 3074 | 打字 | 2008-06-26 | 2008-06-26 | 3073 |  | 毛刺台二 |
| 3075 | 铣面，钻镗孔 | 2008-06-26 | 2008-06-27 | 3074 |  | 四轴立卧加 [101.27%] |
| 3076 | 钻镗孔，铣槽 | 2008-06-27 | 2008-06-29 | 3075 |  | 四轴立卧加 [101.27%] |
| 3077 | 铣面，钻镗孔 | 2008-06-29 | 2008-06-30 | 3076 |  | 五轴立卧加 [100.15%] |
| 3078 | 铣面，钻铰孔 | 2008-06-30 | 2008-07-01 | 3077 |  | 四轴立卧加 [101.27%] |
| 3079 | 铣面，钻镗孔 | 2008-07-01 | 2008-07-03 | 3078 |  | 四轴立卧加 |
| 3080 | 铣面，钻镗孔 | 2008-07-03 | 2008-07-04 | 3079 |  | 五轴立卧加 [101.27%] |

| ID | Task | Start | Finish | Predecessors | Resources |
| --- | --- | --- | --- | --- | --- |
| 3081 | 镗孔 | 2008-07-04 | 2008-07-06 | 3080 | 数控车 |
| 3082 | 镗孔 | 2008-07-06 | 2008-07-07 | 3081 | 数控车 |
| 3083 | 镗孔，车螺纹 | 2008-07-07 | 2008-07-08 | 3082 | 数控车 |
| 3084 | 铣面钻镗孔 | 2008-07-08 | 2008-07-10 | 3083 | 五轴立卧加 |
| 3085 | 铣面，钻镗孔 | 2008-07-10 | 2008-07-13 | 3084 | 四轴立卧加 |
| 3086 | 铣面，钻镗孔 | 2008-07-13 | 2008-07-16 | 3085 | 五轴立卧加 |
| 3087 | 镗孔，切槽 | 2008-07-16 | 2008-07-17 | 3086 | 数控车 |
| 3088 | 镗孔，车螺纹 | 2008-07-17 | 2008-07-19 | 3087 | 数控车 |
| 3089 | 去毛刺抛光打字 | 2008-07-19 | 2008-07-20 | 3088 | 毛刺台二 |
| 3090 | 清洗 | 2008-07-20 | 2008-07-21 | 3089 | 毛刺台二 |
| 3091 | 攻螺纹 | 2008-07-21 | 2008-07-22 | 3090 | 毛刺台二 |
| 3092 | 铣型面 | 2008-07-22 | 2008-07-25 | 3091 | 二工段立加三轴64V |
| 3093 | 铣型面 | 2008-07-25 | 2008-07-29 | 3092 | 四轴立卧加 |
| 3094 | 铣面，钻镗孔 | 2008-07-29 | 2008-08-01 | 3093 | 五轴立卧加 |
| 3095 | 铣面，钻镗孔 | 2008-08-01 | 2008-08-04 | 3094 | 五轴立卧加 |
| 3096 | 铣面，钻镗孔 | 2008-08-04 | 2008-08-07 | 3095 | 五轴立卧加 |
| 3097 | 去毛刺抛光 | 2008-08-07 | 2008-08-07 | 3096 | 毛刺台二 |
| 3098 | 清洗 | 2008-08-07 | 2008-08-08 | 3097 | 毛刺台二 |
| 3099 | 镗孔 | 2008-08-08 | 2008-08-10 | 3098 | 数控车 |
| 3100 | 镗孔 | 2008-08-10 | 2008-08-11 | 3099 | 数控车 |
| 3101 | 镗孔 | 2008-08-11 | 2008-08-12 | 3100 | 数控车 |
| 3102 | 镗孔 | 2008-08-12 | 2008-08-14 | 3101 | 数控车 |
| 3103 | 车外圆，切槽 | 2008-08-14 | 2008-08-15 | 3102 | 数控车 |
| 3104 | 铣面，槽钻孔 | 2008-08-15 | 2008-08-17 | 3103 | 四轴立卧加 |
| 3105 | 去毛刺抛光 | 2008-08-25 | 2008-08-26 | 3104 | 毛刺台一 |
| 3106 | 清洗 | 2008-08-26 | 2008-08-26 | 3105 | 毛刺台一 |
| 3107 | 攻螺纹 | 2008-08-26 | 2008-08-26 | 3106 | 立式钻床 [99.41%] |
| 3108 | 攻螺纹 | 2008-08-26 | 2008-08-26 | 3107 | 立式钻床 |
| 3109 | 攻螺纹 | 2008-08-26 | 2008-08-27 | 3108 | 立式钻床 |
| 3110 | 去毛刺 | 2008-08-27 | 2008-08-28 | 3109 | 毛刺台二 |
| 3111 | 去毛刺 | 2008-08-28 | 2008-08-29 | 3110 | 毛刺台二 |
| 3112 | 清洗 | 2008-08-29 | 2008-08-29 | 3111 | 毛刺台二 |
| 3113 | 检验 | 2008-08-30 | 2008-08-31 | 3112 | 检验 |
| 3114 | 划面 | 2008-08-31 | 2008-08-31 | 3113 | 立式钻床 [100.16%] |
| 3115 | 镗孔 | 2008-08-31 | 2008-09-01 | 3114 | 二工段立加三轴64V |
| 3116 | 去毛刺 | 2008-09-01 | 2008-09-01 | 3115 | 毛刺台二 |
| 3117 | 清洗 | 2008-09-01 | 2008-09-02 | 3116 | 毛刺台二 |
| 3118 | 强度试验 | 2008-09-02 | 2008-09-02 | 3117 | 试验间 |
| 3119 | 强度试验 | 2008-09-02 | 2008-09-03 | 3118 | 试验间 |
| 3120 | 气密试验 | 2008-09-03 | 2008-09-03 | 3119 | 试验间 |
| 3121 | 冲洗 | 2008-09-03 | 2008-09-03 | 3120 | 试验间 |
| 3122 | 检验 | 2008-09-04 | 2008-09-04 | 3121 | 检验 |
| 3123 | 镗孔 | 2008-09-07 | 2008-09-08 | 3122 | 四轴卧加 |
| 3124 | 镗孔 | 2008-09-08 | 2008-09-09 | 3123 | 二工段立加三轴64V |
| 3125 | 研孔 | 2008-09-09 | 2008-09-09 | 3124 | 研磨台 |
| 3126 | 浸泡 | 2008-09-09 | 2008-09-09 | 3125 | 试验间 |
| 3127 | 超声波清洗 | 2008-09-09 | 2008-09-09 | 3126 | 试验间 |
| 3128 | 攻螺纹 | 2008-09-09 | 2008-09-10 | 3127 | 立式钻床 |
| 3129 | 铰锥度孔 | 2008-09-10 | 2008-09-10 | 3128 | 立式钻床 [99.88%] |
| 3130 | 铰锥度孔 | 2008-09-10 | 2008-09-10 | 3129 | 立式钻床 |
| 3131 | 铰锥度孔 | 2008-09-10 | 2008-09-11 | 3130 | 立式钻床 |
| 3132 | 去毛刺 | 2008-09-11 | 2008-09-12 | 3131 | 毛刺台二 |
| 3133 | 清洗 | 2008-09-12 | 2008-09-12 | 3132 | 毛刺台二 |
| 3134 | 检验 | 2008-09-13 | 2008-09-14 | 3133 | 检验 |
| 3135 | 冲洗 | 2008-09-14 | 2008-09-15 | 3134 | 试验间 |
| 3136 | 检验 | 2008-09-15 | 2008-09-16 | 3135 | 检验 |
| 3137 | 导向器壳体 | 2008-06-14 | 2008-11-04 |  |  |
| 3138 | 铣面，钻镗孔 | 2008-06-14 | 2008-06-18 |  | 四轴立卧加 |
| 3139 | 铣面，钻镗孔 | 2008-06-18 | 2008-06-21 | 3138 | 二工段立加三轴64V |
| 3140 | 钻镗孔 | 2008-06-21 | 2008-06-24 | 3139 | 二工段立加三轴64V |
| 3141 | 铣面，钻镗孔 | 2008-06-24 | 2008-06-28 | 3140 | 四轴立卧加 |
| 3142 | 铣型面 | 2008-06-28 | 2008-07-02 | 3141 | 二工段立加三轴64V |
| 3143 | 去毛刺 | 2008-07-03 | 2008-07-03 | 3142 | 毛刺台二 |
| 3144 | 铣面，钻镗孔 | 2008-07-05 | 2008-07-08 | 3143 | 二工段立加三轴64V |
| 3145 | 铣面 | 2008-07-08 | 2008-07-11 | 3144 | 四轴立卧加 |
| 3146 | 铣面，钻孔 | 2008-07-11 | 2008-07-12 | 3145 | 四轴立卧加 |
| 3147 | 打字 | 2008-07-13 | 2008-07-13 | 3146 | 毛刺台二 |
| 3148 | 铣面，钻镗孔 | 2008-07-13 | 2008-07-15 | 3147 | 四轴立卧加 |
| 3149 | 钻镗孔，铣槽 | 2008-07-15 | 2008-07-16 | 3148 | 四轴立卧加 |
| 3150 | 铣面，钻镗孔 | 2008-07-16 | 2008-07-17 | 3149 | 五轴立卧加 |

| ID | Task | Start | Finish | Predecessors | Resources |
| --- | --- | --- | --- | --- | --- |
| 3151 | 铣面，钻铰孔 | 2008-07-17 | 2008-07-19 | 3150 | 四轴立卧加 |
| 3152 | 铣面，钻镗孔 | 2008-07-19 | 2008-07-23 | 3151 | 四轴立卧加 |
| 3153 | 铣面，钻镗孔 | 2008-07-23 | 2008-07-24 | 3152 | 五轴立卧加 |
| 3154 | 镗孔 | 2008-07-24 | 2008-07-26 | 3153 | 数控车 |
| 3155 | 镗孔 | 2008-07-26 | 2008-07-29 | 3154 | 数控车 |
| 3156 | 镗孔，车螺纹 | 2008-07-29 | 2008-07-30 | 3155 | 数控车 |
| 3157 | 铣面钻镗孔 | 2008-07-30 | 2008-08-04 | 3156 | 五轴立卧加 |
| 3158 | 铣面，钻镗孔 | 2008-08-04 | 2008-08-07 | 3157 | 四轴立卧加 |
| 3159 | 铣面，钻镗孔 | 2008-08-07 | 2008-08-12 | 3158 | 五轴立卧加 |
| 3160 | 镗孔，切槽 | 2008-08-12 | 2008-08-15 | 3159 | 数控车 |
| 3161 | 镗孔，车螺纹 | 2008-08-15 | 2008-08-17 | 3160 | 数控车 |
| 3162 | 去毛刺抛光打字 | 2008-08-18 | 2008-08-18 | 3161 | 毛刺台二 |
| 3163 | 清洗 | 2008-08-18 | 2008-08-19 | 3162 | 毛刺台二 |
| 3164 | 攻螺纹 | 2008-08-19 | 2008-08-19 | 3163 | 毛刺台二 |
| 3165 | 铣型面 | 2008-08-19 | 2008-08-26 | 3164 | 二工段立加三轴64V |
| 3166 | 铣型面 | 2008-08-26 | 2008-09-02 | 3165 | 四轴立卧加 |
| 3167 | 铣面，钻镗孔 | 2008-09-02 | 2008-09-06 | 3166 | 五轴立卧加 |
| 3168 | 铣面，钻镗孔 | 2008-09-06 | 2008-09-11 | 3167 | 五轴立卧加 |
| 3169 | 铣面，钻镗孔 | 2008-09-11 | 2008-09-16 | 3168 | 五轴立卧加 |
| 3170 | 去毛刺抛光 | 2008-09-16 | 2008-09-16 | 3169 | 毛刺台二 |
| 3171 | 清洗 | 2008-09-16 | 2008-09-17 | 3170 | 毛刺台二 |
| 3172 | 镗孔 | 2008-09-17 | 2008-09-19 | 3171 | 数控车 |
| 3173 | 镗孔 | 2008-09-19 | 2008-09-21 | 3172 | 数控车 |
| 3174 | 镗孔 | 2008-09-21 | 2008-09-22 | 3173 | 数控车 |
| 3175 | 镗孔 | 2008-09-22 | 2008-09-25 | 3174 | 数控车 |
| 3176 | 车外圆，切槽 | 2008-09-25 | 2008-09-27 | 3175 | 数控车 |
| 3177 | 铣面，槽钻孔 | 2008-09-27 | 2008-09-30 | 3176 | 四轴立卧加 |
| 3178 | 去毛刺抛光 | 2008-10-08 | 2008-10-08 | 3177 | 毛刺台一 |
| 3179 | 清洗 | 2008-10-08 | 2008-10-09 | 3178 | 毛刺台一 |
| 3180 | 攻螺纹 | 2008-10-09 | 2008-10-09 | 3179 | 立式钻床 |
| 3181 | 攻螺纹 | 2008-10-09 | 2008-10-09 | 3180 | 立式钻床 |
| 3182 | 攻螺纹 | 2008-10-09 | 2008-10-11 | 3181 | 立式钻床 |
| 3183 | 去毛刺 | 2008-10-11 | 2008-10-12 | 3182 | 毛刺台二 |
| 3184 | 去毛刺 | 2008-10-12 | 2008-10-13 | 3183 | 毛刺台二 |
| 3185 | 清洗 | 2008-10-13 | 2008-10-13 | 3184 | 毛刺台二 |
| 3186 | 检验 | 2008-10-14 | 2008-10-14 | 3185 | 检验 |
| 3187 | 划面 | 2008-10-15 | 2008-10-15 | 3186 | 立式钻床 |
| 3188 | 镗孔 | 2008-10-15 | 2008-10-16 | 3187 | 二工段立加三轴64V |
| 3189 | 去毛刺 | 2008-10-16 | 2008-10-16 | 3188 | 毛刺台二 |
| 3190 | 清洗 | 2008-10-16 | 2008-10-17 | 3189 | 毛刺台二 |
| 3191 | 强度试验 | 2008-10-17 | 2008-10-17 | 3190 | 试验间 |
| 3192 | 强度试验 | 2008-10-17 | 2008-10-18 | 3191 | 试验间 |
| 3193 | 气密试验 | 2008-10-18 | 2008-10-19 | 3192 | 试验间 |
| 3194 | 冲洗 | 2008-10-19 | 2008-10-20 | 3193 | 试验间 |
| 3195 | 检验 | 2008-10-20 | 2008-10-20 | 3194 | 检验 |
| 3196 | 镗孔 | 2008-10-23 | 2008-10-24 | 3195 | 四轴卧加 |
| 3197 | 镗孔 | 2008-10-24 | 2008-10-26 | 3196 | 二工段立加三轴64V |
| 3198 | 研孔 | 2008-10-26 | 2008-10-27 | 3197 | 研磨台 |
| 3199 | 浸泡 | 2008-10-27 | 2008-10-27 | 3198 | 试验间 |
| 3200 | 超声波清洗 | 2008-10-27 | 2008-10-27 | 3199 | 试验间 |
| 3201 | 攻螺纹 | 2008-10-27 | 2008-10-28 | 3200 | 立式钻床 |
| 3202 | 铰锥度孔 | 2008-10-28 | 2008-10-29 | 3201 | 立式钻床 |
| 3203 | 铰锥度孔 | 2008-10-29 | 2008-10-29 | 3202 | 立式钻床 |
| 3204 | 铰锥度孔 | 2008-10-29 | 2008-10-31 | 3203 | 立式钻床 |
| 3205 | 去毛刺 | 2008-10-31 | 2008-10-31 | 3204 | 毛刺台二 |
| 3206 | 清洗 | 2008-10-31 | 2008-11-01 | 3205 | 毛刺台二 |
| 3207 | 检验 | 2008-11-02 | 2008-11-03 | 3206 | 检验 |
| 3208 | 冲洗 | 2008-11-03 | 2008-11-03 | 3207 | 试验间 |
| 3209 | 检验 | 2008-11-04 | 2008-11-04 | 3208 | 检验 |
| 3210 | 导向器壳体 | 2008-06-14 | 2008-11-04 |  |  |
| 3211 | 铣面，钻镗孔 | 2008-06-14 | 2008-06-18 |  | 四轴立卧加 |
| 3212 | 铣面，钻镗孔 | 2008-06-18 | 2008-06-21 | 3211 | 二工段立加三轴64V |
| 3213 | 钻镗孔 | 2008-06-21 | 2008-06-24 | 3212 | 二工段立加三轴64V |
| 3214 | 铣面，钻镗孔 | 2008-06-24 | 2008-06-28 | 3213 | 四轴立卧加 |
| 3215 | 铣型面 | 2008-06-28 | 2008-07-02 | 3214 | 二工段立加三轴64V |
| 3216 | 去毛刺 | 2008-07-03 | 2008-07-03 | 3215 | 毛刺台二 |
| 3217 | 铣面，钻镗孔 | 2008-07-05 | 2008-07-08 | 3216 | 二工段立加三轴64V |
| 3218 | 铣面 | 2008-07-08 | 2008-07-11 | 3217 | 四轴立卧加 |
| 3219 | 铣面，钻孔 | 2008-07-11 | 2008-07-12 | 3218 | 四轴立卧加 |
| 3220 | 打字 | 2008-07-13 | 2008-07-13 | 3219 | 毛刺台二 |

| ID | Task | Start | Finish | Predecessors | Complete | Resources |
| --- | --- | --- | --- | --- | --- | --- |
| 3221 | 铣面，钻镗孔 | 2008-07-13 | 2008-07-15 | 3220 |  | 四轴立卧加 |
| 3222 | 钻镗孔，铣槽 | 2008-07-15 | 2008-07-16 | 3221 |  | 四轴立卧加 |
| 3223 | 铣面，钻镗孔 | 2008-07-16 | 2008-07-17 | 3222 |  | 五轴立卧加 |
| 3224 | 铣面，钻铰孔 | 2008-07-17 | 2008-07-19 | 3223 |  | 四轴立卧加 |
| 3225 | 铣面，钻镗孔 | 2008-07-19 | 2008-07-23 | 3224 |  | 四轴立卧加 |
| 3226 | 铣面，钻镗孔 | 2008-07-23 | 2008-07-24 | 3225 |  | 五轴立卧加 |
| 3227 | 镗孔 | 2008-07-24 | 2008-07-26 | 3226 |  | 数控车 |
| 3228 | 镗孔 | 2008-07-26 | 2008-07-29 | 3227 |  | 数控车 |
| 3229 | 镗孔，车螺纹 | 2008-07-29 | 2008-07-30 | 3228 |  | 数控车 |
| 3230 | 铣面钻镗孔 | 2008-07-30 | 2008-08-04 | 3229 |  | 五轴立卧加 |
| 3231 | 铣面，钻镗孔 | 2008-08-04 | 2008-08-07 | 3230 |  | 四轴立卧加 |
| 3232 | 铣面，钻镗孔 | 2008-08-07 | 2008-08-12 | 3231 |  | 五轴立卧加 |
| 3233 | 镗孔，切槽 | 2008-08-12 | 2008-08-15 | 3232 |  | 数控车 |
| 3234 | 镗孔，车螺纹 | 2008-08-15 | 2008-08-17 | 3233 |  | 数控车 |
| 3235 | 去毛刺抛光打字 | 2008-08-18 | 2008-08-18 | 3234 |  | 毛刺台二 |
| 3236 | 清洗 | 2008-08-18 | 2008-08-19 | 3235 |  | 毛刺台二 |
| 3237 | 攻螺纹 | 2008-08-19 | 2008-08-19 | 3236 |  | 毛刺台二 |
| 3238 | 铣型面 | 2008-08-19 | 2008-08-26 | 3237 |  | 二工段立加三轴64V |
| 3239 | 铣型面 | 2008-08-26 | 2008-09-02 | 3238 |  | 四轴立卧加 |
| 3240 | 铣面，钻镗孔 | 2008-09-02 | 2008-09-06 | 3239 |  | 五轴立卧加 |
| 3241 | 铣面，钻镗孔 | 2008-09-06 | 2008-09-11 | 3240 |  | 五轴立卧加 |
| 3242 | 铣面，钻镗孔 | 2008-09-11 | 2008-09-16 | 3241 |  | 五轴立卧加 |
| 3243 | 去毛刺抛光 | 2008-09-16 | 2008-09-16 | 3242 |  | 毛刺台二 |
| 3244 | 清洗 | 2008-09-16 | 2008-09-17 | 3243 |  | 毛刺台二 |
| 3245 | 镗孔 | 2008-09-17 | 2008-09-19 | 3244 |  | 数控车 |
| 3246 | 镗孔 | 2008-09-19 | 2008-09-21 | 3245 |  | 数控车 |
| 3247 | 镗孔 | 2008-09-21 | 2008-09-22 | 3246 |  | 数控车 |
| 3248 | 镗孔 | 2008-09-22 | 2008-09-25 | 3247 |  | 数控车 |
| 3249 | 车外圆，切槽 | 2008-09-25 | 2008-09-27 | 3248 |  | 数控车 |
| 3250 | 铣面，槽钻孔 | 2008-09-27 | 2008-09-30 | 3249 |  | 四轴立卧加 |
| 3251 | 去毛刺抛光 | 2008-10-08 | 2008-10-08 | 3250 |  | 毛刺台一 |
| 3252 | 清洗 | 2008-10-08 | 2008-10-09 | 3251 |  | 毛刺台一 |
| 3253 | 攻螺纹 | 2008-10-09 | 2008-10-09 | 3252 |  | 立式钻床 |
| 3254 | 攻螺纹 | 2008-10-09 | 2008-10-09 | 3253 |  | 立式钻床 |
| 3255 | 攻螺纹 | 2008-10-09 | 2008-10-11 | 3254 |  | 立式钻床 |
| 3256 | 去毛刺 | 2008-10-11 | 2008-10-12 | 3255 |  | 毛刺台二 |
| 3257 | 去毛刺 | 2008-10-12 | 2008-10-13 | 3256 |  | 毛刺台二 |
| 3258 | 清洗 | 2008-10-13 | 2008-10-13 | 3257 |  | 毛刺台二 |
| 3259 | 检验 | 2008-10-14 | 2008-10-14 | 3258 |  | 检验 |
| 3260 | 划面 | 2008-10-15 | 2008-10-15 | 3259 |  | 立式钻床 |
| 3261 | 镗孔 | 2008-10-15 | 2008-10-16 | 3260 |  | 二工段立加三轴64V |
| 3262 | 去毛刺 | 2008-10-16 | 2008-10-16 | 3261 |  | 毛刺台二 |
| 3263 | 清洗 | 2008-10-16 | 2008-10-17 | 3262 |  | 毛刺台二 |
| 3264 | 强度试验 | 2008-10-17 | 2008-10-17 | 3263 |  | 试验间 |
| 3265 | 强度试验 | 2008-10-17 | 2008-10-18 | 3264 |  | 试验间 |
| 3266 | 气密试验 | 2008-10-18 | 2008-10-19 | 3265 |  | 试验间 |
| 3267 | 冲洗 | 2008-10-19 | 2008-10-20 | 3266 |  | 试验间 |
| 3268 | 检验 | 2008-10-20 | 2008-10-20 | 3267 |  | 检验 |
| 3269 | 镗孔 | 2008-10-23 | 2008-10-24 | 3268 |  | 四轴卧加 |
| 3270 | 镗孔 | 2008-10-24 | 2008-10-26 | 3269 |  | 二工段立加三轴64V |
| 3271 | 研孔 | 2008-10-26 | 2008-10-27 | 3270 |  | 研磨台 |
| 3272 | 浸泡 | 2008-10-27 | 2008-10-27 | 3271 |  | 试验间 |
| 3273 | 超声波清洗 | 2008-10-27 | 2008-10-27 | 3272 |  | 试验间 |
| 3274 | 攻螺纹 | 2008-10-27 | 2008-10-28 | 3273 |  | 立式钻床 |
| 3275 | 铰锥度孔 | 2008-10-28 | 2008-10-29 | 3274 |  | 立式钻床 |
| 3276 | 铰锥度孔 | 2008-10-29 | 2008-10-29 | 3275 |  | 立式钻床 |
| 3277 | 铰锥度孔 | 2008-10-29 | 2008-10-31 | 3276 |  | 立式钻床 |
| 3278 | 去毛刺 | 2008-10-31 | 2008-10-31 | 3277 |  | 毛刺台二 |
| 3279 | 清洗 | 2008-10-31 | 2008-11-01 | 3278 |  | 毛刺台二 |
| 3280 | 检验 | 2008-11-02 | 2008-11-03 | 3279 |  | 检验 |
| 3281 | 冲洗 | 2008-11-03 | 2008-11-03 | 3280 |  | 试验间 |
| 3282 | 检验 | 2008-11-04 | 2008-11-04 | 3281 |  | 检验 |
| 3283 | 调节器外壳体 | 2008-04-21 | 2008-07-08 |  |  |  |
| 3284 | 铣面钻孔 | 2008-06-14 | 2008-06-15 |  |  | 五轴立卧加 |
| 3285 | 已完成任务 | 2008-04-21 | 2008-04-21 | 3284 | 100% |  |
| 3286 | 已完成任务 | 2008-04-21 | 2008-04-21 | 3284 | 100% |  |
| 3287 | 已完成任务 | 2008-04-29 | 2008-04-29 | 3284 | 100% |  |
| 3288 | 已完成任务 | 2008-04-29 | 2008-04-29 | 3284 | 100% |  |
| 3289 | 已完成任务 | 2008-04-30 | 2008-04-30 | 3284 | 100% |  |
| 3290 | 已完成任务 | 2008-05-06 | 2008-05-06 | 3284 | 100% |  |

| ID | Task | Start | Finish | Predecessors | Complete | Resources |
| --- | --- | --- | --- | --- | --- | --- |
| 3291 | 已完成任务 | 2008-05-08 | 2008-05-08 | 3284 | 100% |  |
| 3292 | 锪平面 | 2008-06-15 | 2008-06-15 | 3285, 3286, 3287, 3288, 3289, 3290, 3291 |  | 毛刺台二 [100.16%] |
| 3293 | 攻螺纹 | 2008-06-15 | 2008-06-18 | 3285, 3286, 3287, 3288, 3289, 3290, 3292 |  | 毛刺台二 [101.56%] |
| 3294 | 去毛刺 | 2008-06-18 | 2008-06-19 | 3292, 3293 |  | 毛刺台二 |
| 3295 | 超声波清洗 | 2008-06-19 | 2008-06-19 | 3294 |  | 试验间 |
| 3296 | 检验 | 2008-06-20 | 2008-06-20 | 3295 |  | 检验 |
| 3297 | 压力试验 | 2008-06-20 | 2008-06-21 | 3296 |  | 试验间 |
| 3298 | 压力试验 | 2008-06-21 | 2008-06-22 | 3297 |  | 试验间 |
| 3299 | 压力试验 | 2008-06-22 | 2008-06-23 | 3298 |  | 试验间 |
| 3300 | 气密试验 | 2008-06-23 | 2008-06-23 | 3299 |  | 试验间 |
| 3301 | 压力试验 | 2008-06-23 | 2008-06-23 | 3300 |  | 试验间 |
| 3302 | 气密试验 | 2008-06-23 | 2008-06-24 | 3301 |  | 试验间 |
| 3303 | 冲洗 | 2008-06-24 | 2008-06-24 | 3302 |  | 试验间 |
| 3304 | 检验 | 2008-06-25 | 2008-06-25 | 3303 |  | 检验 |
| 3305 | 检验 | 2008-06-29 | 2008-06-30 | 3304 |  | 检验 |
| 3306 | 研平面 | 2008-06-30 | 2008-06-30 | 3305 |  | 研磨台 |
| 3307 | 浸泡 | 2008-06-30 | 2008-06-30 | 3306 |  | 试验工作中心 |
| 3308 | 超声波清洗 | 2008-06-30 | 2008-06-30 | 3307 |  | 试验间 |
| 3309 | 镗孔 | 2008-06-30 | 2008-07-01 | 3308 |  | 二工段立加三轴64V |
| 3310 | 镗孔 | 2008-07-01 | 2008-07-02 | 3309 |  | 五轴立卧加 |
| 3311 | 攻螺纹 | 2008-07-02 | 2008-07-03 | 3310 |  | 毛刺台二 [100.77%] |
| 3312 | 铰锥度孔 | 2008-07-03 | 2008-07-04 | 3311 |  | 毛刺台二 |
| 3313 | 去毛刺 | 2008-07-04 | 2008-07-04 | 3312 |  | 毛刺台二 |
| 3314 | 超声波清洗 | 2008-07-04 | 2008-07-04 | 3313 |  | 试验间 |
| 3315 | 检验 | 2008-07-05 | 2008-07-06 | 3314 |  | 检验 |
| 3316 | 涮洗 | 2008-07-06 | 2008-07-07 | 3315 |  | 试验间 |
| 3317 | 冲洗 | 2008-07-07 | 2008-07-07 | 3316 |  | 试验间 |
| 3318 | 清洗 | 2008-07-07 | 2008-07-07 | 3317 |  | 试验间 |
| 3319 | 检验 | 2008-07-08 | 2008-07-08 | 3318 |  | 检验 |
| 3320 | 调节器外壳体 | 2008-06-14 | 2008-09-09 |  |  |  |
| 3321 | 车内腔槽 | 2008-06-14 | 2008-06-17 |  |  | 数控车 |
| 3322 | 打号 | 2008-06-18 | 2008-06-18 | 3321 |  | 毛刺台一 |
| 3323 | 去毛刺 | 2008-06-18 | 2008-06-19 | 3322 |  | 毛刺台一 |
| 3324 | 清洗 | 2008-06-19 | 2008-06-19 | 3323 |  | 毛刺台一 |
| 3325 | 研平面 | 2008-06-21 | 2008-06-21 | 3324 |  | 研磨台 |
| 3326 | 铣平面镗孔 | 2008-06-21 | 2008-06-23 | 3325 |  | 四轴立卧加 |
| 3327 | 铣平面镗孔 | 2008-06-23 | 2008-06-28 | 3326 |  | 二工段立加三轴64V |
| 3328 | 镗孔切槽 | 2008-06-28 | 2008-06-30 | 3327 |  | 数控车 |
| 3329 | 铣偏心槽 | 2008-06-30 | 2008-06-30 | 3328 |  | 立铣 |
| 3330 | 镗孔切槽 | 2008-06-30 | 2008-07-04 | 3329 |  | 四轴卧加 |
| 3331 | 镗孔切槽 | 2008-07-04 | 2008-07-06 | 3330 |  | 数控车 [100.12%] |
| 3332 | 研平面 | 2008-07-07 | 2008-07-07 | 3331 |  | 研磨台 |
| 3333 | 铣平面钻孔 | 2008-07-07 | 2008-07-10 | 3332 |  | 四轴卧加 |
| 3334 | 钻镗孔 | 2008-07-10 | 2008-07-14 | 3333 |  | 五轴立卧加 |
| 3335 | 铣平面镗孔 | 2008-07-14 | 2008-07-15 | 3334 |  | 四轴卧加 [100.08%] |
| 3336 | 铣平面镗孔 | 2008-07-15 | 2008-07-17 | 3335 |  | 五轴立卧加 |
| 3337 | 切槽镗孔 | 2008-07-17 | 2008-07-19 | 3336 |  | 五轴立卧加 |
| 3338 | 铣平面镗孔 | 2008-07-19 | 2008-07-21 | 3337 |  | 四轴立卧加 [100.29%] |
| 3339 | 钻气孔 | 2008-07-21 | 2008-07-22 | 3338 |  | 立式钻床 |
| 3340 | 去毛刺 | 2008-07-22 | 2008-07-22 | 3339 |  | 毛刺台一 |
| 3341 | 铣面钻孔 | 2008-07-22 | 2008-07-23 | 3340 |  | 五轴立卧加 |
| 3342 | 铣面钻孔 | 2008-07-23 | 2008-07-24 | 3341 |  | 五轴立卧加 [103.7%] |
| 3343 | 铣型面镗孔 | 2008-07-24 | 2008-07-30 | 3342 |  | 二工段立加三轴64V |
| 3344 | 切槽镗孔 | 2008-08-07 | 2008-08-08 | 3343 |  | 数控车 [103.7%] |
| 3345 | 镗孔切槽 | 2008-08-08 | 2008-08-11 | 3344 |  | 数控车 |
| 3346 | 镗孔切槽 | 2008-08-11 | 2008-08-12 | 3345 |  | 数控车 [100.08%] |
| 3347 | 镗孔切槽 | 2008-08-12 | 2008-08-13 | 3346 |  | 数控车 |
| 3348 | 镗孔 | 2008-08-13 | 2008-08-13 | 3347 |  | 二工段立加三轴64V [100.06%] |
| 3349 | 切槽 | 2008-08-13 | 2008-08-14 | 3348 |  | 数控车 |
| 3350 | 铣面 | 2008-08-14 | 2008-08-14 | 3349 |  | 四轴立卧加 |
| 3351 | 锪平面 | 2008-08-14 | 2008-08-15 | 3350 |  | 毛刺台二 |
| 3352 | 攻螺纹 | 2008-08-15 | 2008-08-21 | 3351 |  | 毛刺台二 |
| 3353 | 去毛刺 | 2008-08-21 | 2008-08-21 | 3352 |  | 毛刺台二 |
| 3354 | 超声波清洗 | 2008-08-21 | 2008-08-21 | 3353 |  | 试验间 |
| 3355 | 检验 | 2008-08-22 | 2008-08-22 | 3354 |  | 检验 |
| 3356 | 压力试验 | 2008-08-22 | 2008-08-23 | 3355 |  | 试验间 |
| 3357 | 压力试验 | 2008-08-23 | 2008-08-24 | 3356 |  | 试验间 |
| 3358 | 压力试验 | 2008-08-24 | 2008-08-25 | 3357 |  | 试验间 |
| 3359 | 气密试验 | 2008-08-25 | 2008-08-25 | 3358 |  | 试验间 |
| 3360 | 压力试验 | 2008-08-25 | 2008-08-25 | 3359 |  | 试验间 |

| ID | Task | Start | Finish | Predecessors | Complete | Resources |
| --- | --- | --- | --- | --- | --- | --- |
| 3361 | 气密试验 | 2008-08-25 | 2008-08-26 | 3360 |  | 试验间 |
| 3362 | 冲洗 | 2008-08-26 | 2008-08-26 | 3361 |  | 试验间 |
| 3363 | 检验 | 2008-08-27 | 2008-08-27 | 3362 |  | 检验 |
| 3364 | 检验 | 2008-08-31 | 2008-09-01 | 3363 |  | 检验 |
| 3365 | 研平面 | 2008-09-01 | 2008-09-01 | 3364 |  | 研磨台 |
| 3366 | 浸泡 | 2008-09-01 | 2008-09-01 | 3365 |  | 试验工作中心 |
| 3367 | 超声波清洗 | 2008-09-01 | 2008-09-01 | 3366 |  | 试验间 |
| 3368 | 镗孔 | 2008-09-01 | 2008-09-02 | 3367 |  | 二工段立加三轴64V [133.33%] |
| 3369 | 镗孔 | 2008-09-02 | 2008-09-03 | 3368 |  | 五轴立卧加 |
| 3370 | 攻螺纹 | 2008-09-03 | 2008-09-04 | 3369 |  | 毛刺台二 |
| 3371 | 铰锥度孔 | 2008-09-04 | 2008-09-05 | 3370 |  | 毛刺台二 |
| 3372 | 去毛刺 | 2008-09-05 | 2008-09-05 | 3371 |  | 毛刺台二 |
| 3373 | 超声波清洗 | 2008-09-05 | 2008-09-05 | 3372 |  | 试验间 |
| 3374 | 检验 | 2008-09-06 | 2008-09-07 | 3373 |  | 检验 |
| 3375 | 涮洗 | 2008-09-07 | 2008-09-08 | 3374 |  | 试验间 |
| 3376 | 冲洗 | 2008-09-08 | 2008-09-08 | 3375 |  | 试验间 |
| 3377 | 清洗 | 2008-09-08 | 2008-09-08 | 3376 |  | 试验间 |
| 3378 | 检验 | 2008-09-09 | 2008-09-09 | 3377 |  | 检验 |
| 3379 | 壳体 | 2008-03-31 | 2008-06-16 |  |  |  |
| 3380 | 浸泡 | 2008-06-15 | 2008-06-15 |  |  | 试验工作中心 |
| 3381 | 超声波清洗 | 2008-06-16 | 2008-06-16 | 3380 |  | 试验工作中心 |
| 3382 | 已完成任务 | 2008-03-31 | 2008-03-31 | 3381 | 100% |  |
| 3383 | 清洗 | 2008-06-15 | 2008-06-15 | 3382 |  | 试验间 |
| 3384 | 外观检查 | 2008-06-15 | 2008-06-16 | 3383 |  | 检验 |
| 3385 | 壳体 | 2008-05-28 | 2008-06-18 |  |  |  |
| 3386 | 精镗孔 | 2008-06-14 | 2008-06-15 |  |  | 五轴立卧加 |
| 3387 | 已完成任务 | 2008-05-28 | 2008-05-28 | 3386 | 100% |  |
| 3388 | 检验 | 2008-06-15 | 2008-06-16 | 3387 |  | 检验 |
| 3389 | 浸泡 | 2008-06-16 | 2008-06-16 | 3388 |  | 试验工作中心 |
| 3390 | 超声波清洗 | 2008-06-16 | 2008-06-17 | 3389 |  | 试验工作中心 |
| 3391 | 冲洗 | 2008-06-17 | 2008-06-17 | 3390 |  | 试验工作中心 |
| 3392 | 清洗 | 2008-06-17 | 2008-06-17 | 3391 |  | 试验间 |
| 3393 | 外观检查 | 2008-06-18 | 2008-06-18 | 3392 |  | 检验 |
| 3394 | 壳体 | 2008-06-15 | 2008-06-16 |  |  |  |
| 3395 | 清洗 | 2008-06-15 | 2008-06-15 |  |  | 试验间 |
| 3396 | 外观检查 | 2008-06-15 | 2008-06-16 | 3395 |  | 检验 |
| 3397 | 壳体 | 2008-06-14 | 2008-08-03 |  |  |  |
| 3398 | 铣平面、钻镗孔 | 2008-06-14 | 2008-06-18 |  |  | 五轴立卧加 |
| 3399 | 铣平面、钻镗孔 | 2008-06-18 | 2008-06-20 | 3398 |  | 五轴立卧加 |
| 3400 | 去毛刺、打R、抛光 | 2008-06-21 | 2008-06-21 | 3399 |  | 毛刺台二 |
| 3401 | 铣平面、钻镗孔 | 2008-06-21 | 2008-06-24 | 3400 |  | 五轴立卧加 |
| 3402 | 铣平面、钻镗孔 | 2008-06-24 | 2008-06-25 | 3401 |  | 五轴立卧加 |
| 3403 | 铣平面、钻镗孔 | 2008-06-25 | 2008-06-27 | 3402 |  | 五轴立卧加 |
| 3404 | 镗孔、切槽 | 2008-06-27 | 2008-06-30 | 3403 |  | 三工段车工班 |
| 3405 | 铣槽、钻孔 | 2008-06-30 | 2008-07-02 | 3404 |  | 五轴立卧加 |
| 3406 | 铣平面、钻镗孔 | 2008-07-02 | 2008-07-03 | 3405 |  | 五轴立卧加 |
| 3407 | 铣型腔 | 2008-07-03 | 2008-07-04 | 3406 |  | 二工段立加三轴64V |
| 3408 | 钻孔 | 2008-07-04 | 2008-07-06 | 3407 |  | 五轴立卧加 |
| 3409 | 攻螺纹 | 2008-07-07 | 2008-07-07 | 3408 |  | 钳工台 |
| 3410 | 去毛刺 | 2008-07-07 | 2008-07-08 | 3409 |  | 毛刺台二 |
| 3411 | 清洗 | 2008-07-08 | 2008-07-08 | 3410 |  | 毛刺台二 |
| 3412 | 高压试验 | 2008-07-08 | 2008-07-08 | 3411 |  | 试验工作中心 |
| 3413 | 压力试验 | 2008-07-08 | 2008-07-09 | 3412 |  | 试验工作中心 |
| 3414 | 气密试验 | 2008-07-09 | 2008-07-09 | 3413 |  | 试验工作中心 |
| 3415 | 清洗 | 2008-07-10 | 2008-07-10 | 3414 |  | 毛刺台二 |
| 3416 | 检验 | 2008-07-10 | 2008-07-11 | 3415 |  | 检验 |
| 3417 | 捅油路 | 2008-07-14 | 2008-07-14 | 3416 |  | 钳工台 |
| 3418 | 研磨平面 | 2008-07-14 | 2008-07-14 | 3417 |  | 研磨台 |
| 3419 | 浸泡 | 2008-07-14 | 2008-07-14 | 3418 |  | 试验间 |
| 3420 | 超声波清洗 | 2008-07-14 | 2008-07-14 | 3419 |  | 试验间 |
| 3421 | 精镗孔、倒角 | 2008-07-14 | 2008-07-16 | 3420 |  | 五轴立卧加 |
| 3422 | 镗孔、切槽 | 2008-07-16 | 2008-07-17 | 3421 |  | 数控车 |
| 3423 | 精镗孔 | 2008-07-17 | 2008-07-18 | 3422 |  | 二工段立加三轴64V |
| 3424 | 精镗孔 | 2008-07-18 | 2008-07-19 | 3423 |  | 五轴立卧加 |
| 3425 | 精镗孔、铣型槽 | 2008-07-19 | 2008-07-22 | 3424 |  | 二工段立加三轴64V |
| 3426 | 去毛刺 | 2008-07-23 | 2008-07-23 | 3425 |  | 毛刺台一 |
| 3427 | 研磨平面 | 2008-07-23 | 2008-07-23 | 3426 |  | 研磨台 |
| 3428 | 浸泡 | 2008-07-23 | 2008-07-23 | 3427 |  | 试验间 |
| 3429 | 超声波清洗 | 2008-07-23 | 2008-07-23 | 3428 |  | 试验间 |
| 3430 | 精镗孔、切槽 | 2008-07-23 | 2008-07-25 | 3429 |  | 二工段立加三轴64V |

| ID | Task | Start | Finish | Predecessors | Resources |
| --- | --- | --- | --- | --- | --- |
| 3431 | 攻螺纹 | 2008-07-25 | 2008-07-25 | 3430 | 钳工台 |
| 3432 | 攻螺纹 | 2008-07-25 | 2008-07-26 | 3431 | 钳工台 |
| 3433 | 攻螺纹 | 2008-07-26 | 2008-07-27 | 3432 | 钳工台 |
| 3434 | 钻通气孔 | 2008-07-27 | 2008-07-28 | 3433 | 立式钻床 |
| 3435 | 铰锥孔 | 2008-07-28 | 2008-07-28 | 3434 | 立式钻床 |
| 3436 | 铰锥孔 | 2008-07-28 | 2008-07-28 | 3435 | 立式钻床 |
| 3437 | 铰锥孔 | 2008-07-29 | 2008-07-29 | 3436 | 立式钻床 [99.54%] |
| 3438 | 去毛刺 | 2008-07-29 | 2008-07-29 | 3437 | 毛刺台二 |
| 3439 | 清洗 | 2008-07-29 | 2008-07-30 | 3438 | 毛刺台二 |
| 3440 | 检验 | 2008-07-30 | 2008-07-31 | 3439 | 检验 |
| 3441 | 浸泡 | 2008-07-31 | 2008-07-31 | 3440 | 试验工作中心 |
| 3442 | 超声波清洗 | 2008-07-31 | 2008-08-01 | 3441 | 试验工作中心 |
| 3443 | 冲洗 | 2008-08-01 | 2008-08-01 | 3442 | 试验工作中心 |
| 3444 | 清洗 | 2008-08-01 | 2008-08-01 | 3443 | 试验间 |
| 3445 | 外观检查 | 2008-08-02 | 2008-08-03 | 3444 | 检验 |
| 3446 | 壳体 | 2008-06-14 | 2008-07-31 |  |  |
| 3447 | 铣平面、钻镗孔 | 2008-06-14 | 2008-06-17 |  | 五轴立卧加 |
| 3448 | 铣平面、钻镗孔 | 2008-06-17 | 2008-06-19 | 3447 | 五轴立卧加 |
| 3449 | 去毛刺、打R、抛光 | 2008-06-20 | 2008-06-20 | 3448 | 毛刺台二 |
| 3450 | 铣平面、钻镗孔 | 2008-06-20 | 2008-06-23 | 3449 | 五轴立卧加 |
| 3451 | 铣平面、钻镗孔 | 2008-06-23 | 2008-06-25 | 3450 | 五轴立卧加 |
| 3452 | 铣平面、钻镗孔 | 2008-06-25 | 2008-06-26 | 3451 | 五轴立卧加 |
| 3453 | 镗孔、切槽 | 2008-06-26 | 2008-06-29 | 3452 | 三工段车工班 |
| 3454 | 铣槽、钻孔 | 2008-06-29 | 2008-06-30 | 3453 | 五轴立卧加 |
| 3455 | 铣平面、钻镗孔 | 2008-06-30 | 2008-07-02 | 3454 | 五轴立卧加 |
| 3456 | 铣型腔 | 2008-07-02 | 2008-07-03 | 3455 | 二工段立加三轴64V |
| 3457 | 钻孔 | 2008-07-03 | 2008-07-04 | 3456 | 五轴立卧加 |
| 3458 | 攻螺纹 | 2008-07-04 | 2008-07-04 | 3457 | 钳工台 |
| 3459 | 去毛刺 | 2008-07-04 | 2008-07-05 | 3458 | 毛刺台二 |
| 3460 | 清洗 | 2008-07-05 | 2008-07-06 | 3459 | 毛刺台二 |
| 3461 | 高压试验 | 2008-07-06 | 2008-07-07 | 3460 | 试验工作中心 |
| 3462 | 压力试验 | 2008-07-07 | 2008-07-07 | 3461 | 试验工作中心 |
| 3463 | 气密试验 | 2008-07-07 | 2008-07-07 | 3462 | 试验工作中心 |
| 3464 | 清洗 | 2008-07-08 | 2008-07-08 | 3463 | 毛刺台二 |
| 3465 | 检验 | 2008-07-08 | 2008-07-09 | 3464 | 检验 |
| 3466 | 捅油路 | 2008-07-12 | 2008-07-12 | 3465 | 钳工台 |
| 3467 | 研磨平面 | 2008-07-12 | 2008-07-13 | 3466 | 研磨台 |
| 3468 | 浸泡 | 2008-07-13 | 2008-07-13 | 3467 | 试验间 |
| 3469 | 超声波清洗 | 2008-07-13 | 2008-07-13 | 3468 | 试验间 |
| 3470 | 精镗孔、倒角 | 2008-07-13 | 2008-07-14 | 3469 | 五轴立卧加 |
| 3471 | 镗孔、切槽 | 2008-07-14 | 2008-07-15 | 3470 | 数控车 |
| 3472 | 精镗孔 | 2008-07-15 | 2008-07-16 | 3471 | 二工段立加三轴64V |
| 3473 | 精镗孔 | 2008-07-16 | 2008-07-17 | 3472 | 五轴立卧加 |
| 3474 | 精镗孔、铣型槽 | 2008-07-17 | 2008-07-21 | 3473 | 二工段立加三轴64V |
| 3475 | 去毛刺 | 2008-07-21 | 2008-07-21 | 3474 | 毛刺台一 |
| 3476 | 研磨平面 | 2008-07-21 | 2008-07-21 | 3475 | 研磨台 |
| 3477 | 浸泡 | 2008-07-21 | 2008-07-21 | 3476 | 试验间 |
| 3478 | 超声波清洗 | 2008-07-21 | 2008-07-21 | 3477 | 试验间 |
| 3479 | 精镗孔、切槽 | 2008-07-21 | 2008-07-23 | 3478 | 二工段立加三轴64V |
| 3480 | 攻螺纹 | 2008-07-23 | 2008-07-23 | 3479 | 钳工台 |
| 3481 | 攻螺纹 | 2008-07-23 | 2008-07-24 | 3480 | 钳工台 |
| 3482 | 攻螺纹 | 2008-07-24 | 2008-07-24 | 3481 | 钳工台 |
| 3483 | 钻通气孔 | 2008-07-24 | 2008-07-25 | 3482 | 立式钻床 |
| 3484 | 铰锥孔 | 2008-07-25 | 2008-07-25 | 3483 | 立式钻床 |
| 3485 | 铰锥孔 | 2008-07-25 | 2008-07-26 | 3484 | 立式钻床 |
| 3486 | 铰锥孔 | 2008-07-26 | 2008-07-26 | 3485 | 立式钻床 |
| 3487 | 去毛刺 | 2008-07-26 | 2008-07-27 | 3486 | 毛刺台二 |
| 3488 | 清洗 | 2008-07-27 | 2008-07-28 | 3487 | 毛刺台二 |
| 3489 | 检验 | 2008-07-28 | 2008-07-29 | 3488 | 检验 |
| 3490 | 浸泡 | 2008-07-29 | 2008-07-29 | 3489 | 试验工作中心 |
| 3491 | 超声波清洗 | 2008-07-29 | 2008-07-29 | 3490 | 试验工作中心 |
| 3492 | 冲洗 | 2008-07-29 | 2008-07-30 | 3491 | 试验工作中心 |
| 3493 | 清洗 | 2008-07-30 | 2008-07-30 | 3492 | 试验间 |
| 3494 | 外观检查 | 2008-07-30 | 2008-07-31 | 3493 | 检验 |
| 3495 | 壳体 | 2008-06-14 | 2008-08-07 |  |  |
| 3496 | 铣平面、钻镗孔 | 2008-06-14 | 2008-06-17 |  | 五轴立卧加 |
| 3497 | 铣平面、钻镗孔 | 2008-06-17 | 2008-06-18 | 3496 | 五轴立卧加 |
| 3498 | 铣平面、钻镗孔 | 2008-06-18 | 2008-06-23 | 3497 | 五轴立卧加 |
| 3499 | 铣平面、钻镗孔 | 2008-06-23 | 2008-06-25 | 3498 | 五轴立卧加 |
| 3500 | 去毛刺、打R、抛光 | 2008-06-25 | 2008-06-25 | 3499 | 毛刺台二 |

| ID | Task | Start | Finish | Predecessors | Resources |
| --- | --- | --- | --- | --- | --- |
| 3501 | 铣平面、钻镗孔 | 2008-06-25 | 2008-06-27 | 3500 | 五轴立卧加 |
| 3502 | 铣平面、钻镗孔 | 2008-06-27 | 2008-06-30 | 3501 | 五轴立卧加 |
| 3503 | 铣平面、钻镗孔 | 2008-06-30 | 2008-07-02 | 3502 | 五轴立卧加 |
| 3504 | 镗孔、切槽 | 2008-07-02 | 2008-07-03 | 3503 | 三工段车工班 |
| 3505 | 铣槽、钻孔 | 2008-07-03 | 2008-07-05 | 3504 | 五轴立卧加 |
| 3506 | 铣平面、钻镗孔 | 2008-07-05 | 2008-07-07 | 3505 | 五轴立卧加 |
| 3507 | 铣型腔 | 2008-07-07 | 2008-07-08 | 3506 | 二工段立加三轴64V |
| 3508 | 钻孔 | 2008-07-08 | 2008-07-09 | 3507 | 五轴立卧加 |
| 3509 | 攻螺纹 | 2008-07-10 | 2008-07-10 | 3508 | 钳工台 |
| 3510 | 去毛刺 | 2008-07-10 | 2008-07-11 | 3509 | 毛刺台二 |
| 3511 | 清洗 | 2008-07-11 | 2008-07-11 | 3510 | 毛刺台二 |
| 3512 | 高压试验 | 2008-07-11 | 2008-07-11 | 3511 | 试验工作中心 |
| 3513 | 压力试验 | 2008-07-11 | 2008-07-12 | 3512 | 试验工作中心 |
| 3514 | 气密试验 | 2008-07-12 | 2008-07-13 | 3513 | 试验工作中心 |
| 3515 | 清洗 | 2008-07-13 | 2008-07-14 | 3514 | 毛刺台二 |
| 3516 | 检验 | 2008-07-14 | 2008-07-15 | 3515 | 检验 |
| 3517 | 捅油路 | 2008-07-18 | 2008-07-18 | 3516 | 钳工台 |
| 3518 | 研磨平面 | 2008-07-18 | 2008-07-18 | 3517 | 研磨台 |
| 3519 | 浸泡 | 2008-07-18 | 2008-07-18 | 3518 | 试验间 |
| 3520 | 超声波清洗 | 2008-07-18 | 2008-07-18 | 3519 | 试验间 |
| 3521 | 精镗孔、倒角 | 2008-07-18 | 2008-07-21 | 3520 | 五轴立卧加 |
| 3522 | 镗孔、切槽 | 2008-07-21 | 2008-07-22 | 3521 | 数控车 |
| 3523 | 精镗孔 | 2008-07-22 | 2008-07-23 | 3522 | 二工段立加三轴64V |
| 3524 | 精镗孔 | 2008-07-23 | 2008-07-24 | 3523 | 五轴立卧加 |
| 3525 | 精镗孔、铣型槽 | 2008-07-24 | 2008-07-27 | 3524 | 二工段立加三轴64V |
| 3526 | 去毛刺 | 2008-07-28 | 2008-07-28 | 3525 | 毛刺台一 |
| 3527 | 研磨平面 | 2008-07-28 | 2008-07-28 | 3526 | 研磨台 |
| 3528 | 浸泡 | 2008-07-28 | 2008-07-28 | 3527 | 试验间 |
| 3529 | 超声波清洗 | 2008-07-28 | 2008-07-28 | 3528 | 试验间 |
| 3530 | 精镗孔、切槽 | 2008-07-28 | 2008-07-30 | 3529 | 二工段立加三轴64V |
| 3531 | 攻螺纹 | 2008-07-30 | 2008-07-30 | 3530 | 钳工台 |
| 3532 | 攻螺纹 | 2008-07-30 | 2008-07-31 | 3531 | 钳工台 |
| 3533 | 攻螺纹 | 2008-07-31 | 2008-08-01 | 3532 | 钳工台 |
| 3534 | 钻通气孔 | 2008-08-01 | 2008-08-01 | 3533 | 立式钻床 |
| 3535 | 铰锥孔 | 2008-08-01 | 2008-08-02 | 3534 | 立式钻床 |
| 3536 | 铰锥孔 | 2008-08-02 | 2008-08-02 | 3535 | 立式钻床 |
| 3537 | 铰锥孔 | 2008-08-02 | 2008-08-02 | 3536 | 立式钻床 [99.54%] |
| 3538 | 去毛刺 | 2008-08-02 | 2008-08-03 | 3537 | 毛刺台二 |
| 3539 | 清洗 | 2008-08-03 | 2008-08-04 | 3538 | 毛刺台二 |
| 3540 | 检验 | 2008-08-04 | 2008-08-05 | 3539 | 检验 |
| 3541 | 浸泡 | 2008-08-05 | 2008-08-05 | 3540 | 试验工作中心 |
| 3542 | 超声波清洗 | 2008-08-05 | 2008-08-06 | 3541 | 试验工作中心 |
| 3543 | 冲洗 | 2008-08-06 | 2008-08-06 | 3542 | 试验工作中心 |
| 3544 | 清洗 | 2008-08-06 | 2008-08-06 | 3543 | 试验间 |
| 3545 | 外观检查 | 2008-08-07 | 2008-08-07 | 3544 | 检验 |
| 3546 | 齿轮泵壳体 | 2008-06-14 | 2008-07-30 |  |  |
| 3547 | 铣平面，镗孔 | 2008-06-14 | 2008-06-22 |  | 四轴卧加 |
| 3548 | 铣平面，钻镗孔 | 2008-06-22 | 2008-06-24 | 3547 | 二工段立加三轴64V |
| 3549 | 铣平面,钻镗孔 | 2008-06-24 | 2008-06-27 | 3548 | 五轴立卧加 |
| 3550 | 铣平面，钻镗孔 | 2008-06-27 | 2008-07-01 | 3549 | 五轴立卧加 |
| 3551 | 铣平面,镗孔 | 2008-07-01 | 2008-07-02 | 3550 | 四轴卧加 |
| 3552 | 钻孔 | 2008-07-04 | 2008-07-05 | 3551 | 毛刺台二 |
| 3553 | 钻孔 | 2008-07-05 | 2008-07-05 | 3552 | 毛刺台二 |
| 3554 | 车外圆，镗孔 | 2008-07-05 | 2008-07-07 | 3553 | 数控车 |
| 3555 | 铣槽 钻镗孔 | 2008-07-07 | 2008-07-08 | 3554 | 二工段立加三轴64V |
| 3556 | 镗孔 | 2008-07-08 | 2008-07-10 | 3555 | 二工段立加三轴64V |
| 3557 | 铣槽 | 2008-07-10 | 2008-07-11 | 3556 | 二工段立加三轴64V |
| 3558 | 攻螺纹 | 2008-07-11 | 2008-07-12 | 3557 | 毛刺台二 |
| 3559 | 去毛刺 | 2008-07-12 | 2008-07-13 | 3558 | 毛刺台二 |
| 3560 | 清洗 | 2008-07-13 | 2008-07-14 | 3559 | 毛刺台二 |
| 3561 | 电化学去毛刺 | 2008-07-14 | 2008-07-14 | 3560 | 毛刺台二 |
| 3562 | 清洗 | 2008-07-14 | 2008-07-15 | 3561 | 毛刺台二 |
| 3563 | 超声波冲洗 | 2008-07-15 | 2008-07-15 | 3562 | 试验间 |
| 3564 | 清洗 | 2008-07-16 | 2008-07-16 | 3563 | 毛刺台二 |
| 3565 | 冲洗 | 2008-07-16 | 2008-07-16 | 3564 | 试验间 |
| 3566 | 检验 | 2008-07-17 | 2008-07-17 | 3565 | 检验 |
| 3567 | 捅油路 | 2008-07-21 | 2008-07-21 | 3566 | 毛刺台二 |
| 3568 | 镗孔，铣槽 | 2008-07-21 | 2008-07-22 | 3567 | 二工段立加三轴64V |
| 3569 | 清根 | 2008-07-22 | 2008-07-22 | 3568 | 坐标镗 |
| 3570 | 车外圆，镗孔 | 2008-07-22 | 2008-07-23 | 3569 | 数控车 |

| ID | Task | Start | Finish | Predecessors | Complete | Resources |
| --- | --- | --- | --- | --- | --- | --- |
| 3571 | 攻螺纹 | 2008-07-24 | 2008-07-24 | 3570 |  | 毛刺台二 |
| 3572 | 去毛刺 | 2008-07-24 | 2008-07-25 | 3571 |  | 毛刺台二 |
| 3573 | 清洗 | 2008-07-25 | 2008-07-25 | 3572 |  | 毛刺台一 |
| 3574 | 检验 | 2008-07-26 | 2008-07-27 | 3573 |  | 检验 |
| 3575 | 密封性试验 | 2008-07-27 | 2008-07-28 | 3574 |  | 试验间 |
| 3576 | 高压试验 | 2008-07-28 | 2008-07-28 | 3575 |  | 试验间 |
| 3577 | 浸泡 | 2008-07-28 | 2008-07-28 | 3576 |  | 试验间 |
| 3578 | 超声波冲洗 | 2008-07-28 | 2008-07-29 | 3577 |  | 试验间 |
| 3579 | 冲洗 | 2008-07-29 | 2008-07-29 | 3578 |  | 试验间 |
| 3580 | 检验 | 2008-07-30 | 2008-07-30 | 3579 |  | 检验 |
| 3581 | 加速壳体 | 2008-06-15 | 2008-06-25 |  |  |  |
| 3582 | 钻孔 | 2008-06-15 | 2008-06-15 |  |  | 毛刺台二 |
| 3583 | 去毛刺 | 2008-06-15 | 2008-06-16 | 3582 |  | 毛刺台二 |
| 3584 | 清洗 | 2008-06-16 | 2008-06-16 | 3583 |  | 毛刺台二 |
| 3585 | 压力试验 | 2008-06-16 | 2008-06-16 | 3584 |  | 试验间 |
| 3586 | 清洗 | 2008-06-16 | 2008-06-17 | 3585 |  | 试验间 |
| 3587 | 检验 | 2008-06-17 | 2008-06-18 | 3586 |  | 检验 |
| 3588 | 磨平面 | 2008-06-21 | 2008-06-21 | 3587 |  | 平面磨 [100.2%] |
| 3589 | 攻螺纹 | 2008-06-21 | 2008-06-22 | 3588 |  | 毛刺台二 |
| 3590 | 研磨平面 | 2008-06-22 | 2008-06-23 | 3589 |  | 毛刺台二 |
| 3591 | 浸泡 | 2008-06-23 | 2008-06-23 | 3590 |  | 试验工作中心 |
| 3592 | 超声波清洗 | 2008-06-23 | 2008-06-23 | 3591 |  | 试验工作中心 |
| 3593 | 抛光 | 2008-06-23 | 2008-06-23 | 3592 |  | 毛刺台二 |
| 3594 | 清洗 | 2008-06-23 | 2008-06-23 | 3593 |  | 试验间 |
| 3595 | 冲洗 | 2008-06-23 | 2008-06-24 | 3594 |  | 试验间 |
| 3596 | 检验 | 2008-06-24 | 2008-06-25 | 3595 |  | 检验 |
| 3597 | 壳体组件工艺组件 | 2008-04-24 | 2008-06-16 |  |  |  |
| 3598 | 检验 | 2008-06-15 | 2008-06-16 |  |  | 检验 |
| 3599 | 包装 | 2008-04-24 | 2008-04-24 | 3598 | 100% |  |
| 3600 | 壳体组件工艺组件 | 2008-06-15 | 2008-06-21 |  |  |  |
| 3601 | 配套 | 2008-06-15 | 2008-06-15 |  |  | 毛刺研磨 |
| 3602 | 冲洗 | 2008-06-15 | 2008-06-16 | 3601 |  | 试验间 |
| 3603 | 装配堵头 | 2008-06-16 | 2008-06-16 | 3602 |  | 三工段钳工 |
| 3604 | 检验 | 2008-06-17 | 2008-06-17 | 3603 |  | 检验 |
| 3605 | 气密性试验 | 2008-06-17 | 2008-06-18 | 3604 |  | 试验间 |
| 3606 | 强度试验 | 2008-06-18 | 2008-06-18 | 3605 |  | 试验间 |
| 3607 | 超声波清洗 | 2008-06-18 | 2008-06-18 | 3606 |  | 试验间 |
| 3608 | 冲洗 | 2008-06-18 | 2008-06-19 | 3607 |  | 试验间 |
| 3609 | 检验 | 2008-06-19 | 2008-06-20 | 3608 |  | 检验 |
| 3610 | 包装 | 2008-06-20 | 2008-06-21 | 3609 |  | 毛刺研磨 |
| 3611 | 壳体组件工艺组件 | 2008-06-15 | 2008-06-21 |  |  |  |
| 3612 | 配套 | 2008-06-15 | 2008-06-15 |  |  | 毛刺研磨 |
| 3613 | 冲洗 | 2008-06-15 | 2008-06-16 | 3612 |  | 试验间 |
| 3614 | 装配堵头 | 2008-06-16 | 2008-06-16 | 3613 |  | 三工段钳工 |
| 3615 | 检验 | 2008-06-17 | 2008-06-17 | 3614 |  | 检验 |
| 3616 | 气密性试验 | 2008-06-17 | 2008-06-18 | 3615 |  | 试验间 |
| 3617 | 强度试验 | 2008-06-18 | 2008-06-18 | 3616 |  | 试验间 |
| 3618 | 超声波清洗 | 2008-06-18 | 2008-06-18 | 3617 |  | 试验间 |
| 3619 | 冲洗 | 2008-06-18 | 2008-06-19 | 3618 |  | 试验间 |
| 3620 | 检验 | 2008-06-19 | 2008-06-20 | 3619 |  | 检验 |
| 3621 | 包装 | 2008-06-20 | 2008-06-21 | 3620 |  | 毛刺研磨 |
| 3622 | 壳体组件工艺组件 | 2008-06-15 | 2008-06-21 |  |  |  |
| 3623 | 配套 | 2008-06-15 | 2008-06-15 |  |  | 毛刺研磨 |
| 3624 | 冲洗 | 2008-06-15 | 2008-06-16 | 3623 |  | 试验间 |
| 3625 | 装配堵头 | 2008-06-16 | 2008-06-16 | 3624 |  | 三工段钳工 |
| 3626 | 检验 | 2008-06-17 | 2008-06-17 | 3625 |  | 检验 |
| 3627 | 气密性试验 | 2008-06-17 | 2008-06-18 | 3626 |  | 试验间 |
| 3628 | 强度试验 | 2008-06-18 | 2008-06-18 | 3627 |  | 试验间 |
| 3629 | 超声波清洗 | 2008-06-18 | 2008-06-18 | 3628 |  | 试验间 |
| 3630 | 冲洗 | 2008-06-18 | 2008-06-19 | 3629 |  | 试验间 |
| 3631 | 检验 | 2008-06-19 | 2008-06-20 | 3630 |  | 检验 |
| 3632 | 包装 | 2008-06-20 | 2008-06-21 | 3631 |  | 毛刺研磨 |
| 3633 | 壳体组件工艺组件 | 2008-06-15 | 2008-06-21 |  |  |  |
| 3634 | 配套 | 2008-06-15 | 2008-06-15 |  |  | 毛刺研磨 |
| 3635 | 冲洗 | 2008-06-15 | 2008-06-16 | 3634 |  | 试验间 |
| 3636 | 装配堵头 | 2008-06-16 | 2008-06-16 | 3635 |  | 三工段钳工 |
| 3637 | 检验 | 2008-06-17 | 2008-06-17 | 3636 |  | 检验 |
| 3638 | 气密性试验 | 2008-06-17 | 2008-06-18 | 3637 |  | 试验间 |
| 3639 | 强度试验 | 2008-06-18 | 2008-06-18 | 3638 |  | 试验间 |
| 3640 | 超声波清洗 | 2008-06-18 | 2008-06-18 | 3639 |  | 试验间 |

| ID | Task | Start | Finish | Predecessors | Complete | Resources |
| --- | --- | --- | --- | --- | --- | --- |
| 3641 | 冲洗 | 2008-06-18 | 2008-06-19 | 3640 |  | 试验间 |
| 3642 | 检验 | 2008-06-19 | 2008-06-20 | 3641 |  | 检验 |
| 3643 | 包装 | 2008-06-20 | 2008-06-21 | 3642 |  | 毛刺研磨 |
| 3644 | 壳体组件工艺组件 | 2008-06-15 | 2008-06-21 |  |  |  |
| 3645 | 配套 | 2008-06-15 | 2008-06-15 |  |  | 毛刺研磨 |
| 3646 | 冲洗 | 2008-06-15 | 2008-06-16 | 3645 |  | 试验间 |
| 3647 | 装配堵头 | 2008-06-16 | 2008-06-16 | 3646 |  | 三工段钳工 |
| 3648 | 检验 | 2008-06-17 | 2008-06-17 | 3647 |  | 检验 |
| 3649 | 气密性试验 | 2008-06-17 | 2008-06-18 | 3648 |  | 试验间 |
| 3650 | 强度试验 | 2008-06-18 | 2008-06-18 | 3649 |  | 试验间 |
| 3651 | 超声波清洗 | 2008-06-18 | 2008-06-18 | 3650 |  | 试验间 |
| 3652 | 冲洗 | 2008-06-18 | 2008-06-19 | 3651 |  | 试验间 |
| 3653 | 检验 | 2008-06-19 | 2008-06-20 | 3652 |  | 检验 |
| 3654 | 包装 | 2008-06-20 | 2008-06-21 | 3653 |  | 毛刺研磨 |
| 3655 | 壳体 | 2008-04-17 | 2008-06-16 |  |  |  |
| 3656 | 检验 | 2008-06-15 | 2008-06-16 |  |  | 检验 |
| 3657 | 已完成任务 | 2008-04-21 | 2008-04-21 | 3656 | 100% |  |
| 3658 | 检验 | 2008-06-15 | 2008-06-16 | 3657 |  | 检验 |
| 3659 | 已完成任务 | 2008-04-17 | 2008-04-17 | 3658 | 100% |  |
| 3660 | 检验 | 2008-06-15 | 2008-06-16 | 3659 |  | 检验 |
| 3661 | 包装 | 2008-04-21 | 2008-04-21 | 3660 | 100% |  |
| 3662 | 壳体 | 2008-06-15 | 2008-07-08 |  |  |  |
| 3663 | 攻螺纹 | 2008-06-15 | 2008-06-15 |  |  | 三工段钳工 |
| 3664 | 钻斜孔 | 2008-06-15 | 2008-06-16 | 3663 |  | 三工段钳工 |
| 3665 | 车环槽，外圆 | 2008-06-16 | 2008-06-17 | 3664 |  | 三工段车工班 |
| 3666 | 去毛刺 | 2008-06-18 | 2008-06-18 | 3665 |  | 毛刺研磨 |
| 3667 | 清洗 | 2008-06-18 | 2008-06-19 | 3666 |  | 毛刺研磨 |
| 3668 | 检验 | 2008-06-19 | 2008-06-20 | 3667 |  | 检验 |
| 3669 | 钻孔，攻螺纹 | 2008-06-20 | 2008-06-21 | 3668 |  | 毛刺研磨 |
| 3670 | 铣型面，镗孔，倒角钻孔 | 2008-06-21 | 2008-06-23 | 3669 |  | 导弹单元64V |
| 3671 | 去毛刺 | 2008-06-23 | 2008-06-24 | 3670 |  | 毛刺研磨 |
| 3672 | 铣型面，钻孔 | 2008-06-24 | 2008-06-25 | 3671 |  | 导弹单元64V |
| 3673 | 镗孔 | 2008-06-25 | 2008-06-26 | 3672 |  | 三工段车工班 |
| 3674 | 去毛刺 | 2008-06-26 | 2008-06-26 | 3673 |  | 三工段钳工 |
| 3675 | 扩孔 | 2008-06-26 | 2008-06-26 | 3674 |  | 三工段钳工 |
| 3676 | 清洗 | 2008-06-27 | 2008-06-27 | 3675 |  | 毛刺研磨 |
| 3677 | 检验 | 2008-06-28 | 2008-06-29 | 3676 |  | 检验 |
| 3678 | 冲洗 | 2008-06-29 | 2008-06-30 | 3677 |  | 试验间 |
| 3679 | 检验 | 2008-06-30 | 2008-07-01 | 3678 |  | 检验 |
| 3680 | 铬酸阳极化 | 2008-07-02 | 2008-07-03 | 3679 |  | 外协 |
| 3681 | 检验 | 2008-07-04 | 2008-07-04 | 3680 |  | 检验 |
| 3682 | 研平面 | 2008-07-05 | 2008-07-05 | 3681 |  | 毛刺研磨 |
| 3683 | 清洗 | 2008-07-05 | 2008-07-06 | 3682 |  | 试验间 |
| 3684 | 检验 | 2008-07-07 | 2008-07-07 | 3683 |  | 检验 |
| 3685 | 包装 | 2008-07-08 | 2008-07-08 | 3684 |  | 毛刺研磨 |
| 3686 | 壳体 | 2008-06-15 | 2008-07-08 |  |  |  |
| 3687 | 攻螺纹 | 2008-06-15 | 2008-06-15 |  |  | 三工段钳工 |
| 3688 | 钻斜孔 | 2008-06-15 | 2008-06-16 | 3687 |  | 三工段钳工 |
| 3689 | 车环槽，外圆 | 2008-06-16 | 2008-06-18 | 3688 |  | 三工段车工班 |
| 3690 | 去毛刺 | 2008-06-18 | 2008-06-18 | 3689 |  | 毛刺研磨 |
| 3691 | 清洗 | 2008-06-18 | 2008-06-19 | 3690 |  | 毛刺研磨 |
| 3692 | 检验 | 2008-06-20 | 2008-06-20 | 3691 |  | 检验 |
| 3693 | 钻孔，攻螺纹 | 2008-06-21 | 2008-06-21 | 3692 |  | 毛刺研磨 |
| 3694 | 铣型面，镗孔，倒角钻孔 | 2008-06-21 | 2008-06-23 | 3693 |  | 导弹单元64V |
| 3695 | 去毛刺 | 2008-06-23 | 2008-06-24 | 3694 |  | 毛刺研磨 |
| 3696 | 铣型面，钻孔 | 2008-06-24 | 2008-06-25 | 3695 |  | 导弹单元64V |
| 3697 | 镗孔 | 2008-06-25 | 2008-06-26 | 3696 |  | 三工段车工班 |
| 3698 | 去毛刺 | 2008-06-26 | 2008-06-26 | 3697 |  | 三工段钳工 |
| 3699 | 扩孔 | 2008-06-26 | 2008-06-27 | 3698 |  | 三工段钳工 |
| 3700 | 清洗 | 2008-06-27 | 2008-06-27 | 3699 |  | 毛刺研磨 |
| 3701 | 检验 | 2008-06-28 | 2008-06-29 | 3700 |  | 检验 |
| 3702 | 冲洗 | 2008-06-29 | 2008-06-30 | 3701 |  | 试验间 |
| 3703 | 检验 | 2008-06-30 | 2008-07-01 | 3702 |  | 检验 |
| 3704 | 铬酸阳极化 | 2008-07-02 | 2008-07-03 | 3703 |  | 外协 |
| 3705 | 检验 | 2008-07-04 | 2008-07-04 | 3704 |  | 检验 |
| 3706 | 研平面 | 2008-07-05 | 2008-07-05 | 3705 |  | 毛刺研磨 |
| 3707 | 清洗 | 2008-07-05 | 2008-07-06 | 3706 |  | 试验间 |
| 3708 | 检验 | 2008-07-07 | 2008-07-07 | 3707 |  | 检验 |
| 3709 | 包装 | 2008-07-08 | 2008-07-08 | 3708 |  | 毛刺研磨 |
| 3710 | 壳体 | 2008-06-15 | 2008-08-04 |  |  |  |

| ID | Task | Start | Finish | Predecessors | Resources |
| --- | --- | --- | --- | --- | --- |
| 3711 | 铣型面，镗孔 | 2008-06-15 | 2008-06-19 |  | 导弹单元64V |
| 3712 | 铣型面 | 2008-06-19 | 2008-06-20 | 3711 | 导弹单元64V |
| 3713 | 铣型面，钻孔 | 2008-06-20 | 2008-06-21 | 3712 | 导弹单元64V |
| 3714 | 去毛刺 | 2008-06-21 | 2008-06-21 | 3713 | 毛刺研磨 |
| 3715 | 车端面 | 2008-06-23 | 2008-06-23 | 3714 | 三工段车工班 |
| 3716 | 研平面 | 2008-06-24 | 2008-06-24 | 3715 | 毛刺研磨 |
| 3717 | 磨平面 | 2008-06-24 | 2008-06-25 | 3716 | 毛刺研磨 |
| 3718 | 去毛刺 | 2008-06-25 | 2008-06-25 | 3717 | 毛刺研磨 |
| 3719 | 铣型面，镗铰孔 | 2008-06-25 | 2008-06-26 | 3718 | 导弹单元64V |
| 3720 | 钻孔，攻螺纹 | 2008-06-26 | 2008-06-26 | 3719 | 三工段钳工 |
| 3721 | 去毛刺，打字 | 2008-06-27 | 2008-06-27 | 3720 | 毛刺研磨 |
| 3722 | 铣型面，镗铰孔 | 2008-06-27 | 2008-06-28 | 3721 | 导弹单元64V |
| 3723 | 去毛刺 | 2008-06-28 | 2008-06-29 | 3722 | 毛刺研磨 |
| 3724 | 车外圆 | 2008-06-29 | 2008-06-30 | 3723 | 三工段车工班 |
| 3725 | 钻铰孔 | 2008-06-30 | 2008-07-01 | 3724 | 导弹单元64V |
| 3726 | 钻孔，镗孔 | 2008-07-01 | 2008-07-02 | 3725 | 导弹单元FFZ200 |
| 3727 | 钻孔 | 2008-07-02 | 2008-07-02 | 3726 | 三工段钳工 |
| 3728 | 车槽，镗孔倒角 | 2008-07-02 | 2008-07-04 | 3727 | 三工段车工班 |
| 3729 | 车槽，镗孔倒角 | 2008-07-04 | 2008-07-08 | 3728 | 三工段车工班 |
| 3730 | 车槽，倒角 | 2008-07-08 | 2008-07-09 | 3729 | 三工段车工班 |
| 3731 | 车内环槽 | 2008-07-09 | 2008-07-11 | 3730 | 三工段车工班 |
| 3732 | 攻螺纹 | 2008-07-11 | 2008-07-11 | 3731 | 三工段钳工 |
| 3733 | 钻斜孔 | 2008-07-11 | 2008-07-11 | 3732 | 三工段钳工 |
| 3734 | 车环槽，外圆 | 2008-07-11 | 2008-07-14 | 3733 | 三工段车工班 |
| 3735 | 去毛刺 | 2008-07-15 | 2008-07-15 | 3734 | 毛刺研磨 |
| 3736 | 清洗 | 2008-07-15 | 2008-07-16 | 3735 | 毛刺研磨 |
| 3737 | 检验 | 2008-07-16 | 2008-07-17 | 3736 | 检验 |
| 3738 | 钻孔，攻螺纹 | 2008-07-17 | 2008-07-18 | 3737 | 毛刺研磨 |
| 3739 | 铣型面，镗孔，倒角钻孔 | 2008-07-18 | 2008-07-19 | 3738 | 导弹单元64V |
| 3740 | 去毛刺 | 2008-07-19 | 2008-07-20 | 3739 | 毛刺研磨 |
| 3741 | 铣型面，钻孔 | 2008-07-20 | 2008-07-21 | 3740 | 导弹单元64V |
| 3742 | 镗孔 | 2008-07-21 | 2008-07-23 | 3741 | 三工段车工班 |
| 3743 | 去毛刺 | 2008-07-23 | 2008-07-23 | 3742 | 三工段钳工 |
| 3744 | 扩孔 | 2008-07-23 | 2008-07-23 | 3743 | 三工段钳工 |
| 3745 | 清洗 | 2008-07-24 | 2008-07-24 | 3744 | 毛刺研磨 |
| 3746 | 检验 | 2008-07-25 | 2008-07-25 | 3745 | 检验 |
| 3747 | 冲洗 | 2008-07-25 | 2008-07-26 | 3746 | 试验间 |
| 3748 | 检验 | 2008-07-27 | 2008-07-28 | 3747 | 检验 |
| 3749 | 铬酸阳极化 | 2008-07-29 | 2008-07-30 | 3748 | 外协 |
| 3750 | 检验 | 2008-07-31 | 2008-07-31 | 3749 | 检验 |
| 3751 | 研平面 | 2008-08-01 | 2008-08-01 | 3750 | 毛刺研磨 |
| 3752 | 清洗 | 2008-08-01 | 2008-08-01 | 3751 | 试验间 |
| 3753 | 检验 | 2008-08-02 | 2008-08-03 | 3752 | 检验 |
| 3754 | 包装 | 2008-08-03 | 2008-08-04 | 3753 | 毛刺研磨 |
| 3755 | 壳体 | 2008-06-15 | 2008-08-04 |  |  |
| 3756 | 铣型面，镗孔 | 2008-06-15 | 2008-06-19 |  | 导弹单元64V |
| 3757 | 铣型面 | 2008-06-19 | 2008-06-20 | 3756 | 导弹单元64V |
| 3758 | 铣型面，钻孔 | 2008-06-20 | 2008-06-21 | 3757 | 导弹单元64V |
| 3759 | 去毛刺 | 2008-06-21 | 2008-06-21 | 3758 | 毛刺研磨 |
| 3760 | 车端面 | 2008-06-23 | 2008-06-23 | 3759 | 三工段车工班 |
| 3761 | 研平面 | 2008-06-24 | 2008-06-24 | 3760 | 毛刺研磨 |
| 3762 | 磨平面 | 2008-06-24 | 2008-06-25 | 3761 | 毛刺研磨 |
| 3763 | 去毛刺 | 2008-06-25 | 2008-06-25 | 3762 | 毛刺研磨 |
| 3764 | 铣型面，镗铰孔 | 2008-06-25 | 2008-06-26 | 3763 | 导弹单元64V |
| 3765 | 钻孔，攻螺纹 | 2008-06-26 | 2008-06-26 | 3764 | 三工段钳工 |
| 3766 | 去毛刺，打字 | 2008-06-27 | 2008-06-27 | 3765 | 毛刺研磨 |
| 3767 | 铣型面，镗铰孔 | 2008-06-27 | 2008-06-28 | 3766 | 导弹单元64V |
| 3768 | 去毛刺 | 2008-06-28 | 2008-06-29 | 3767 | 毛刺研磨 |
| 3769 | 车外圆 | 2008-06-29 | 2008-06-30 | 3768 | 三工段车工班 |
| 3770 | 钻铰孔 | 2008-06-30 | 2008-07-01 | 3769 | 导弹单元64V |
| 3771 | 钻孔，镗孔 | 2008-07-01 | 2008-07-02 | 3770 | 导弹单元FFZ200 |
| 3772 | 钻孔 | 2008-07-02 | 2008-07-02 | 3771 | 三工段钳工 |
| 3773 | 车槽，镗孔倒角 | 2008-07-02 | 2008-07-04 | 3772 | 三工段车工班 |
| 3774 | 车槽，镗孔倒角 | 2008-07-04 | 2008-07-08 | 3773 | 三工段车工班 |
| 3775 | 车槽，倒角 | 2008-07-08 | 2008-07-09 | 3774 | 三工段车工班 |
| 3776 | 车内环槽 | 2008-07-09 | 2008-07-11 | 3775 | 三工段车工班 |
| 3777 | 攻螺纹 | 2008-07-11 | 2008-07-11 | 3776 | 三工段钳工 |
| 3778 | 钻斜孔 | 2008-07-11 | 2008-07-11 | 3777 | 三工段钳工 |
| 3779 | 车环槽，外圆 | 2008-07-11 | 2008-07-14 | 3778 | 三工段车工班 |
| 3780 | 去毛刺 | 2008-07-15 | 2008-07-15 | 3779 | 毛刺研磨 |

| ID | Task | Start | Finish | Predecessors | Resources |
| --- | --- | --- | --- | --- | --- |
| 3781 | 清洗 | 2008-07-15 | 2008-07-16 | 3780 | 毛刺研磨 |
| 3782 | 检验 | 2008-07-16 | 2008-07-17 | 3781 | 检验 |
| 3783 | 钻孔，攻螺纹 | 2008-07-17 | 2008-07-18 | 3782 | 毛刺研磨 |
| 3784 | 铣型面，镗孔，倒角钻孔 | 2008-07-18 | 2008-07-19 | 3783 | 导弹单元64V |
| 3785 | 去毛刺 | 2008-07-19 | 2008-07-20 | 3784 | 毛刺研磨 |
| 3786 | 铣型面，钻孔 | 2008-07-20 | 2008-07-21 | 3785 | 导弹单元64V |
| 3787 | 镗孔 | 2008-07-21 | 2008-07-23 | 3786 | 三工段车工班 |
| 3788 | 去毛刺 | 2008-07-23 | 2008-07-23 | 3787 | 三工段钳工 |
| 3789 | 扩孔 | 2008-07-23 | 2008-07-23 | 3788 | 三工段钳工 |
| 3790 | 清洗 | 2008-07-24 | 2008-07-24 | 3789 | 毛刺研磨 |
| 3791 | 检验 | 2008-07-25 | 2008-07-25 | 3790 | 检验 |
| 3792 | 冲洗 | 2008-07-25 | 2008-07-26 | 3791 | 试验间 |
| 3793 | 检验 | 2008-07-27 | 2008-07-28 | 3792 | 检验 |
| 3794 | 铬酸阳极化 | 2008-07-29 | 2008-07-30 | 3793 | 外协 |
| 3795 | 检验 | 2008-07-31 | 2008-07-31 | 3794 | 检验 |
| 3796 | 研平面 | 2008-08-01 | 2008-08-01 | 3795 | 毛刺研磨 |
| 3797 | 清洗 | 2008-08-01 | 2008-08-01 | 3796 | 试验间 |
| 3798 | 检验 | 2008-08-02 | 2008-08-03 | 3797 | 检验 |
| 3799 | 包装 | 2008-08-03 | 2008-08-04 | 3798 | 毛刺研磨 |
| 3800 | 壳体 | 2008-06-15 | 2008-08-04 |  |  |
| 3801 | 铣型面，镗孔 | 2008-06-15 | 2008-06-19 |  | 导弹单元64V |
| 3802 | 铣型面 | 2008-06-19 | 2008-06-20 | 3801 | 导弹单元64V |
| 3803 | 铣型面，钻孔 | 2008-06-20 | 2008-06-21 | 3802 | 导弹单元64V |
| 3804 | 去毛刺 | 2008-06-21 | 2008-06-21 | 3803 | 毛刺研磨 |
| 3805 | 车端面 | 2008-06-23 | 2008-06-23 | 3804 | 三工段车工班 |
| 3806 | 研平面 | 2008-06-24 | 2008-06-24 | 3805 | 毛刺研磨 |
| 3807 | 磨平面 | 2008-06-24 | 2008-06-25 | 3806 | 毛刺研磨 |
| 3808 | 去毛刺 | 2008-06-25 | 2008-06-25 | 3807 | 毛刺研磨 |
| 3809 | 铣型面，镗铰孔 | 2008-06-25 | 2008-06-26 | 3808 | 导弹单元64V |
| 3810 | 钻孔，攻螺纹 | 2008-06-26 | 2008-06-26 | 3809 | 三工段钳工 |
| 3811 | 去毛刺，打字 | 2008-06-27 | 2008-06-27 | 3810 | 毛刺研磨 |
| 3812 | 铣型面，镗铰孔 | 2008-06-27 | 2008-06-28 | 3811 | 导弹单元64V |
| 3813 | 去毛刺 | 2008-06-28 | 2008-06-29 | 3812 | 毛刺研磨 |
| 3814 | 车外圆 | 2008-06-29 | 2008-06-30 | 3813 | 三工段车工班 |
| 3815 | 钻铰孔 | 2008-06-30 | 2008-07-01 | 3814 | 导弹单元64V |
| 3816 | 钻孔，镗孔 | 2008-07-01 | 2008-07-02 | 3815 | 导弹单元FFZ200 |
| 3817 | 钻孔 | 2008-07-02 | 2008-07-02 | 3816 | 三工段钳工 |
| 3818 | 车槽，镗孔倒角 | 2008-07-02 | 2008-07-04 | 3817 | 三工段车工班 |
| 3819 | 车槽，镗孔倒角 | 2008-07-04 | 2008-07-08 | 3818 | 三工段车工班 |
| 3820 | 车槽，倒角 | 2008-07-08 | 2008-07-09 | 3819 | 三工段车工班 |
| 3821 | 车内环槽 | 2008-07-09 | 2008-07-11 | 3820 | 三工段车工班 |
| 3822 | 攻螺纹 | 2008-07-11 | 2008-07-11 | 3821 | 三工段钳工 |
| 3823 | 钻斜孔 | 2008-07-11 | 2008-07-11 | 3822 | 三工段钳工 |
| 3824 | 车环槽，外圆 | 2008-07-11 | 2008-07-14 | 3823 | 三工段车工班 |
| 3825 | 去毛刺 | 2008-07-15 | 2008-07-15 | 3824 | 毛刺研磨 |
| 3826 | 清洗 | 2008-07-15 | 2008-07-16 | 3825 | 毛刺研磨 |
| 3827 | 检验 | 2008-07-16 | 2008-07-17 | 3826 | 检验 |
| 3828 | 钻孔，攻螺纹 | 2008-07-17 | 2008-07-18 | 3827 | 毛刺研磨 |
| 3829 | 铣型面，镗孔，倒角钻孔 | 2008-07-18 | 2008-07-19 | 3828 | 导弹单元64V |
| 3830 | 去毛刺 | 2008-07-19 | 2008-07-20 | 3829 | 毛刺研磨 |
| 3831 | 铣型面，钻孔 | 2008-07-20 | 2008-07-21 | 3830 | 导弹单元64V |
| 3832 | 镗孔 | 2008-07-21 | 2008-07-23 | 3831 | 三工段车工班 |
| 3833 | 去毛刺 | 2008-07-23 | 2008-07-23 | 3832 | 三工段钳工 |
| 3834 | 扩孔 | 2008-07-23 | 2008-07-23 | 3833 | 三工段钳工 |
| 3835 | 清洗 | 2008-07-24 | 2008-07-24 | 3834 | 毛刺研磨 |
| 3836 | 检验 | 2008-07-25 | 2008-07-25 | 3835 | 检验 |
| 3837 | 冲洗 | 2008-07-25 | 2008-07-26 | 3836 | 试验间 |
| 3838 | 检验 | 2008-07-27 | 2008-07-28 | 3837 | 检验 |
| 3839 | 铬酸阳极化 | 2008-07-29 | 2008-07-30 | 3838 | 外协 |
| 3840 | 检验 | 2008-07-31 | 2008-07-31 | 3839 | 检验 |
| 3841 | 研平面 | 2008-08-01 | 2008-08-01 | 3840 | 毛刺研磨 |
| 3842 | 清洗 | 2008-08-01 | 2008-08-01 | 3841 | 试验间 |
| 3843 | 检验 | 2008-08-02 | 2008-08-03 | 3842 | 检验 |
| 3844 | 包装 | 2008-08-03 | 2008-08-04 | 3843 | 毛刺研磨 |
| 3845 | 壳体 | 2008-06-15 | 2008-08-05 |  |  |
| 3846 | 车全部 | 2008-06-15 | 2008-06-16 |  | 三工段车工班 |
| 3847 | 铣型面，镗孔 | 2008-06-16 | 2008-06-19 | 3846 | 导弹单元64V |
| 3848 | 铣型面 | 2008-06-19 | 2008-06-20 | 3847 | 导弹单元64V |
| 3849 | 铣型面，钻孔 | 2008-06-20 | 2008-06-22 | 3848 | 导弹单元64V |
| 3850 | 去毛刺 | 2008-06-22 | 2008-06-23 | 3849 | 毛刺研磨 |

| ID | Task | Start | Finish | Predecessors | Resources |
| --- | --- | --- | --- | --- | --- |
| 3851 | 车端面 | 2008-06-25 | 2008-06-25 | 3850 | 三工段车工班 |
| 3852 | 研平面 | 2008-06-26 | 2008-06-26 | 3851 | 毛刺研磨 |
| 3853 | 磨平面 | 2008-06-26 | 2008-06-27 | 3852 | 毛刺研磨 |
| 3854 | 去毛刺 | 2008-06-27 | 2008-06-27 | 3853 | 毛刺研磨 |
| 3855 | 铣型面，镗铰孔 | 2008-06-27 | 2008-06-29 | 3854 | 导弹单元64V |
| 3856 | 钻孔，攻螺纹 | 2008-06-29 | 2008-06-29 | 3855 | 三工段钳工 |
| 3857 | 去毛刺，打字 | 2008-06-29 | 2008-06-30 | 3856 | 毛刺研磨 |
| 3858 | 铣型面，镗铰孔 | 2008-06-30 | 2008-07-01 | 3857 | 导弹单元64V |
| 3859 | 去毛刺 | 2008-07-01 | 2008-07-01 | 3858 | 毛刺研磨 |
| 3860 | 车外圆 | 2008-07-01 | 2008-07-02 | 3859 | 三工段车工班 |
| 3861 | 钻铰孔 | 2008-07-02 | 2008-07-03 | 3860 | 导弹单元64V |
| 3862 | 钻孔，镗孔 | 2008-07-03 | 2008-07-04 | 3861 | 导弹单元FFZ200 |
| 3863 | 钻孔 | 2008-07-04 | 2008-07-04 | 3862 | 三工段钳工 |
| 3864 | 车槽，镗孔倒角 | 2008-07-04 | 2008-07-07 | 3863 | 三工段车工班 |
| 3865 | 车槽，镗孔倒角 | 2008-07-07 | 2008-07-09 | 3864 | 三工段车工班 |
| 3866 | 车槽，倒角 | 2008-07-09 | 2008-07-11 | 3865 | 三工段车工班 |
| 3867 | 车内环槽 | 2008-07-11 | 2008-07-14 | 3866 | 三工段车工班 |
| 3868 | 攻螺纹 | 2008-07-14 | 2008-07-14 | 3867 | 三工段钳工 |
| 3869 | 钻斜孔 | 2008-07-14 | 2008-07-14 | 3868 | 三工段钳工 |
| 3870 | 车环槽，外圆 | 2008-07-14 | 2008-07-16 | 3869 | 三工段车工班 |
| 3871 | 去毛刺 | 2008-07-17 | 2008-07-17 | 3870 | 毛刺研磨 |
| 3872 | 清洗 | 2008-07-17 | 2008-07-18 | 3871 | 毛刺研磨 |
| 3873 | 检验 | 2008-07-18 | 2008-07-20 | 3872 | 检验 |
| 3874 | 钻孔，攻螺纹 | 2008-07-20 | 2008-07-21 | 3873 | 毛刺研磨 |
| 3875 | 铣型面，镗孔，倒角钻孔 | 2008-07-21 | 2008-07-22 | 3874 | 导弹单元64V |
| 3876 | 去毛刺 | 2008-07-22 | 2008-07-22 | 3875 | 毛刺研磨 |
| 3877 | 铣型面，钻孔 | 2008-07-22 | 2008-07-23 | 3876 | 导弹单元64V |
| 3878 | 镗孔 | 2008-07-23 | 2008-07-24 | 3877 | 三工段车工班 |
| 3879 | 去毛刺 | 2008-07-24 | 2008-07-24 | 3878 | 三工段钳工 |
| 3880 | 扩孔 | 2008-07-24 | 2008-07-25 | 3879 | 三工段钳工 |
| 3881 | 清洗 | 2008-07-25 | 2008-07-25 | 3880 | 毛刺研磨 |
| 3882 | 检验 | 2008-07-26 | 2008-07-27 | 3881 | 检验 |
| 3883 | 冲洗 | 2008-07-27 | 2008-07-28 | 3882 | 试验间 |
| 3884 | 检验 | 2008-07-28 | 2008-07-29 | 3883 | 检验 |
| 3885 | 铬酸阳极化 | 2008-07-30 | 2008-07-31 | 3884 | 外协 |
| 3886 | 检验 | 2008-08-01 | 2008-08-01 | 3885 | 检验 |
| 3887 | 研平面 | 2008-08-02 | 2008-08-02 | 3886 | 毛刺研磨 |
| 3888 | 清洗 | 2008-08-02 | 2008-08-03 | 3887 | 试验间 |
| 3889 | 检验 | 2008-08-04 | 2008-08-04 | 3888 | 检验 |
| 3890 | 包装 | 2008-08-05 | 2008-08-05 | 3889 | 毛刺研磨 |
| 3891 | 壳体 | 2008-06-15 | 2008-07-29 |  |  |
| 3892 | 车全部 | 2008-06-15 | 2008-06-16 |  | 三工段车工班 [101.01%] |
| 3893 | 铣型面，镗孔 | 2008-06-16 | 2008-06-18 | 3892 | 导弹单元64V |
| 3894 | 铣型面 | 2008-06-18 | 2008-06-18 | 3893 | 导弹单元64V |
| 3895 | 铣型面，钻孔 | 2008-06-18 | 2008-06-19 | 3894 | 导弹单元64V |
| 3896 | 去毛刺 | 2008-06-20 | 2008-06-20 | 3895 | 毛刺研磨 |
| 3897 | 车端面 | 2008-06-22 | 2008-06-23 | 3896 | 三工段车工班 |
| 3898 | 研平面 | 2008-06-23 | 2008-06-24 | 3897 | 毛刺研磨 |
| 3899 | 磨平面 | 2008-06-24 | 2008-06-24 | 3898 | 毛刺研磨 |
| 3900 | 去毛刺 | 2008-06-24 | 2008-06-25 | 3899 | 毛刺研磨 |
| 3901 | 铣型面，镗铰孔 | 2008-06-25 | 2008-06-26 | 3900 | 导弹单元64V |
| 3902 | 钻孔，攻螺纹 | 2008-06-26 | 2008-06-26 | 3901 | 三工段钳工 |
| 3903 | 去毛刺，打字 | 2008-06-26 | 2008-06-27 | 3902 | 毛刺研磨 |
| 3904 | 铣型面，镗铰孔 | 2008-06-27 | 2008-06-28 | 3903 | 导弹单元64V |
| 3905 | 去毛刺 | 2008-06-28 | 2008-06-29 | 3904 | 毛刺研磨 |
| 3906 | 车外圆 | 2008-06-29 | 2008-06-30 | 3905 | 三工段车工班 |
| 3907 | 钻铰孔 | 2008-06-30 | 2008-07-01 | 3906 | 导弹单元64V |
| 3908 | 钻孔，镗孔 | 2008-07-01 | 2008-07-02 | 3907 | 导弹单元FFZ200 |
| 3909 | 钻孔 | 2008-07-02 | 2008-07-02 | 3908 | 三工段钳工 |
| 3910 | 车槽，镗孔倒角 | 2008-07-02 | 2008-07-03 | 3909 | 三工段车工班 [100.14%] |
| 3911 | 车槽，镗孔倒角 | 2008-07-03 | 2008-07-05 | 3910 | 三工段车工班 |
| 3912 | 车槽，倒角 | 2008-07-05 | 2008-07-07 | 3911 | 三工段车工班 [100.18%] |
| 3913 | 车内环槽 | 2008-07-07 | 2008-07-08 | 3912 | 三工段车工班 |
| 3914 | 攻螺纹 | 2008-07-08 | 2008-07-09 | 3913 | 三工段钳工 |
| 3915 | 钻斜孔 | 2008-07-09 | 2008-07-09 | 3914 | 三工段钳工 |
| 3916 | 车环槽，外圆 | 2008-07-09 | 2008-07-10 | 3915 | 三工段车工班 |
| 3917 | 去毛刺 | 2008-07-11 | 2008-07-11 | 3916 | 毛刺研磨 |
| 3918 | 清洗 | 2008-07-11 | 2008-07-12 | 3917 | 毛刺研磨 |
| 3919 | 检验 | 2008-07-13 | 2008-07-14 | 3918 | 检验 |
| 3920 | 钻孔，攻螺纹 | 2008-07-14 | 2008-07-14 | 3919 | 毛刺研磨 |

| ID | Task | Start | Finish | Predecessors | Complete | Resources |
| --- | --- | --- | --- | --- | --- | --- |
| 3921 | 铣型面，镗孔，倒角钻孔 | 2008-07-14 | 2008-07-15 | 3920 |  | 导弹单元64V |
| 3922 | 去毛刺 | 2008-07-15 | 2008-07-16 | 3921 |  | 毛刺研磨 |
| 3923 | 铣型面，钻孔 | 2008-07-16 | 2008-07-17 | 3922 |  | 导弹单元64V |
| 3924 | 镗孔 | 2008-07-17 | 2008-07-18 | 3923 |  | 三工段车工班 [100.81%] |
| 3925 | 去毛刺 | 2008-07-18 | 2008-07-18 | 3924 |  | 三工段钳工 |
| 3926 | 扩孔 | 2008-07-18 | 2008-07-18 | 3925 |  | 三工段钳工 |
| 3927 | 清洗 | 2008-07-19 | 2008-07-19 | 3926 |  | 毛刺研磨 |
| 3928 | 检验 | 2008-07-20 | 2008-07-21 | 3927 |  | 检验 |
| 3929 | 冲洗 | 2008-07-21 | 2008-07-21 | 3928 |  | 试验间 |
| 3930 | 检验 | 2008-07-22 | 2008-07-22 | 3929 |  | 检验 |
| 3931 | 铬酸阳极化 | 2008-07-23 | 2008-07-24 | 3930 |  | 外协 |
| 3932 | 检验 | 2008-07-25 | 2008-07-25 | 3931 |  | 检验 |
| 3933 | 研平面 | 2008-07-26 | 2008-07-26 | 3932 |  | 毛刺研磨 |
| 3934 | 清洗 | 2008-07-26 | 2008-07-27 | 3933 |  | 试验间 |
| 3935 | 检验 | 2008-07-28 | 2008-07-28 | 3934 |  | 检验 |
| 3936 | 包装 | 2008-07-29 | 2008-07-29 | 3935 |  | 毛刺研磨 |
| 3937 | 壳体组件 | 2008-06-15 | 2008-06-20 |  |  |  |
| 3938 | 配套 | 2008-06-15 | 2008-06-15 |  |  | 三工段钳工 |
| 3939 | 冲洗 | 2008-06-15 | 2008-06-16 | 3938 |  | 试验间 |
| 3940 | 装配堵头 | 2008-06-16 | 2008-06-16 | 3939 |  | 毛刺研磨 |
| 3941 | 检验 | 2008-06-17 | 2008-06-17 | 3940 |  | 检验 |
| 3942 | 强度试验 | 2008-06-17 | 2008-06-18 | 3941 |  | 试验间 |
| 3943 | 超声波清洗 | 2008-06-18 | 2008-06-18 | 3942 |  | 试验间 |
| 3944 | 冲洗 | 2008-06-18 | 2008-06-18 | 3943 |  | 试验间 |
| 3945 | 检验 | 2008-06-19 | 2008-06-19 | 3944 |  | 检验 |
| 3946 | 包装 | 2008-06-20 | 2008-06-20 | 3945 |  | 毛刺研磨 |
| 3947 | 壳体组件 | 2008-03-27 | 2008-06-17 |  |  |  |
| 3948 | 冲洗 | 2008-06-15 | 2008-06-15 |  |  | 试验间 |
| 3949 | 装配堵头 | 2008-06-16 | 2008-06-16 | 3948 |  | 毛刺研磨 |
| 3950 | 已完成任务 | 2008-03-27 | 2008-03-27 | 3949 | 100% |  |
| 3951 | 冲洗 | 2008-06-15 | 2008-06-15 | 3950 |  | 试验间 |
| 3952 | 检验 | 2008-06-16 | 2008-06-16 | 3951 |  | 检验 |
| 3953 | 包装 | 2008-06-17 | 2008-06-17 | 3952 |  | 毛刺研磨 |
| 3954 | 壳体组件 | 2008-06-15 | 2008-06-20 |  |  |  |
| 3955 | 配套 | 2008-06-15 | 2008-06-15 |  |  | 三工段钳工 |
| 3956 | 冲洗 | 2008-06-15 | 2008-06-16 | 3955 |  | 试验间 |
| 3957 | 装配堵头 | 2008-06-16 | 2008-06-16 | 3956 |  | 毛刺研磨 |
| 3958 | 检验 | 2008-06-17 | 2008-06-17 | 3957 |  | 检验 |
| 3959 | 强度试验 | 2008-06-17 | 2008-06-18 | 3958 |  | 试验间 |
| 3960 | 超声波清洗 | 2008-06-18 | 2008-06-18 | 3959 |  | 试验间 |
| 3961 | 冲洗 | 2008-06-18 | 2008-06-18 | 3960 |  | 试验间 |
| 3962 | 检验 | 2008-06-19 | 2008-06-19 | 3961 |  | 检验 |
| 3963 | 包装 | 2008-06-20 | 2008-06-20 | 3962 |  | 毛刺研磨 |
| 3964 | 壳体组件 | 2008-06-15 | 2008-06-20 |  |  |  |
| 3965 | 配套 | 2008-06-15 | 2008-06-15 |  |  | 三工段钳工 |
| 3966 | 冲洗 | 2008-06-15 | 2008-06-16 | 3965 |  | 试验间 |
| 3967 | 装配堵头 | 2008-06-16 | 2008-06-16 | 3966 |  | 毛刺研磨 |
| 3968 | 检验 | 2008-06-17 | 2008-06-17 | 3967 |  | 检验 |
| 3969 | 强度试验 | 2008-06-17 | 2008-06-18 | 3968 |  | 试验间 |
| 3970 | 超声波清洗 | 2008-06-18 | 2008-06-18 | 3969 |  | 试验间 |
| 3971 | 冲洗 | 2008-06-18 | 2008-06-18 | 3970 |  | 试验间 |
| 3972 | 检验 | 2008-06-19 | 2008-06-19 | 3971 |  | 检验 |
| 3973 | 包装 | 2008-06-20 | 2008-06-20 | 3972 |  | 毛刺研磨 |
| 3974 | 壳体组件 | 2008-06-15 | 2008-06-20 |  |  |  |
| 3975 | 配套 | 2008-06-15 | 2008-06-15 |  |  | 三工段钳工 |
| 3976 | 冲洗 | 2008-06-15 | 2008-06-16 | 3975 |  | 试验间 |
| 3977 | 装配堵头 | 2008-06-16 | 2008-06-16 | 3976 |  | 毛刺研磨 |
| 3978 | 检验 | 2008-06-17 | 2008-06-17 | 3977 |  | 检验 |
| 3979 | 强度试验 | 2008-06-17 | 2008-06-18 | 3978 |  | 试验间 |
| 3980 | 超声波清洗 | 2008-06-18 | 2008-06-18 | 3979 |  | 试验间 |
| 3981 | 冲洗 | 2008-06-18 | 2008-06-18 | 3980 |  | 试验间 |
| 3982 | 检验 | 2008-06-19 | 2008-06-19 | 3981 |  | 检验 |
| 3983 | 包装 | 2008-06-20 | 2008-06-20 | 3982 |  | 毛刺研磨 |
| 3984 | 壳体组件 | 2008-06-15 | 2008-06-20 |  |  |  |
| 3985 | 配套 | 2008-06-15 | 2008-06-15 |  |  | 三工段钳工 |
| 3986 | 冲洗 | 2008-06-15 | 2008-06-16 | 3985 |  | 试验间 |
| 3987 | 装配堵头 | 2008-06-16 | 2008-06-16 | 3986 |  | 毛刺研磨 |
| 3988 | 检验 | 2008-06-17 | 2008-06-17 | 3987 |  | 检验 |
| 3989 | 强度试验 | 2008-06-17 | 2008-06-18 | 3988 |  | 试验间 |
| 3990 | 超声波清洗 | 2008-06-18 | 2008-06-18 | 3989 |  | 试验间 |

| ID | Task | Start | Finish | Predecessors | Complete | Resources |
| --- | --- | --- | --- | --- | --- | --- |
| 3991 | 冲洗 | 2008-06-18 | 2008-06-18 | 3990 |  | 试验间 |
| 3992 | 检验 | 2008-06-19 | 2008-06-19 | 3991 |  | 检验 |
| 3993 | 包装 | 2008-06-20 | 2008-06-20 | 3992 |  | 毛刺研磨 |
| 3994 | 壳体组件 | 2008-06-15 | 2008-06-20 |  |  |  |
| 3995 | 配套 | 2008-06-15 | 2008-06-15 |  |  | 三工段钳工 |
| 3996 | 冲洗 | 2008-06-15 | 2008-06-16 | 3995 |  | 试验间 |
| 3997 | 装配堵头 | 2008-06-16 | 2008-06-16 | 3996 |  | 毛刺研磨 |
| 3998 | 检验 | 2008-06-17 | 2008-06-17 | 3997 |  | 检验 |
| 3999 | 强度试验 | 2008-06-17 | 2008-06-18 | 3998 |  | 试验间 |
| 4000 | 超声波清洗 | 2008-06-18 | 2008-06-18 | 3999 |  | 试验间 |
| 4001 | 冲洗 | 2008-06-18 | 2008-06-18 | 4000 |  | 试验间 |
| 4002 | 检验 | 2008-06-19 | 2008-06-19 | 4001 |  | 检验 |
| 4003 | 包装 | 2008-06-20 | 2008-06-20 | 4002 |  | 毛刺研磨 |
| 4004 | 壳体组件 | 2008-06-15 | 2008-06-20 |  |  |  |
| 4005 | 配套 | 2008-06-15 | 2008-06-15 |  |  | 三工段钳工 |
| 4006 | 冲洗 | 2008-06-15 | 2008-06-16 | 4005 |  | 试验间 |
| 4007 | 装配堵头 | 2008-06-16 | 2008-06-16 | 4006 |  | 毛刺研磨 |
| 4008 | 检验 | 2008-06-17 | 2008-06-17 | 4007 |  | 检验 |
| 4009 | 强度试验 | 2008-06-17 | 2008-06-18 | 4008 |  | 试验间 |
| 4010 | 超声波清洗 | 2008-06-18 | 2008-06-18 | 4009 |  | 试验间 |
| 4011 | 冲洗 | 2008-06-18 | 2008-06-18 | 4010 |  | 试验间 |
| 4012 | 检验 | 2008-06-19 | 2008-06-19 | 4011 |  | 检验 |
| 4013 | 包装 | 2008-06-20 | 2008-06-20 | 4012 |  | 毛刺研磨 |
| 4014 | 壳体组件 | 2008-06-15 | 2008-06-20 |  |  |  |
| 4015 | 配套 | 2008-06-15 | 2008-06-15 |  |  | 三工段钳工 |
| 4016 | 冲洗 | 2008-06-15 | 2008-06-16 | 4015 |  | 试验间 |
| 4017 | 装配堵头 | 2008-06-16 | 2008-06-16 | 4016 |  | 毛刺研磨 |
| 4018 | 检验 | 2008-06-17 | 2008-06-17 | 4017 |  | 检验 |
| 4019 | 强度试验 | 2008-06-17 | 2008-06-18 | 4018 |  | 试验间 |
| 4020 | 超声波清洗 | 2008-06-18 | 2008-06-18 | 4019 |  | 试验间 |
| 4021 | 冲洗 | 2008-06-18 | 2008-06-18 | 4020 |  | 试验间 |
| 4022 | 检验 | 2008-06-19 | 2008-06-19 | 4021 |  | 检验 |
| 4023 | 包装 | 2008-06-20 | 2008-06-20 | 4022 |  | 毛刺研磨 |
| 4024 | 壳体 | 2008-06-02 | 2008-06-24 |  |  |  |
| 4025 | 检验 | 2008-06-15 | 2008-06-16 |  |  | 检验 |
| 4026 | 已完成任务 | 2008-06-02 | 2008-06-02 | 4025 | 100% |  |
| 4027 | 去毛刺 | 2008-06-15 | 2008-06-15 | 4026 |  | 毛刺研磨 |
| 4028 | 研平面 | 2008-06-15 | 2008-06-16 | 4027 |  | 研磨台 |
| 4029 | 浸 泡 | 2008-06-16 | 2008-06-16 | 4028 |  | 试验间 |
| 4030 | 超声波清洗 | 2008-06-16 | 2008-06-16 | 4029 |  | 试验间 |
| 4031 | 车面，倒角 | 2008-06-16 | 2008-06-16 | 4030 |  | 三工段车工班 [100.32%] |
| 4032 | 去毛刺 | 2008-06-17 | 2008-06-17 | 4031 |  | 毛刺台一 |
| 4033 | 清洗 | 2008-06-17 | 2008-06-18 | 4032 |  | 毛刺台一 |
| 4034 | 检验 | 2008-06-18 | 2008-06-19 | 4033 |  | 检验 |
| 4035 | 冲洗 | 2008-06-19 | 2008-06-19 | 4034 |  | 试验间 |
| 4036 | 检验 | 2008-06-20 | 2008-06-20 | 4035 |  | 检验 |
| 4037 | 检验 | 2008-06-23 | 2008-06-23 | 4036 |  | 检验 |
| 4038 | 包装 | 2008-06-24 | 2008-06-24 | 4037 |  | 毛刺台一 |
| 4039 | 壳体 | 2008-03-24 | 2008-06-15 |  |  |  |
| 4040 | 冲洗 | 2008-06-15 | 2008-06-15 |  |  | 试验间 |
| 4041 | 包装 | 2008-03-24 | 2008-03-24 | 4040 | 100% |  |
| 4042 | 壳体 | 2008-06-15 | 2008-07-19 |  |  |  |
| 4043 | 铣外形 | 2008-06-15 | 2008-06-17 |  |  | 导弹单元64V |
| 4044 | 去毛刺，作标记 | 2008-06-17 | 2008-06-17 | 4043 |  | 毛刺台一 |
| 4045 | 研平面 | 2008-06-17 | 2008-06-18 | 4044 |  | 研磨台 |
| 4046 | 钻镗孔 | 2008-06-18 | 2008-06-18 | 4045 |  | 二工段立加三轴64V |
| 4047 | 车全部 | 2008-06-18 | 2008-06-20 | 4046 |  | 三工段车工班 |
| 4048 | 镗孔 | 2008-06-20 | 2008-06-20 | 4047 |  | 坐标镗 [99.82%] |
| 4049 | 去毛刺 | 2008-06-21 | 2008-06-21 | 4048 |  | 毛刺台二 |
| 4050 | 钻镗铰孔 | 2008-06-21 | 2008-06-23 | 4049 |  | 导弹单元FFZ200 |
| 4051 | 钻镗孔 | 2008-06-23 | 2008-06-24 | 4050 |  | 导弹单元FFZ200 |
| 4052 | 钻镗铰孔 | 2008-06-24 | 2008-06-25 | 4051 |  | 导弹单元FFZ200 |
| 4053 | 攻螺纹 | 2008-06-25 | 2008-06-26 | 4052 |  | 立式钻床 [101.19%] |
| 4054 | 钻铰孔 | 2008-06-26 | 2008-06-27 | 4053 |  | 立式钻床 |
| 4055 | 钻孔 | 2008-06-27 | 2008-06-27 | 4054 |  | 立式钻床 [99.36%] |
| 4056 | 去毛刺 | 2008-06-27 | 2008-06-27 | 4055 |  | 毛刺台一 |
| 4057 | 攻螺纹 | 2008-06-27 | 2008-06-28 | 4056 |  | 立式钻床 |
| 4058 | 攻螺纹 | 2008-06-28 | 2008-06-29 | 4057 |  | 立式钻床 |
| 4059 | 攻螺纹 | 2008-06-29 | 2008-06-29 | 4058 |  | 立式钻床 [100.1%] |
| 4060 | 去毛刺 | 2008-06-29 | 2008-06-30 | 4059 |  | 毛刺台二 |

| ID | Task | Start | Finish | Predecessors | Complete | Resources |
| --- | --- | --- | --- | --- | --- | --- |
| 4061 | 清洗 | 2008-06-30 | 2008-07-01 | 4060 |  | 毛刺台二 |
| 4062 | 检验 | 2008-07-01 | 2008-07-02 | 4061 |  | 检验 |
| 4063 | 车内孔 | 2008-07-02 | 2008-07-03 | 4062 |  | 三工段车工班 |
| 4064 | 车孔，槽，倒角 | 2008-07-03 | 2008-07-05 | 4063 |  | 三工段车工班 |
| 4065 | 车孔，R，倒角 | 2008-07-05 | 2008-07-07 | 4064 |  | 三工段车工班 |
| 4066 | 钻孔 | 2008-07-08 | 2008-07-08 | 4065 |  | 立式钻床 |
| 4067 | 锪胶圈槽 | 2008-07-08 | 2008-07-08 | 4066 |  | 立式钻床 |
| 4068 | 锪面 | 2008-07-08 | 2008-07-08 | 4067 |  | 立式钻床 [100.49%] |
| 4069 | 去毛刺 | 2008-07-08 | 2008-07-09 | 4068 |  | 毛刺研磨 |
| 4070 | 研平面 | 2008-07-09 | 2008-07-10 | 4069 |  | 研磨台 |
| 4071 | 浸 泡 | 2008-07-10 | 2008-07-10 | 4070 |  | 试验间 |
| 4072 | 超声波清洗 | 2008-07-10 | 2008-07-10 | 4071 |  | 试验间 |
| 4073 | 车面，倒角 | 2008-07-10 | 2008-07-10 | 4072 |  | 三工段车工班 |
| 4074 | 去毛刺 | 2008-07-11 | 2008-07-11 | 4073 |  | 毛刺台一 |
| 4075 | 清洗 | 2008-07-11 | 2008-07-12 | 4074 |  | 毛刺台一 |
| 4076 | 检验 | 2008-07-13 | 2008-07-14 | 4075 |  | 检验 |
| 4077 | 冲洗 | 2008-07-14 | 2008-07-14 | 4076 |  | 试验间 |
| 4078 | 检验 | 2008-07-15 | 2008-07-15 | 4077 |  | 检验 |
| 4079 | 检验 | 2008-07-17 | 2008-07-18 | 4078 |  | 检验 |
| 4080 | 包装 | 2008-07-18 | 2008-07-19 | 4079 |  | 毛刺台一 |
| 4081 | 壳体 | 2008-02-29 | 2008-07-12 |  |  |  |
| 4082 | 研平面 | 2008-06-15 | 2008-06-15 |  |  | 研磨台 |
| 4083 | 已完成任务 | 2008-02-29 | 2008-02-29 | 4082 | 100% |  |
| 4084 | 钻铰孔 | 2008-06-15 | 2008-06-17 | 4083 |  | 立式钻床 |
| 4085 | 钻孔 | 2008-06-17 | 2008-06-17 | 4084 |  | 立式钻床 [99.61%] |
| 4086 | 去毛刺 | 2008-06-17 | 2008-06-18 | 4085 |  | 毛刺台一 |
| 4087 | 攻螺纹 | 2008-06-18 | 2008-06-19 | 4086 |  | 立式钻床 |
| 4088 | 攻螺纹 | 2008-06-19 | 2008-06-20 | 4087 |  | 立式钻床 |
| 4089 | 攻螺纹 | 2008-06-20 | 2008-06-20 | 4088 |  | 立式钻床 [100.05%] |
| 4090 | 去毛刺 | 2008-06-20 | 2008-06-21 | 4089 |  | 毛刺台二 |
| 4091 | 清洗 | 2008-06-21 | 2008-06-22 | 4090 |  | 毛刺台二 |
| 4092 | 检验 | 2008-06-23 | 2008-06-23 | 4091 |  | 检验 |
| 4093 | 车内孔 | 2008-06-23 | 2008-06-25 | 4092 |  | 三工段车工班 |
| 4094 | 车孔，槽，倒角 | 2008-06-25 | 2008-06-27 | 4093 |  | 三工段车工班 |
| 4095 | 车孔，R，倒角 | 2008-06-27 | 2008-06-30 | 4094 |  | 三工段车工班 [101.3%] |
| 4096 | 钻孔 | 2008-06-30 | 2008-06-30 | 4095 |  | 立式钻床 |
| 4097 | 锪胶圈槽 | 2008-06-30 | 2008-07-01 | 4096 |  | 立式钻床 |
| 4098 | 锪面 | 2008-07-01 | 2008-07-02 | 4097 |  | 立式钻床 [101.85%] |
| 4099 | 去毛刺 | 2008-07-02 | 2008-07-02 | 4098 |  | 毛刺研磨 |
| 4100 | 研平面 | 2008-07-02 | 2008-07-03 | 4099 |  | 研磨台 |
| 4101 | 浸 泡 | 2008-07-03 | 2008-07-03 | 4100 |  | 试验间 |
| 4102 | 超声波清洗 | 2008-07-03 | 2008-07-03 | 4101 |  | 试验间 |
| 4103 | 车面，倒角 | 2008-07-03 | 2008-07-03 | 4102 |  | 三工段车工班 [100.23%] |
| 4104 | 去毛刺 | 2008-07-04 | 2008-07-04 | 4103 |  | 毛刺台一 |
| 4105 | 清洗 | 2008-07-04 | 2008-07-05 | 4104 |  | 毛刺台一 |
| 4106 | 检验 | 2008-07-06 | 2008-07-07 | 4105 |  | 检验 |
| 4107 | 冲洗 | 2008-07-07 | 2008-07-07 | 4106 |  | 试验间 |
| 4108 | 检验 | 2008-07-08 | 2008-07-08 | 4107 |  | 检验 |
| 4109 | 检验 | 2008-07-10 | 2008-07-11 | 4108 |  | 检验 |
| 4110 | 包装 | 2008-07-11 | 2008-07-12 | 4109 |  | 毛刺台一 |
| 4111 | 壳体 | 2008-05-20 | 2008-07-04 |  |  |  |
| 4112 | 攻螺纹 | 2008-06-15 | 2008-06-16 |  |  | 立式钻床 [101.19%] |
| 4113 | 已完成任务 | 2008-05-20 | 2008-05-20 | 4112 | 100% |  |
| 4114 | 检验 | 2008-06-15 | 2008-06-16 | 4113 |  | 检验 |
| 4115 | 车内孔 | 2008-06-16 | 2008-06-18 | 4114 |  | 三工段车工班 |
| 4116 | 车孔，槽，倒角 | 2008-06-18 | 2008-06-20 | 4115 |  | 三工段车工班 |
| 4117 | 车孔，R，倒角 | 2008-06-20 | 2008-06-23 | 4116 |  | 三工段车工班 [101.3%] |
| 4118 | 钻孔 | 2008-06-23 | 2008-06-23 | 4117 |  | 立式钻床 |
| 4119 | 锪胶圈槽 | 2008-06-23 | 2008-06-24 | 4118 |  | 立式钻床 |
| 4120 | 锪面 | 2008-06-24 | 2008-06-24 | 4119 |  | 立式钻床 [100.28%] |
| 4121 | 去毛刺 | 2008-06-24 | 2008-06-25 | 4120 |  | 毛刺研磨 |
| 4122 | 研平面 | 2008-06-25 | 2008-06-25 | 4121 |  | 研磨台 |
| 4123 | 浸 泡 | 2008-06-25 | 2008-06-25 | 4122 |  | 试验间 |
| 4124 | 超声波清洗 | 2008-06-25 | 2008-06-25 | 4123 |  | 试验间 |
| 4125 | 车面，倒角 | 2008-06-25 | 2008-06-26 | 4124 |  | 三工段车工班 |
| 4126 | 去毛刺 | 2008-06-26 | 2008-06-26 | 4125 |  | 毛刺台一 |
| 4127 | 清洗 | 2008-06-26 | 2008-06-27 | 4126 |  | 毛刺台一 |
| 4128 | 检验 | 2008-06-28 | 2008-06-29 | 4127 |  | 检验 |
| 4129 | 冲洗 | 2008-06-29 | 2008-06-30 | 4128 |  | 试验间 |
| 4130 | 检验 | 2008-06-30 | 2008-07-01 | 4129 |  | 检验 |

| ID | Task | Start | Finish | Predecessors | Complete | Resources |
| --- | --- | --- | --- | --- | --- | --- |
| 4131 | 检验 | 2008-07-03 | 2008-07-04 | 4130 |  | 检验 |
| 4132 | 包装 | 2008-07-04 | 2008-07-04 | 4131 |  | 毛刺台一 |
| 4133 | 壳体 | 2008-06-02 | 2008-07-26 |  |  |  |
| 4134 | 去毛刺 | 2008-06-15 | 2008-06-15 |  |  | 毛刺台一 |
| 4135 | 清洗 | 2008-06-15 | 2008-06-16 | 4134 |  | 毛刺台一 |
| 4136 | 已完成任务 | 2008-06-02 | 2008-06-02 | 4135 | 100% |  |
| 4137 | 研平面 | 2008-06-15 | 2008-06-15 | 4136 |  | 研磨台 |
| 4138 | 铣外形 | 2008-06-15 | 2008-06-18 | 4137 |  | 导弹单元64V |
| 4139 | 去毛刺，作标记 | 2008-06-18 | 2008-06-18 | 4138 |  | 毛刺台一 |
| 4140 | 研平面 | 2008-06-18 | 2008-06-19 | 4139 |  | 研磨台 |
| 4141 | 钻镗孔 | 2008-06-19 | 2008-06-20 | 4140 |  | 二工段立加三轴64V |
| 4142 | 车全部 | 2008-06-20 | 2008-06-23 | 4141 |  | 三工段车工班 |
| 4143 | 镗孔 | 2008-06-23 | 2008-06-24 | 4142 |  | 坐标镗 |
| 4144 | 去毛刺 | 2008-06-24 | 2008-06-24 | 4143 |  | 毛刺台二 |
| 4145 | 钻镗铰孔 | 2008-06-24 | 2008-06-25 | 4144 |  | 导弹单元FFZ200 |
| 4146 | 钻镗孔 | 2008-06-25 | 2008-06-26 | 4145 |  | 导弹单元FFZ200 |
| 4147 | 钻镗铰孔 | 2008-06-26 | 2008-06-27 | 4146 |  | 导弹单元FFZ200 |
| 4148 | 攻螺纹 | 2008-06-28 | 2008-06-29 | 4147 |  | 立式钻床 |
| 4149 | 钻铰孔 | 2008-06-29 | 2008-07-01 | 4148 |  | 立式钻床 |
| 4150 | 钻孔 | 2008-07-01 | 2008-07-01 | 4149 |  | 立式钻床 |
| 4151 | 去毛刺 | 2008-07-01 | 2008-07-02 | 4150 |  | 毛刺台一 |
| 4152 | 攻螺纹 | 2008-07-02 | 2008-07-03 | 4151 |  | 立式钻床 |
| 4153 | 攻螺纹 | 2008-07-03 | 2008-07-04 | 4152 |  | 立式钻床 |
| 4154 | 攻螺纹 | 2008-07-04 | 2008-07-05 | 4153 |  | 立式钻床 |
| 4155 | 去毛刺 | 2008-07-05 | 2008-07-05 | 4154 |  | 毛刺台二 |
| 4156 | 清洗 | 2008-07-06 | 2008-07-06 | 4155 |  | 毛刺台二 |
| 4157 | 检验 | 2008-07-07 | 2008-07-07 | 4156 |  | 检验 |
| 4158 | 车内孔 | 2008-07-07 | 2008-07-09 | 4157 |  | 三工段车工班 |
| 4159 | 车孔，槽，倒角 | 2008-07-09 | 2008-07-11 | 4158 |  | 三工段车工班 |
| 4160 | 车孔，R，倒角 | 2008-07-11 | 2008-07-14 | 4159 |  | 三工段车工班 |
| 4161 | 钻孔 | 2008-07-14 | 2008-07-14 | 4160 |  | 立式钻床 |
| 4162 | 锪胶圈槽 | 2008-07-14 | 2008-07-16 | 4161 |  | 立式钻床 |
| 4163 | 锪面 | 2008-07-16 | 2008-07-16 | 4162 |  | 立式钻床 |
| 4164 | 去毛刺 | 2008-07-16 | 2008-07-16 | 4163 |  | 毛刺研磨 |
| 4165 | 研平面 | 2008-07-16 | 2008-07-17 | 4164 |  | 研磨台 |
| 4166 | 浸 泡 | 2008-07-17 | 2008-07-17 | 4165 |  | 试验间 |
| 4167 | 超声波清洗 | 2008-07-17 | 2008-07-17 | 4166 |  | 试验间 |
| 4168 | 车面，倒角 | 2008-07-17 | 2008-07-18 | 4167 |  | 三工段车工班 |
| 4169 | 去毛刺 | 2008-07-18 | 2008-07-18 | 4168 |  | 毛刺台一 |
| 4170 | 清洗 | 2008-07-18 | 2008-07-19 | 4169 |  | 毛刺台一 |
| 4171 | 检验 | 2008-07-20 | 2008-07-21 | 4170 |  | 检验 |
| 4172 | 冲洗 | 2008-07-21 | 2008-07-21 | 4171 |  | 试验间 |
| 4173 | 检验 | 2008-07-22 | 2008-07-22 | 4172 |  | 检验 |
| 4174 | 检验 | 2008-07-24 | 2008-07-25 | 4173 |  | 检验 |
| 4175 | 包装 | 2008-07-25 | 2008-07-26 | 4174 |  | 毛刺台一 |
| 4176 | 壳体 | 2008-06-15 | 2008-08-02 |  |  |  |
| 4177 | 铣外形 | 2008-06-15 | 2008-06-16 |  |  | 导弹单元64V |
| 4178 | 铣外形 | 2008-06-16 | 2008-06-17 | 4177 |  | 导弹单元64V |
| 4179 | 去毛刺 | 2008-06-18 | 2008-06-18 | 4178 |  | 毛刺台一 |
| 4180 | 清洗 | 2008-06-18 | 2008-06-19 | 4179 |  | 毛刺台一 |
| 4181 | 研平面 | 2008-06-21 | 2008-06-21 | 4180 |  | 研磨台 |
| 4182 | 铣外形 | 2008-06-21 | 2008-06-24 | 4181 |  | 导弹单元64V |
| 4183 | 去毛刺，作标记 | 2008-06-25 | 2008-06-25 | 4182 |  | 毛刺台一 |
| 4184 | 研平面 | 2008-06-25 | 2008-06-26 | 4183 |  | 研磨台 |
| 4185 | 钻镗孔 | 2008-06-26 | 2008-06-26 | 4184 |  | 二工段立加三轴64V |
| 4186 | 车全部 | 2008-06-26 | 2008-06-30 | 4185 |  | 三工段车工班 |
| 4187 | 镗孔 | 2008-06-30 | 2008-06-30 | 4186 |  | 坐标镗 |
| 4188 | 去毛刺 | 2008-07-01 | 2008-07-01 | 4187 |  | 毛刺台二 |
| 4189 | 钻镗铰孔 | 2008-07-01 | 2008-07-02 | 4188 |  | 导弹单元FFZ200 |
| 4190 | 钻镗孔 | 2008-07-02 | 2008-07-03 | 4189 |  | 导弹单元FFZ200 |
| 4191 | 钻镗铰孔 | 2008-07-03 | 2008-07-04 | 4190 |  | 导弹单元FFZ200 |
| 4192 | 攻螺纹 | 2008-07-05 | 2008-07-06 | 4191 |  | 立式钻床 |
| 4193 | 钻铰孔 | 2008-07-06 | 2008-07-08 | 4192 |  | 立式钻床 |
| 4194 | 钻孔 | 2008-07-08 | 2008-07-08 | 4193 |  | 立式钻床 |
| 4195 | 去毛刺 | 2008-07-08 | 2008-07-09 | 4194 |  | 毛刺台一 |
| 4196 | 攻螺纹 | 2008-07-09 | 2008-07-10 | 4195 |  | 立式钻床 |
| 4197 | 攻螺纹 | 2008-07-10 | 2008-07-11 | 4196 |  | 立式钻床 |
| 4198 | 攻螺纹 | 2008-07-11 | 2008-07-12 | 4197 |  | 立式钻床 |
| 4199 | 去毛刺 | 2008-07-12 | 2008-07-12 | 4198 |  | 毛刺台二 |
| 4200 | 清洗 | 2008-07-13 | 2008-07-13 | 4199 |  | 毛刺台二 |

| ID | Task | Start | Finish | Predecessors | Resources |
| --- | --- | --- | --- | --- | --- |
| 4201 | 检验 | 2008-07-14 | 2008-07-14 | 4200 | 检验 |
| 4202 | 车内孔 | 2008-07-14 | 2008-07-16 | 4201 | 三工段车工班 |
| 4203 | 车孔，槽，倒角 | 2008-07-16 | 2008-07-18 | 4202 | 三工段车工班 |
| 4204 | 车孔，R，倒角 | 2008-07-18 | 2008-07-21 | 4203 | 三工段车工班 |
| 4205 | 钻孔 | 2008-07-21 | 2008-07-21 | 4204 | 立式钻床 |
| 4206 | 锪胶圈槽 | 2008-07-21 | 2008-07-23 | 4205 | 立式钻床 |
| 4207 | 锪面 | 2008-07-23 | 2008-07-23 | 4206 | 立式钻床 |
| 4208 | 去毛刺 | 2008-07-23 | 2008-07-23 | 4207 | 毛刺研磨 |
| 4209 | 研平面 | 2008-07-23 | 2008-07-24 | 4208 | 研磨台 |
| 4210 | 浸 泡 | 2008-07-24 | 2008-07-24 | 4209 | 试验间 |
| 4211 | 超声波清洗 | 2008-07-24 | 2008-07-24 | 4210 | 试验间 |
| 4212 | 车面，倒角 | 2008-07-24 | 2008-07-25 | 4211 | 三工段车工班 |
| 4213 | 去毛刺 | 2008-07-25 | 2008-07-25 | 4212 | 毛刺台一 |
| 4214 | 清洗 | 2008-07-25 | 2008-07-26 | 4213 | 毛刺台一 |
| 4215 | 检验 | 2008-07-27 | 2008-07-28 | 4214 | 检验 |
| 4216 | 冲洗 | 2008-07-28 | 2008-07-28 | 4215 | 试验间 |
| 4217 | 检验 | 2008-07-29 | 2008-07-29 | 4216 | 检验 |
| 4218 | 检验 | 2008-07-31 | 2008-08-01 | 4217 | 检验 |
| 4219 | 包装 | 2008-08-01 | 2008-08-02 | 4218 | 毛刺台一 |
| 4220 | 壳体 | 2008-06-15 | 2008-08-05 |  |  |
| 4221 | 车外圆，端面 | 2008-06-15 | 2008-06-16 |  | 三工段车工班 |
| 4222 | 钻铰孔 | 2008-06-16 | 2008-06-17 | 4221 | 立式钻床 |
| 4223 | 倒角，去毛刺 | 2008-06-17 | 2008-06-17 | 4222 | 毛刺台一 |
| 4224 | 铣外形 | 2008-06-17 | 2008-06-19 | 4223 | 导弹单元64V |
| 4225 | 铣外形 | 2008-06-19 | 2008-06-20 | 4224 | 导弹单元64V |
| 4226 | 去毛刺 | 2008-06-21 | 2008-06-21 | 4225 | 毛刺台一 |
| 4227 | 清洗 | 2008-06-21 | 2008-06-22 | 4226 | 毛刺台一 |
| 4228 | 研平面 | 2008-06-24 | 2008-06-24 | 4227 | 研磨台 |
| 4229 | 铣外形 | 2008-06-24 | 2008-06-26 | 4228 | 导弹单元64V |
| 4230 | 去毛刺，作标记 | 2008-06-27 | 2008-06-27 | 4229 | 毛刺台一 |
| 4231 | 研平面 | 2008-06-27 | 2008-06-28 | 4230 | 研磨台 |
| 4232 | 钻镗孔 | 2008-06-28 | 2008-06-29 | 4231 | 二工段立加三轴64V |
| 4233 | 车全部 | 2008-06-29 | 2008-07-02 | 4232 | 三工段车工班 |
| 4234 | 镗孔 | 2008-07-02 | 2008-07-02 | 4233 | 坐标镗 |
| 4235 | 去毛刺 | 2008-07-02 | 2008-07-03 | 4234 | 毛刺台二 |
| 4236 | 钻镗铰孔 | 2008-07-03 | 2008-07-04 | 4235 | 导弹单元FFZ200 |
| 4237 | 钻镗孔 | 2008-07-04 | 2008-07-06 | 4236 | 导弹单元FFZ200 |
| 4238 | 钻镗铰孔 | 2008-07-06 | 2008-07-07 | 4237 | 导弹单元FFZ200 |
| 4239 | 攻螺纹 | 2008-07-08 | 2008-07-08 | 4238 | 立式钻床 |
| 4240 | 钻铰孔 | 2008-07-08 | 2008-07-10 | 4239 | 立式钻床 |
| 4241 | 钻孔 | 2008-07-10 | 2008-07-10 | 4240 | 立式钻床 |
| 4242 | 去毛刺 | 2008-07-10 | 2008-07-11 | 4241 | 毛刺台一 |
| 4243 | 攻螺纹 | 2008-07-11 | 2008-07-13 | 4242 | 立式钻床 |
| 4244 | 攻螺纹 | 2008-07-13 | 2008-07-14 | 4243 | 立式钻床 |
| 4245 | 攻螺纹 | 2008-07-14 | 2008-07-15 | 4244 | 立式钻床 |
| 4246 | 去毛刺 | 2008-07-15 | 2008-07-15 | 4245 | 毛刺台二 |
| 4247 | 清洗 | 2008-07-15 | 2008-07-16 | 4246 | 毛刺台二 |
| 4248 | 检验 | 2008-07-17 | 2008-07-17 | 4247 | 检验 |
| 4249 | 车内孔 | 2008-07-17 | 2008-07-20 | 4248 | 三工段车工班 |
| 4250 | 车孔，槽，倒角 | 2008-07-20 | 2008-07-22 | 4249 | 三工段车工班 |
| 4251 | 车孔，R，倒角 | 2008-07-22 | 2008-07-24 | 4250 | 三工段车工班 |
| 4252 | 钻孔 | 2008-07-24 | 2008-07-24 | 4251 | 立式钻床 |
| 4253 | 锪胶圈槽 | 2008-07-24 | 2008-07-26 | 4252 | 立式钻床 |
| 4254 | 锪面 | 2008-07-26 | 2008-07-26 | 4253 | 立式钻床 |
| 4255 | 去毛刺 | 2008-07-26 | 2008-07-27 | 4254 | 毛刺研磨 |
| 4256 | 研平面 | 2008-07-27 | 2008-07-28 | 4255 | 研磨台 |
| 4257 | 浸 泡 | 2008-07-28 | 2008-07-28 | 4256 | 试验间 |
| 4258 | 超声波清洗 | 2008-07-28 | 2008-07-28 | 4257 | 试验间 |
| 4259 | 车面，倒角 | 2008-07-28 | 2008-07-28 | 4258 | 三工段车工班 |
| 4260 | 去毛刺 | 2008-07-29 | 2008-07-29 | 4259 | 毛刺台一 |
| 4261 | 清洗 | 2008-07-29 | 2008-07-30 | 4260 | 毛刺台一 |
| 4262 | 检验 | 2008-07-30 | 2008-07-31 | 4261 | 检验 |
| 4263 | 冲洗 | 2008-07-31 | 2008-07-31 | 4262 | 试验间 |
| 4264 | 检验 | 2008-08-01 | 2008-08-01 | 4263 | 检验 |
| 4265 | 检验 | 2008-08-04 | 2008-08-04 | 4264 | 检验 |
| 4266 | 包装 | 2008-08-05 | 2008-08-05 | 4265 | 毛刺台一 |
| 4267 | 壳体 | 2008-06-15 | 2008-08-05 |  |  |
| 4268 | 车外圆，端面 | 2008-06-15 | 2008-06-16 |  | 三工段车工班 |
| 4269 | 钻铰孔 | 2008-06-17 | 2008-06-17 | 4268 | 立式钻床 |
| 4270 | 倒角，去毛刺 | 2008-06-17 | 2008-06-17 | 4269 | 毛刺台一 |

| ID | Task | Start | Finish | Predecessors | Resources |
| --- | --- | --- | --- | --- | --- |
| 4271 | 铣外形 | 2008-06-17 | 2008-06-19 | 4270 | 导弹单元64V |
| 4272 | 铣外形 | 2008-06-19 | 2008-06-20 | 4271 | 导弹单元64V |
| 4273 | 去毛刺 | 2008-06-21 | 2008-06-21 | 4272 | 毛刺台一 |
| 4274 | 清洗 | 2008-06-21 | 2008-06-22 | 4273 | 毛刺台一 |
| 4275 | 研平面 | 2008-06-24 | 2008-06-24 | 4274 | 研磨台 |
| 4276 | 铣外形 | 2008-06-24 | 2008-06-26 | 4275 | 导弹单元64V |
| 4277 | 去毛刺，作标记 | 2008-06-27 | 2008-06-27 | 4276 | 毛刺台一 |
| 4278 | 研平面 | 2008-06-27 | 2008-06-28 | 4277 | 研磨台 |
| 4279 | 钻镗孔 | 2008-06-28 | 2008-06-29 | 4278 | 二工段立加三轴64V |
| 4280 | 车全部 | 2008-06-29 | 2008-07-02 | 4279 | 三工段车工班 |
| 4281 | 镗孔 | 2008-07-02 | 2008-07-02 | 4280 | 坐标镗 |
| 4282 | 去毛刺 | 2008-07-02 | 2008-07-03 | 4281 | 毛刺台二 |
| 4283 | 钻镗铰孔 | 2008-07-03 | 2008-07-04 | 4282 | 导弹单元FFZ200 |
| 4284 | 钻镗孔 | 2008-07-04 | 2008-07-06 | 4283 | 导弹单元FFZ200 |
| 4285 | 钻镗铰孔 | 2008-07-06 | 2008-07-07 | 4284 | 导弹单元FFZ200 |
| 4286 | 攻螺纹 | 2008-07-08 | 2008-07-08 | 4285 | 立式钻床 |
| 4287 | 钻铰孔 | 2008-07-08 | 2008-07-10 | 4286 | 立式钻床 |
| 4288 | 钻孔 | 2008-07-10 | 2008-07-10 | 4287 | 立式钻床 |
| 4289 | 去毛刺 | 2008-07-10 | 2008-07-11 | 4288 | 毛刺台一 |
| 4290 | 攻螺纹 | 2008-07-11 | 2008-07-13 | 4289 | 立式钻床 |
| 4291 | 攻螺纹 | 2008-07-13 | 2008-07-14 | 4290 | 立式钻床 |
| 4292 | 攻螺纹 | 2008-07-14 | 2008-07-15 | 4291 | 立式钻床 |
| 4293 | 去毛刺 | 2008-07-15 | 2008-07-15 | 4292 | 毛刺台二 |
| 4294 | 清洗 | 2008-07-15 | 2008-07-16 | 4293 | 毛刺台二 |
| 4295 | 检验 | 2008-07-17 | 2008-07-17 | 4294 | 检验 |
| 4296 | 车内孔 | 2008-07-17 | 2008-07-20 | 4295 | 三工段车工班 |
| 4297 | 车孔，槽，倒角 | 2008-07-20 | 2008-07-22 | 4296 | 三工段车工班 |
| 4298 | 车孔，R，倒角 | 2008-07-22 | 2008-07-24 | 4297 | 三工段车工班 |
| 4299 | 钻孔 | 2008-07-24 | 2008-07-24 | 4298 | 立式钻床 |
| 4300 | 锪胶圈槽 | 2008-07-24 | 2008-07-26 | 4299 | 立式钻床 |
| 4301 | 锪面 | 2008-07-26 | 2008-07-26 | 4300 | 立式钻床 |
| 4302 | 去毛刺 | 2008-07-26 | 2008-07-27 | 4301 | 毛刺研磨 |
| 4303 | 研平面 | 2008-07-27 | 2008-07-28 | 4302 | 研磨台 |
| 4304 | 浸 泡 | 2008-07-28 | 2008-07-28 | 4303 | 试验间 |
| 4305 | 超声波清洗 | 2008-07-28 | 2008-07-28 | 4304 | 试验间 |
| 4306 | 车面，倒角 | 2008-07-28 | 2008-07-28 | 4305 | 三工段车工班 |
| 4307 | 去毛刺 | 2008-07-29 | 2008-07-29 | 4306 | 毛刺台一 |
| 4308 | 清洗 | 2008-07-29 | 2008-07-30 | 4307 | 毛刺台一 |
| 4309 | 检验 | 2008-07-30 | 2008-07-31 | 4308 | 检验 |
| 4310 | 冲洗 | 2008-07-31 | 2008-07-31 | 4309 | 试验间 |
| 4311 | 检验 | 2008-08-01 | 2008-08-01 | 4310 | 检验 |
| 4312 | 检验 | 2008-08-04 | 2008-08-04 | 4311 | 检验 |
| 4313 | 包装 | 2008-08-05 | 2008-08-05 | 4312 | 毛刺台一 |
| 4314 | 壳体 | 2008-06-15 | 2008-07-23 |  |  |
| 4315 | 车外圆，端面 | 2008-06-15 | 2008-06-16 |  | 三工段车工班 |
| 4316 | 钻铰孔 | 2008-06-16 | 2008-06-16 | 4315 | 立式钻床 [100.54%] |
| 4317 | 倒角，去毛刺 | 2008-06-16 | 2008-06-16 | 4316 | 毛刺台一 |
| 4318 | 铣外形 | 2008-06-16 | 2008-06-17 | 4317 | 导弹单元64V |
| 4319 | 铣外形 | 2008-06-17 | 2008-06-18 | 4318 | 导弹单元64V |
| 4320 | 去毛刺 | 2008-06-19 | 2008-06-19 | 4319 | 毛刺台一 |
| 4321 | 清洗 | 2008-06-19 | 2008-06-20 | 4320 | 毛刺台一 |
| 4322 | 研平面 | 2008-06-22 | 2008-06-22 | 4321 | 研磨台 |
| 4323 | 铣外形 | 2008-06-22 | 2008-06-24 | 4322 | 导弹单元64V [100.94%] |
| 4324 | 去毛刺，作标记 | 2008-06-24 | 2008-06-25 | 4323 | 毛刺台一 |
| 4325 | 研平面 | 2008-06-25 | 2008-06-25 | 4324 | 研磨台 |
| 4326 | 钻镗孔 | 2008-06-25 | 2008-06-26 | 4325 | 二工段立加三轴64V |
| 4327 | 车全部 | 2008-06-26 | 2008-06-27 | 4326 | 三工段车工班 |
| 4328 | 镗孔 | 2008-06-27 | 2008-06-27 | 4327 | 坐标镗 [99.86%] |
| 4329 | 去毛刺 | 2008-06-28 | 2008-06-28 | 4328 | 毛刺台二 |
| 4330 | 钻镗铰孔 | 2008-06-28 | 2008-06-30 | 4329 | 导弹单元FFZ200 |
| 4331 | 钻镗孔 | 2008-06-30 | 2008-07-01 | 4330 | 导弹单元FFZ200 |
| 4332 | 钻镗铰孔 | 2008-07-01 | 2008-07-02 | 4331 | 导弹单元FFZ200 |
| 4333 | 攻螺纹 | 2008-07-02 | 2008-07-02 | 4332 | 立式钻床 [100.21%] |
| 4334 | 钻铰孔 | 2008-07-02 | 2008-07-03 | 4333 | 立式钻床 |
| 4335 | 钻孔 | 2008-07-03 | 2008-07-04 | 4334 | 立式钻床 |
| 4336 | 去毛刺 | 2008-07-04 | 2008-07-04 | 4335 | 毛刺台一 |
| 4337 | 攻螺纹 | 2008-07-04 | 2008-07-05 | 4336 | 立式钻床 |
| 4338 | 攻螺纹 | 2008-07-05 | 2008-07-06 | 4337 | 立式钻床 |
| 4339 | 攻螺纹 | 2008-07-06 | 2008-07-06 | 4338 | 立式钻床 [100.21%] |
| 4340 | 去毛刺 | 2008-07-06 | 2008-07-07 | 4339 | 毛刺台二 |

| ID | Task | Start | Finish | Predecessors | Resources |
| --- | --- | --- | --- | --- | --- |
| 4341 | 清洗 | 2008-07-07 | 2008-07-07 | 4340 | 毛刺台二 |
| 4342 | 检验 | 2008-07-08 | 2008-07-08 | 4341 | 检验 |
| 4343 | 车内孔 | 2008-07-08 | 2008-07-09 | 4342 | 三工段车工班 |
| 4344 | 车孔，槽，倒角 | 2008-07-09 | 2008-07-11 | 4343 | 三工段车工班 |
| 4345 | 车孔，R，倒角 | 2008-07-11 | 2008-07-13 | 4344 | 三工段车工班 [114.29%] |
| 4346 | 钻孔 | 2008-07-13 | 2008-07-13 | 4345 | 立式钻床 |
| 4347 | 锪胶圈槽 | 2008-07-13 | 2008-07-14 | 4346 | 立式钻床 |
| 4348 | 锪面 | 2008-07-14 | 2008-07-14 | 4347 | 立式钻床 [99.75%] |
| 4349 | 去毛刺 | 2008-07-14 | 2008-07-15 | 4348 | 毛刺研磨 |
| 4350 | 研平面 | 2008-07-15 | 2008-07-15 | 4349 | 研磨台 |
| 4351 | 浸 泡 | 2008-07-15 | 2008-07-15 | 4350 | 试验间 |
| 4352 | 超声波清洗 | 2008-07-15 | 2008-07-15 | 4351 | 试验间 |
| 4353 | 车面，倒角 | 2008-07-15 | 2008-07-15 | 4352 | 三工段车工班 [100.41%] |
| 4354 | 去毛刺 | 2008-07-16 | 2008-07-16 | 4353 | 毛刺台一 |
| 4355 | 清洗 | 2008-07-16 | 2008-07-17 | 4354 | 毛刺台一 |
| 4356 | 检验 | 2008-07-17 | 2008-07-18 | 4355 | 检验 |
| 4357 | 冲洗 | 2008-07-18 | 2008-07-18 | 4356 | 试验间 |
| 4358 | 检验 | 2008-07-19 | 2008-07-20 | 4357 | 检验 |
| 4359 | 检验 | 2008-07-22 | 2008-07-23 | 4358 | 检验 |
| 4360 | 包装 | 2008-07-23 | 2008-07-23 | 4359 | 毛刺台一 |
| 4361 | 接线盒壳体 | 2008-06-15 | 2008-07-18 |  |  |
| 4362 | 铣浇冒口 | 2008-06-15 | 2008-06-15 |  | 立铣 |
| 4363 | 铣平面钻镗孔 | 2008-06-15 | 2008-06-17 | 4362 | 导弹单元FFZ200 |
| 4364 | 铣平面钻镗孔 | 2008-06-17 | 2008-06-19 | 4363 | 四轴卧加 |
| 4365 | 去毛刺 | 2008-06-20 | 2008-06-20 | 4364 | 毛刺研磨 |
| 4366 | 铣平面钻镗孔 | 2008-06-20 | 2008-06-23 | 4365 | 四轴卧加 |
| 4367 | 铣平面，槽 | 2008-06-23 | 2008-06-25 | 4366 | 导弹单元FFZ200 |
| 4368 | 铣台阶 | 2008-06-25 | 2008-06-28 | 4367 | 导弹单元FFZ200 |
| 4369 | 去毛刺 | 2008-06-28 | 2008-06-29 | 4368 | 毛刺台二 |
| 4370 | 铣平面 | 2008-06-29 | 2008-07-01 | 4369 | 导弹单元FFZ200 |
| 4371 | 铣内腔 | 2008-07-01 | 2008-07-04 | 4370 | 导弹单元FFZ200 |
| 4372 | 攻螺纹 | 2008-07-04 | 2008-07-05 | 4371 | 毛刺研磨 |
| 4373 | 去毛刺 | 2008-07-05 | 2008-07-06 | 4372 | 毛刺研磨 |
| 4374 | 清洗 | 2008-07-06 | 2008-07-06 | 4373 | 毛刺研磨 |
| 4375 | 检验 | 2008-07-07 | 2008-07-07 | 4374 | 检验 |
| 4376 | 油封 | 2008-07-08 | 2008-07-08 | 4375 | 毛刺研磨 |
| 4377 | 配套 | 2008-07-08 | 2008-07-08 | 4376 | 三工段钳工 |
| 4378 | 组合 | 2008-07-08 | 2008-07-09 | 4377 | 三工段钳工 |
| 4379 | 铣型面，槽 | 2008-07-09 | 2008-07-09 | 4378 | 四轴立卧加 |
| 4380 | 去毛刺 | 2008-07-10 | 2008-07-10 | 4379 | 毛刺研磨 |
| 4381 | 清洗 | 2008-07-10 | 2008-07-11 | 4380 | 毛刺研磨 |
| 4382 | 检验 | 2008-07-11 | 2008-07-13 | 4381 | 检验 |
| 4383 | 铬酸阳极化 | 2008-07-14 | 2008-07-15 | 4382 | 外协 |
| 4384 | 检验 | 2008-07-17 | 2008-07-18 | 4383 | 检验 |
| 4385 | 配套入库 | 2008-07-18 | 2008-07-18 | 4384 | 三工段钳工 |
| 4386 | 接线盒壳体 | 2008-06-15 | 2008-07-18 |  |  |
| 4387 | 铣浇冒口 | 2008-06-15 | 2008-06-15 |  | 立铣 |
| 4388 | 铣平面钻镗孔 | 2008-06-15 | 2008-06-17 | 4387 | 导弹单元FFZ200 |
| 4389 | 铣平面钻镗孔 | 2008-06-17 | 2008-06-19 | 4388 | 四轴卧加 |
| 4390 | 去毛刺 | 2008-06-20 | 2008-06-20 | 4389 | 毛刺研磨 |
| 4391 | 铣平面钻镗孔 | 2008-06-20 | 2008-06-23 | 4390 | 四轴卧加 |
| 4392 | 铣平面，槽 | 2008-06-23 | 2008-06-25 | 4391 | 导弹单元FFZ200 |
| 4393 | 铣台阶 | 2008-06-25 | 2008-06-28 | 4392 | 导弹单元FFZ200 |
| 4394 | 去毛刺 | 2008-06-28 | 2008-06-29 | 4393 | 毛刺台二 |
| 4395 | 铣平面 | 2008-06-29 | 2008-07-01 | 4394 | 导弹单元FFZ200 |
| 4396 | 铣内腔 | 2008-07-01 | 2008-07-04 | 4395 | 导弹单元FFZ200 |
| 4397 | 攻螺纹 | 2008-07-04 | 2008-07-05 | 4396 | 毛刺研磨 |
| 4398 | 去毛刺 | 2008-07-05 | 2008-07-06 | 4397 | 毛刺研磨 |
| 4399 | 清洗 | 2008-07-06 | 2008-07-06 | 4398 | 毛刺研磨 |
| 4400 | 检验 | 2008-07-07 | 2008-07-07 | 4399 | 检验 |
| 4401 | 油封 | 2008-07-08 | 2008-07-08 | 4400 | 毛刺研磨 |
| 4402 | 配套 | 2008-07-08 | 2008-07-08 | 4401 | 三工段钳工 |
| 4403 | 组合 | 2008-07-08 | 2008-07-09 | 4402 | 三工段钳工 |
| 4404 | 铣型面，槽 | 2008-07-09 | 2008-07-09 | 4403 | 四轴立卧加 |
| 4405 | 去毛刺 | 2008-07-10 | 2008-07-10 | 4404 | 毛刺研磨 |
| 4406 | 清洗 | 2008-07-10 | 2008-07-11 | 4405 | 毛刺研磨 |
| 4407 | 检验 | 2008-07-11 | 2008-07-13 | 4406 | 检验 |
| 4408 | 铬酸阳极化 | 2008-07-14 | 2008-07-15 | 4407 | 外协 |
| 4409 | 检验 | 2008-07-17 | 2008-07-18 | 4408 | 检验 |
| 4410 | 配套入库 | 2008-07-18 | 2008-07-18 | 4409 | 三工段钳工 |

| ID | Task | Start | Finish | Predecessors | Resources |
| --- | --- | --- | --- | --- | --- |
| 4411 | 上壳体 | 2008-06-14 | 2008-06-14 |  |  |
| 4412 | 铣浇冒口 | 2008-06-14 | 2008-06-14 |  | 立铣 |
| 4413 | 打号 修磨基准 | 2008-06-14 | 2008-06-14 | 4412 | 毛刺研磨 |
| 4414 | 铣面 钻镗孔 | 2008-06-14 | 2008-06-14 | 4413 | 四轴卧加 |
| 4415 | 去毛刺 做R 抛光 | 2008-06-14 | 2008-06-14 | 4414 | 毛刺研磨 |
| 4416 | 铣面 钻镗孔 | 2008-06-14 | 2008-06-14 | 4415 | 五轴立卧加 |
| 4417 | 铣面 钻镗孔 | 2008-06-14 | 2008-06-14 | 4416 | 五轴立卧加 |
| 4418 | 铣面 槽 钻孔 | 2008-06-14 | 2008-06-14 | 4417 | 五轴立卧加 |
| 4419 | 铣面 钻镗孔 | 2008-06-14 | 2008-06-14 | 4418 | 导弹单元64V |
| 4420 | 铣面 钻镗孔 | 2008-06-14 | 2008-06-14 | 4419 | 五轴立卧加 |
| 4421 | 铣面 | 2008-06-14 | 2008-06-14 | 4420 | 立铣 |
| 4422 | 去毛刺 做R 抛光 | 2008-06-14 | 2008-06-14 | 4421 | 毛刺研磨 |
| 4423 | 钻孔 | 2008-06-14 | 2008-06-14 | 4422 | 立式钻床 |
| 4424 | 钻孔 | 2008-06-14 | 2008-06-14 | 4423 | 立式钻床 |
| 4425 | 钻孔 | 2008-06-14 | 2008-06-14 | 4424 | 立式钻床 |
| 4426 | 钻孔 | 2008-06-14 | 2008-06-14 | 4425 | 立式钻床 |
| 4427 | 钻孔 | 2008-06-14 | 2008-06-14 | 4426 | 立式钻床 |
| 4428 | 钻孔 | 2008-06-14 | 2008-06-14 | 4427 | 立式钻床 |
| 4429 | 钻孔 | 2008-06-14 | 2008-06-14 | 4428 | 立式钻床 |
| 4430 | 钻孔 | 2008-06-14 | 2008-06-14 | 4429 | 立式钻床 |
| 4431 | 攻螺纹 | 2008-06-14 | 2008-06-14 | 4430 | 毛刺研磨 |
| 4432 | 划线 钻孔 | 2008-06-14 | 2008-06-14 | 4431 | 立式钻床 |
| 4433 | 去毛刺 | 2008-06-14 | 2008-06-14 | 4432 | 毛刺研磨 |
| 4434 | 热浸泡 | 2008-06-14 | 2008-06-14 | 4433 | 试验间 |
| 4435 | 超声波清洗 | 2008-06-14 | 2008-06-14 | 4434 | 试验间 |
| 4436 | 铣面 | 2008-06-14 | 2008-06-14 | 4435 | 立铣 |
| 4437 | 铣面 | 2008-06-14 | 2008-06-14 | 4436 | 立铣 |
| 4438 | 去毛刺 | 2008-06-14 | 2008-06-14 | 4437 | 毛刺研磨 |
| 4439 | 清洗 | 2008-06-14 | 2008-06-14 | 4438 | 毛刺研磨 |
| 4440 | 检验 | 2008-06-14 | 2008-06-14 | 4439 | 检验 |
| 4441 | 研内孔 | 2008-06-14 | 2008-06-14 | 4440 | 毛刺研磨 |
| 4442 | 超声波清洗 | 2008-06-14 | 2008-06-14 | 4441 | 试验间 |
| 4443 | 检验 | 2008-06-14 | 2008-06-14 | 4442 | 检验 |
| 4444 | 强度试验 | 2008-06-14 | 2008-06-14 | 4443 | 试验间 |
| 4445 | 气密性试验 | 2008-06-14 | 2008-06-14 | 4444 | 试验间 |
| 4446 | 冲洗 | 2008-06-14 | 2008-06-14 | 4445 | 试验间 |
| 4447 | 检验 | 2008-06-14 | 2008-06-14 | 4446 | 检验 |
| 4448 | 攻螺纹 | 2008-06-14 | 2008-06-14 | 4447 | 毛刺研磨 |
| 4449 | 清洗 | 2008-06-14 | 2008-06-14 | 4448 | 毛刺研磨 |
| 4450 | 检验 | 2008-06-14 | 2008-06-14 | 4449 | 检验 |
| 4451 | 配套 | 2008-06-14 | 2008-06-14 | 4450 | 毛刺研磨 |
| 4452 | 组合 | 2008-06-14 | 2008-06-14 | 4451 | 毛刺研磨 |
| 4453 | 铣弧面 铣豆型孔 | 2008-06-14 | 2008-06-14 | 4452 | 五轴立卧加 |
| 4454 | 拆卸 去毛刺 | 2008-06-14 | 2008-06-14 | 4453 | 毛刺研磨 |
| 4455 | 清洗 | 2008-06-14 | 2008-06-14 | 4454 | 毛刺研磨 |
| 4456 | 检验 | 2008-06-14 | 2008-06-14 | 4455 | 检验 |
| 4457 | 冲洗 | 2008-06-14 | 2008-06-14 | 4456 | 试验间 |
| 4458 | 检验 | 2008-06-14 | 2008-06-14 | 4457 | 检验 |
| 4459 | 油封 | 2008-06-14 | 2008-06-14 | 4458 | 毛刺研磨 |
| 4460 | 下壳体 | 2008-06-15 | 2008-07-19 |  |  |
| 4461 | 铣浇冒口 | 2008-06-15 | 2008-06-15 |  | 立铣 |
| 4462 | 去毛刺 | 2008-06-15 | 2008-06-16 | 4461 | 毛刺台一 |
| 4463 | 钻、车孔 | 2008-06-16 | 2008-06-17 | 4462 | 数控车 |
| 4464 | 划线、打点 | 2008-06-17 | 2008-06-17 | 4463 | 五轴立卧加 |
| 4465 | 铣平面、钻镗孔 | 2008-06-17 | 2008-06-18 | 4464 | 五轴立卧加 |
| 4466 | 去毛刺 | 2008-06-18 | 2008-06-18 | 4465 | 毛刺台二 |
| 4467 | 清洗 | 2008-06-18 | 2008-06-19 | 4466 | 毛刺台二 |
| 4468 | 检验 | 2008-06-19 | 2008-06-20 | 4467 | 检验 |
| 4469 | 铣平面、钻镗孔 | 2008-06-21 | 2008-06-22 | 4468 | 四轴卧加 |
| 4470 | 铣平面、钻镗孔 | 2008-06-22 | 2008-06-23 | 4469 | 五轴立卧加 |
| 4471 | 铣平面、钻镗孔 | 2008-06-23 | 2008-06-23 | 4470 | 五轴立卧加 |
| 4472 | 钻镗孔、车槽 | 2008-06-23 | 2008-06-24 | 4471 | 数控车 |
| 4473 | 钻镗孔、车槽 | 2008-06-24 | 2008-06-24 | 4472 | 数控车 |
| 4474 | 铣平面、钻镗孔 | 2008-06-27 | 2008-06-27 | 4473 | 五轴立卧加 |
| 4475 | 去毛刺、抛光 | 2008-06-28 | 2008-06-28 | 4474 | 毛刺台二 |
| 4476 | 钻孔 | 2008-07-04 | 2008-07-04 | 4475 | 毛刺台二 |
| 4477 | 去毛刺 | 2008-07-04 | 2008-07-05 | 4476 | 毛刺台二 |
| 4478 | 浸泡 | 2008-07-05 | 2008-07-06 | 4477 | 试验间 |
| 4479 | 超声波清洗 | 2008-07-06 | 2008-07-07 | 4478 | 试验间 |
| 4480 | 检验 | 2008-07-07 | 2008-07-07 | 4479 | 检验 |

| ID | Task | Start | Finish | Predecessors | Complete | Resources |
| --- | --- | --- | --- | --- | --- | --- |
| 4481 | 冲洗 | 2008-07-07 | 2008-07-08 | 4480 |  | 试验间 |
| 4482 | 气密试验 | 2008-07-08 | 2008-07-08 | 4481 |  | 试验间 |
| 4483 | 强度试验 | 2008-07-08 | 2008-07-08 | 4482 |  | 试验间 |
| 4484 | 清洗 | 2008-07-09 | 2008-07-09 | 4483 |  | 毛刺台二 |
| 4485 | 检验 | 2008-07-10 | 2008-07-11 | 4484 |  | 检验 |
| 4486 | 精镗孔 | 2008-07-11 | 2008-07-11 | 4485 |  | 坐标镗 |
| 4487 | 攻螺纹 | 2008-07-11 | 2008-07-12 | 4486 |  | 毛刺台二 |
| 4488 | 去毛刺、抛光 | 2008-07-12 | 2008-07-13 | 4487 |  | 毛刺台二 |
| 4489 | 超声波清洗 | 2008-07-13 | 2008-07-14 | 4488 |  | 试验间 |
| 4490 | 清洗 | 2008-07-14 | 2008-07-14 | 4489 |  | 毛刺台二 |
| 4491 | 检验 | 2008-07-14 | 2008-07-15 | 4490 |  | 检验 |
| 4492 | 转工 | 2008-07-15 | 2008-07-15 | 4491 |  | 无设备 |
| 4493 | 冲洗 | 2008-07-15 | 2008-07-15 | 4492 |  | 试验间 |
| 4494 | 检验 | 2008-07-16 | 2008-07-16 | 4493 |  | 检验 |
| 4495 | 检验 | 2008-07-18 | 2008-07-18 | 4494 |  | 检验 |
| 4496 | 油封 | 2008-07-19 | 2008-07-19 | 4495 |  | 毛刺台二 |
| 4497 | 泵盖壳体 | 2008-06-15 | 2008-06-17 |  |  |  |
| 4498 | 研平面 | 2008-06-15 | 2008-06-15 |  |  | 毛刺研磨 |
| 4499 | 清洗 | 2008-06-15 | 2008-06-16 | 4498 |  | 毛刺研磨 |
| 4500 | 检验 | 2008-06-17 | 2008-06-17 | 4499 |  | 检验 |
| 4501 | 泵盖壳体 | 2008-06-15 | 2008-06-17 |  |  |  |
| 4502 | 研平面 | 2008-06-15 | 2008-06-15 |  |  | 毛刺研磨 |
| 4503 | 清洗 | 2008-06-15 | 2008-06-16 | 4502 |  | 毛刺研磨 |
| 4504 | 检验 | 2008-06-17 | 2008-06-17 | 4503 |  | 检验 |
| 4505 | 壳体组合件 | 2008-05-17 | 2008-06-23 |  |  |  |
| 4506 | 镗孔，切槽 | 2008-06-15 | 2008-06-16 |  |  | 三工段车工班 |
| 4507 | 已完成任务 | 2008-05-17 | 2008-05-17 | 4506 | 100% |  |
| 4508 | 清洗 | 2008-06-15 | 2008-06-15 | 4507 |  | 毛刺研磨 |
| 4509 | 检验 | 2008-06-15 | 2008-06-16 | 4508 |  | 三工段车工班 |
| 4510 | 研结合面 | 2008-06-19 | 2008-06-19 | 4509 |  | 研磨台 |
| 4511 | 清洗 | 2008-06-19 | 2008-06-19 | 4510 |  | 毛刺研磨 |
| 4512 | 检验 | 2008-06-19 | 2008-06-20 | 4511 |  | 检验 |
| 4513 | 压装 | 2008-06-20 | 2008-06-20 | 4512 |  | 三工段钳工 |
| 4514 | 刻组别号 | 2008-06-20 | 2008-06-21 | 4513 |  | 三工段钳工 |
| 4515 | 清洗 | 2008-06-21 | 2008-06-22 | 4514 |  | 毛刺研磨 |
| 4516 | 检验 | 2008-06-22 | 2008-06-23 | 4515 |  | 检验 |
| 4517 | 油封，包装 | 2008-06-23 | 2008-06-23 | 4516 |  | 毛刺研磨 |
| 4518 | 壳体组合件 | 2008-04-29 | 2008-06-16 |  |  |  |
| 4519 | 已完成任务 | 2008-04-29 | 2008-04-29 | 4508 | 100% |  |
| 4520 | 检验 | 2008-06-15 | 2008-06-16 | 4519 |  | 检验 |
| 4521 | 油封，包装 | 2008-06-16 | 2008-06-16 | 4520 |  | 毛刺研磨 |
| 4522 | 壳体 | 2008-06-15 | 2008-08-12 |  |  |  |
| 4523 | 钻孔 | 2008-06-15 | 2008-06-15 |  |  | 立式钻床 [100.08%] |
| 4524 | 钻孔 | 2008-06-15 | 2008-06-15 | 4523 |  | 立式钻床 |
| 4525 | 扩孔 攻螺纹 | 2008-06-15 | 2008-06-16 | 4524 |  | 立式钻床 [100.96%] |
| 4526 | 钻孔 攻螺纹 | 2008-06-16 | 2008-06-17 | 4525 |  | 立式钻床 |
| 4527 | 钻孔 | 2008-06-17 | 2008-06-17 | 4526 |  | 立式钻床 [100.08%] |
| 4528 | 钻孔 | 2008-06-17 | 2008-06-18 | 4527 |  | 立式钻床 |
| 4529 | 钻孔 | 2008-06-18 | 2008-06-18 | 4528 |  | 立式钻床 [100.12%] |
| 4530 | 钻孔 攻螺纹 | 2008-06-18 | 2008-06-20 | 4529 |  | 立式钻床 |
| 4531 | 钻孔 | 2008-06-20 | 2008-06-20 | 4530 |  | 立式钻床 [100.11%] |
| 4532 | 钻孔 | 2008-06-20 | 2008-06-21 | 4531 |  | 立式钻床 [104.17%] |
| 4533 | 钻孔 | 2008-06-21 | 2008-06-21 | 4532 |  | 立式钻床 [100.11%] |
| 4534 | 钻孔 | 2008-06-21 | 2008-06-22 | 4533 |  | 立式钻床 |
| 4535 | 钻孔 攻螺纹 | 2008-06-22 | 2008-06-23 | 4534 |  | 立式钻床 |
| 4536 | 钻孔 攻螺纹 | 2008-06-23 | 2008-06-25 | 4535 |  | 立式钻床 |
| 4537 | 钻孔 | 2008-06-25 | 2008-06-26 | 4536 |  | 立式钻床 |
| 4538 | 钻孔 | 2008-06-26 | 2008-06-27 | 4537 |  | 立式钻床 |
| 4539 | 钻孔 | 2008-06-27 | 2008-06-27 | 4538 |  | 立式钻床 [100.12%] |
| 4540 | 铣型面 | 2008-06-27 | 2008-06-28 | 4539 |  | 立铣 |
| 4541 | 铣槽 | 2008-06-28 | 2008-06-28 | 4540 |  | 立铣 |
| 4542 | 铣凸台 | 2008-06-28 | 2008-06-28 | 4541 |  | 立铣 [100.28%] |
| 4543 | 洗涤 | 2008-06-28 | 2008-06-29 | 4542 |  | 毛刺台一 |
| 4544 | 去毛刺 | 2008-06-29 | 2008-06-30 | 4543 |  | 毛刺台一 |
| 4545 | 抛光R | 2008-06-30 | 2008-06-30 | 4544 |  | 钳工台 |
| 4546 | 压力冲洗 | 2008-06-30 | 2008-06-30 | 4545 |  | 试验间 |
| 4547 | 清洗 | 2008-07-01 | 2008-07-01 | 4546 |  | 毛刺台一 |
| 4548 | 电化学去毛刺 | 2008-07-01 | 2008-07-02 | 4547 |  | 毛刺台二 |
| 4549 | 气密试验 | 2008-07-02 | 2008-07-02 | 4548 |  | 试验间 |
| 4550 | 检验 | 2008-07-03 | 2008-07-03 | 4549 |  | 检验 |

| ID | Task | Start | Finish | Predecessors | Resources |
| --- | --- | --- | --- | --- | --- |
| 4551 | 油气交替冲洗 | 2008-07-03 | 2008-07-04 | 4550 | 试验工作中心 |
| 4552 | 捅油路 | 2008-07-07 | 2008-07-07 | 4551 | 钳工台 |
| 4553 | 钻铰孔 | 2008-07-07 | 2008-07-08 | 4552 | 立式钻床 |
| 4554 | 钻孔 | 2008-07-08 | 2008-07-09 | 4553 | 立式钻床 |
| 4555 | 钻孔 | 2008-07-09 | 2008-07-10 | 4554 | 立式钻床 |
| 4556 | 钻孔 | 2008-07-10 | 2008-07-11 | 4555 | 立式钻床 |
| 4557 | 钻孔 | 2008-07-11 | 2008-07-12 | 4556 | 立式钻床 |
| 4558 | 钻孔 | 2008-07-12 | 2008-07-13 | 4557 | 立式钻床 [100.96%] |
| 4559 | 钻孔 | 2008-07-13 | 2008-07-14 | 4558 | 立式钻床 |
| 4560 | 钻孔 | 2008-07-14 | 2008-07-15 | 4559 | 立式钻床 |
| 4561 | 攻螺纹 | 2008-07-15 | 2008-07-15 | 4560 | 立式钻床 [100.12%] |
| 4562 | 扩孔 | 2008-07-15 | 2008-07-15 | 4561 | 一工段四轴卧加 [100.11%] |
| 4563 | 攻螺纹 | 2008-07-16 | 2008-07-16 | 4562 | 立式钻床 [100.11%] |
| 4564 | 镗孔 | 2008-07-16 | 2008-07-17 | 4563 | 金刚镗床2A716 [102.27%] |
| 4565 | 划面 | 2008-07-17 | 2008-07-17 | 4564 | 立式钻床 [100.11%] |
| 4566 | 镗孔 | 2008-07-17 | 2008-07-18 | 4565 | 金刚镗床2A716 [102.27%] |
| 4567 | 攻螺纹 | 2008-07-18 | 2008-07-18 | 4566 | 钳工台 |
| 4568 | 划面 | 2008-07-18 | 2008-07-19 | 4567 | 立式钻床 [104.17%] |
| 4569 | 铣平面 | 2008-07-19 | 2008-07-19 | 4568 | 立铣 [99.93%] |
| 4570 | 铣平面 | 2008-07-19 | 2008-07-20 | 4569 | 立铣 |
| 4571 | 铣平面 | 2008-07-20 | 2008-07-21 | 4570 | 立铣 |
| 4572 | 铣平面 | 2008-07-21 | 2008-07-21 | 4571 | 立铣 [99.93%] |
| 4573 | 镗孔 | 2008-07-21 | 2008-07-22 | 4572 | 金刚镗床2A716 |
| 4574 | 镗孔 | 2008-07-22 | 2008-07-23 | 4573 | 金刚镗床2A716 |
| 4575 | 镗孔 | 2008-07-23 | 2008-07-24 | 4574 | 四轴卧加 [100.13%] |
| 4576 | 镗孔 | 2008-07-25 | 2008-07-26 | 4575 | 金刚镗床2A716 |
| 4577 | 镗孔 | 2008-07-26 | 2008-07-27 | 4576 | 金刚镗床2A716 |
| 4578 | 镗孔 | 2008-07-27 | 2008-07-29 | 4577 | 中型普车 |
| 4579 | 车圆弧 | 2008-07-29 | 2008-07-29 | 4578 | 中型普车 [99.91%] |
| 4580 | 划面攻螺纹 | 2008-07-29 | 2008-07-30 | 4579 | 立式钻床 |
| 4581 | 扩孔攻螺纹 | 2008-07-30 | 2008-07-30 | 4580 | 立式钻床 |
| 4582 | 扩孔 铰孔 | 2008-07-30 | 2008-07-31 | 4581 | 立式钻床 [101.06%] |
| 4583 | 钻铰孔 | 2008-07-31 | 2008-07-31 | 4582 | 立式钻床 |
| 4584 | 镗孔 | 2008-07-31 | 2008-08-01 | 4583 | 中型普车 [100.09%] |
| 4585 | 划面攻螺纹 | 2008-08-01 | 2008-08-02 | 4584 | 立式钻床 [101.85%] |
| 4586 | 洗涤 | 2008-08-02 | 2008-08-03 | 4585 | 毛刺台一 |
| 4587 | 去毛刺 | 2008-08-03 | 2008-08-04 | 4586 | 毛刺台一 |
| 4588 | 抛光R | 2008-08-04 | 2008-08-04 | 4587 | 钳工台 |
| 4589 | 洗涤 | 2008-08-04 | 2008-08-05 | 4588 | 毛刺台一 |
| 4590 | 检验 | 2008-08-06 | 2008-08-06 | 4589 | 检验 |
| 4591 | 单孔滑油冲洗 | 2008-08-08 | 2008-08-08 | 4590 | 试验间 |
| 4592 | 修研平面 | 2008-08-08 | 2008-08-08 | 4591 | 研磨台 |
| 4593 | 超声波冲洗 | 2008-08-08 | 2008-08-08 | 4592 | 试验间 |
| 4594 | 浸泡 | 2008-08-08 | 2008-08-09 | 4593 | 试验间 |
| 4595 | 油气交替冲洗 | 2008-08-09 | 2008-08-10 | 4594 | 试验间 |
| 4596 | 检验 | 2008-08-10 | 2008-08-11 | 4595 | 检验 |
| 4597 | 清洗 | 2008-08-11 | 2008-08-12 | 4596 | 毛刺台一 |
| 4598 | 壳体 | 2008-06-15 | 2008-10-11 |  |  |
| 4599 | 钻孔 | 2008-06-15 | 2008-06-16 |  | 立式钻床 |
| 4600 | 铣平面 | 2008-06-16 | 2008-06-16 | 4599 | 立铣 |
| 4601 | 扩孔 | 2008-06-16 | 2008-06-17 | 4600 | 立式钻床 |
| 4602 | 钻孔 镗孔 | 2008-06-17 | 2008-06-19 | 4601 | 六角车床 |
| 4603 | 钻孔 镗孔 | 2008-06-19 | 2008-06-21 | 4602 | 六角车床1336P |
| 4604 | 切槽 | 2008-06-21 | 2008-06-23 | 4603 | 六角车床1336P |
| 4605 | 镗孔 | 2008-06-23 | 2008-06-23 | 4604 | 金刚镗床2A716 |
| 4606 | 铣平面 | 2008-06-23 | 2008-06-24 | 4605 | 立铣 |
| 4607 | 铣平面 | 2008-06-24 | 2008-06-24 | 4606 | 立铣 |
| 4608 | 铣平面 | 2008-06-24 | 2008-06-25 | 4607 | 立铣 |
| 4609 | 铣平面 | 2008-06-25 | 2008-06-25 | 4608 | 立铣 |
| 4610 | 铣平面 | 2008-06-25 | 2008-06-25 | 4609 | 立铣 |
| 4611 | 铣平面 | 2008-06-25 | 2008-06-26 | 4610 | 立铣 |
| 4612 | 铣平面 | 2008-06-26 | 2008-06-26 | 4611 | 立铣 |
| 4613 | 打毛刺 | 2008-06-26 | 2008-06-27 | 4612 | 毛刺台一 |
| 4614 | 钻孔 | 2008-06-27 | 2008-06-28 | 4613 | 立式钻床 |
| 4615 | 扩孔 | 2008-06-28 | 2008-06-28 | 4614 | 立式钻床 |
| 4616 | 钻孔 | 2008-06-28 | 2008-06-29 | 4615 | 立式钻床 |
| 4617 | 钻孔 | 2008-06-29 | 2008-07-01 | 4616 | 中型普车 |
| 4618 | 钻孔 | 2008-07-01 | 2008-07-02 | 4617 | 中型普车 |
| 4619 | 钻孔 攻螺纹 | 2008-07-02 | 2008-07-03 | 4618 | 立式钻床 |
| 4620 | 钻孔 切槽 | 2008-07-03 | 2008-07-05 | 4619 | 六角车床 |

| ID | Task | Start | Finish | Predecessors | Resources |
| --- | --- | --- | --- | --- | --- |
| 4621 | 钻孔 攻螺纹 | 2008-07-05 | 2008-07-08 | 4620 | 中型普车 |
| 4622 | 切槽 | 2008-07-08 | 2008-07-09 | 4621 | 中型普车 |
| 4623 | 钻孔 攻螺纹 | 2008-07-09 | 2008-07-11 | 4622 | 六角车床 |
| 4624 | 钻孔 | 2008-07-11 | 2008-07-11 | 4623 | 立式钻床 |
| 4625 | 钻孔 攻螺纹 | 2008-07-11 | 2008-07-12 | 4624 | 立式钻床 |
| 4626 | 钻孔 | 2008-07-12 | 2008-07-13 | 4625 | 立式钻床 |
| 4627 | 钻孔攻螺纹 | 2008-07-13 | 2008-07-14 | 4626 | 立式钻床 |
| 4628 | 钻孔 | 2008-07-14 | 2008-07-15 | 4627 | 立式钻床 |
| 4629 | 钻孔 | 2008-07-15 | 2008-07-15 | 4628 | 立式钻床 |
| 4630 | 钻孔 | 2008-07-15 | 2008-07-15 | 4629 | 立式钻床 |
| 4631 | 钻扩孔 | 2008-07-15 | 2008-07-16 | 4630 | 立式钻床 |
| 4632 | 钻孔 | 2008-07-16 | 2008-07-16 | 4631 | 立式钻床 |
| 4633 | 钻孔 | 2008-07-16 | 2008-07-17 | 4632 | 立式钻床 |
| 4634 | 钻孔 攻螺纹 | 2008-07-17 | 2008-07-18 | 4633 | 立式钻床 |
| 4635 | 钻孔 攻螺纹 | 2008-07-18 | 2008-07-19 | 4634 | 立式钻床 |
| 4636 | 洗涤 | 2008-07-19 | 2008-07-20 | 4635 | 毛刺台一 |
| 4637 | 高压试验 | 2008-07-20 | 2008-07-21 | 4636 | 试验间 |
| 4638 | 去毛刺 | 2008-07-21 | 2008-07-21 | 4637 | 毛刺台一 |
| 4639 | 钻孔 攻螺纹 | 2008-07-21 | 2008-07-22 | 4638 | 立式钻床 |
| 4640 | 钻孔 攻螺纹 | 2008-07-22 | 2008-07-23 | 4639 | 立式钻床 |
| 4641 | 钻孔 攻螺纹 | 2008-07-23 | 2008-07-24 | 4640 | 立式钻床 |
| 4642 | 钻孔 攻螺纹 | 2008-07-24 | 2008-07-25 | 4641 | 立式钻床 |
| 4643 | 钻孔 | 2008-07-25 | 2008-07-25 | 4642 | 立式钻床 |
| 4644 | 钻孔 | 2008-07-25 | 2008-07-26 | 4643 | 立式钻床 |
| 4645 | 钻孔 攻螺纹 | 2008-07-26 | 2008-07-28 | 4644 | 立式钻床 |
| 4646 | 钻孔 | 2008-07-28 | 2008-07-28 | 4645 | 立式钻床 |
| 4647 | 钻孔 | 2008-07-28 | 2008-07-29 | 4646 | 立式钻床 |
| 4648 | 钻孔 | 2008-07-29 | 2008-07-29 | 4647 | 立式钻床 |
| 4649 | 钻孔 | 2008-07-29 | 2008-07-29 | 4648 | 立式钻床 |
| 4650 | 钻孔 | 2008-07-29 | 2008-07-30 | 4649 | 立式钻床 |
| 4651 | 钻扩孔 | 2008-07-30 | 2008-07-31 | 4650 | 六角车床 |
| 4652 | 钻孔 攻螺纹 | 2008-07-31 | 2008-08-01 | 4651 | 立式钻床 |
| 4653 | 钻孔 攻螺纹 | 2008-08-01 | 2008-08-03 | 4652 | 六角车床 |
| 4654 | 钻孔 攻螺纹 | 2008-08-03 | 2008-08-05 | 4653 | 六角车床 |
| 4655 | 钻孔 攻螺纹 | 2008-08-05 | 2008-08-06 | 4654 | 立式钻床 |
| 4656 | 钻孔 攻螺纹 | 2008-08-06 | 2008-08-07 | 4655 | 六角车床 |
| 4657 | 钻孔 切槽 | 2008-08-07 | 2008-08-09 | 4656 | 六角车床 |
| 4658 | 切槽 | 2008-08-09 | 2008-08-11 | 4657 | 六角车床 |
| 4659 | 切槽 | 2008-08-11 | 2008-08-12 | 4658 | 六角车床 |
| 4660 | 切槽 | 2008-08-12 | 2008-08-12 | 4659 | 六角车床 |
| 4661 | 切槽 | 2008-08-12 | 2008-08-12 | 4660 | 六角车床 |
| 4662 | 钻孔攻螺纹 | 2008-08-12 | 2008-08-12 | 4661 | 立式钻床 |
| 4663 | 钻扩孔 | 2008-08-12 | 2008-08-12 | 4662 | 六角车床 |
| 4664 | 钻孔 | 2008-08-12 | 2008-08-13 | 4663 | 立式钻床 |
| 4665 | 钻孔 | 2008-08-13 | 2008-08-14 | 4664 | 立式钻床 |
| 4666 | 钻孔 | 2008-08-14 | 2008-08-14 | 4665 | 立式钻床 |
| 4667 | 钻孔 攻螺纹 | 2008-08-14 | 2008-08-15 | 4666 | 立式钻床 |
| 4668 | 钻孔 攻螺纹 | 2008-08-15 | 2008-08-16 | 4667 | 立式钻床 |
| 4669 | 钻孔 | 2008-08-16 | 2008-08-17 | 4668 | 立式钻床 |
| 4670 | 钻孔 | 2008-08-17 | 2008-08-18 | 4669 | 立式钻床 |
| 4671 | 钻孔 | 2008-08-18 | 2008-08-18 | 4670 | 立式钻床 |
| 4672 | 扩孔 攻螺纹 | 2008-08-18 | 2008-08-18 | 4671 | 立式钻床 |
| 4673 | 钻孔 攻螺纹 | 2008-08-18 | 2008-08-19 | 4672 | 立式钻床 |
| 4674 | 钻孔 | 2008-08-19 | 2008-08-19 | 4673 | 立式钻床 |
| 4675 | 钻孔 | 2008-08-19 | 2008-08-20 | 4674 | 立式钻床 |
| 4676 | 钻孔 | 2008-08-20 | 2008-08-20 | 4675 | 立式钻床 |
| 4677 | 钻孔 攻螺纹 | 2008-08-20 | 2008-08-21 | 4676 | 立式钻床 |
| 4678 | 钻孔 | 2008-08-21 | 2008-08-22 | 4677 | 立式钻床 |
| 4679 | 钻孔 | 2008-08-22 | 2008-08-22 | 4678 | 立式钻床 |
| 4680 | 钻孔 | 2008-08-22 | 2008-08-22 | 4679 | 立式钻床 |
| 4681 | 钻孔 | 2008-08-22 | 2008-08-23 | 4680 | 立式钻床 |
| 4682 | 钻孔 攻螺纹 | 2008-08-23 | 2008-08-24 | 4681 | 立式钻床 |
| 4683 | 钻孔 攻螺纹 | 2008-08-24 | 2008-08-26 | 4682 | 立式钻床 |
| 4684 | 钻孔 | 2008-08-26 | 2008-08-27 | 4683 | 立式钻床 |
| 4685 | 钻孔 | 2008-08-27 | 2008-08-27 | 4684 | 立式钻床 |
| 4686 | 钻孔 | 2008-08-27 | 2008-08-28 | 4685 | 立式钻床 |
| 4687 | 铣型面 | 2008-08-28 | 2008-08-28 | 4686 | 立铣 |
| 4688 | 铣槽 | 2008-08-28 | 2008-08-28 | 4687 | 立铣 |
| 4689 | 铣凸台 | 2008-08-28 | 2008-08-28 | 4688 | 立铣 |
| 4690 | 洗涤 | 2008-08-28 | 2008-08-29 | 4689 | 毛刺台一 |

| ID | Task | Start | Finish | Predecessors | Resources |
| --- | --- | --- | --- | --- | --- |
| 4691 | 去毛刺 | 2008-08-29 | 2008-08-29 | 4690 | 毛刺台一 |
| 4692 | 抛光R | 2008-08-29 | 2008-08-30 | 4691 | 钳工台 |
| 4693 | 清洗 | 2008-08-30 | 2008-08-31 | 4692 | 毛刺台一 |
| 4694 | 电化学去毛刺 | 2008-08-31 | 2008-09-01 | 4693 | 毛刺台二 |
| 4695 | 压力冲洗 | 2008-09-01 | 2008-09-01 | 4694 | 试验间 |
| 4696 | 气密试验 | 2008-09-01 | 2008-09-02 | 4695 | 试验间 |
| 4697 | 检验 | 2008-09-02 | 2008-09-03 | 4696 | 检验 |
| 4698 | 油气交替冲洗 | 2008-09-03 | 2008-09-03 | 4697 | 试验工作中心 |
| 4699 | 捅油路 | 2008-09-07 | 2008-09-07 | 4698 | 钳工台 |
| 4700 | 钻铰孔 | 2008-09-07 | 2008-09-08 | 4699 | 立式钻床 |
| 4701 | 钻孔 | 2008-09-08 | 2008-09-09 | 4700 | 立式钻床 |
| 4702 | 钻孔 | 2008-09-09 | 2008-09-09 | 4701 | 立式钻床 |
| 4703 | 钻孔 | 2008-09-09 | 2008-09-10 | 4702 | 立式钻床 |
| 4704 | 钻孔 | 2008-09-10 | 2008-09-11 | 4703 | 立式钻床 |
| 4705 | 钻孔 | 2008-09-11 | 2008-09-12 | 4704 | 立式钻床 |
| 4706 | 钻孔 | 2008-09-12 | 2008-09-12 | 4705 | 立式钻床 |
| 4707 | 钻孔 | 2008-09-12 | 2008-09-13 | 4706 | 立式钻床 |
| 4708 | 攻螺纹 | 2008-09-13 | 2008-09-14 | 4707 | 立式钻床 |
| 4709 | 扩孔 | 2008-09-14 | 2008-09-14 | 4708 | 一工段四轴卧加 |
| 4710 | 镗孔 | 2008-09-14 | 2008-09-15 | 4709 | 金刚镗床2A716 |
| 4711 | 攻螺纹 | 2008-09-15 | 2008-09-15 | 4710 | 立式钻床 |
| 4712 | 划面 | 2008-09-15 | 2008-09-16 | 4711 | 立式钻床 |
| 4713 | 镗孔 | 2008-09-16 | 2008-09-16 | 4712 | 金刚镗床2A716 |
| 4714 | 攻螺纹 | 2008-09-16 | 2008-09-17 | 4713 | 钳工台 |
| 4715 | 划面 | 2008-09-17 | 2008-09-17 | 4714 | 立式钻床 |
| 4716 | 铣平面 | 2008-09-17 | 2008-09-18 | 4715 | 立铣 |
| 4717 | 铣平面 | 2008-09-18 | 2008-09-18 | 4716 | 立铣 |
| 4718 | 铣平面 | 2008-09-18 | 2008-09-19 | 4717 | 立铣 |
| 4719 | 铣平面 | 2008-09-19 | 2008-09-19 | 4718 | 立铣 |
| 4720 | 镗孔 | 2008-09-19 | 2008-09-20 | 4719 | 金刚镗床2A716 |
| 4721 | 镗孔 | 2008-09-20 | 2008-09-21 | 4720 | 金刚镗床2A716 |
| 4722 | 镗孔 | 2008-09-21 | 2008-09-22 | 4721 | 四轴卧加 |
| 4723 | 镗孔 | 2008-09-22 | 2008-09-23 | 4722 | 金刚镗床2A716 |
| 4724 | 镗孔 | 2008-09-23 | 2008-09-24 | 4723 | 金刚镗床2A716 |
| 4725 | 镗孔 | 2008-09-24 | 2008-09-25 | 4724 | 中型普车 |
| 4726 | 车圆弧 | 2008-09-25 | 2008-09-26 | 4725 | 中型普车 |
| 4727 | 划面攻螺纹 | 2008-09-26 | 2008-09-27 | 4726 | 立式钻床 |
| 4728 | 扩孔攻螺纹 | 2008-09-27 | 2008-09-28 | 4727 | 立式钻床 |
| 4729 | 扩孔 铰孔 | 2008-09-28 | 2008-09-29 | 4728 | 立式钻床 |
| 4730 | 钻铰孔 | 2008-09-29 | 2008-09-29 | 4729 | 立式钻床 |
| 4731 | 镗孔 | 2008-09-29 | 2008-09-30 | 4730 | 中型普车 |
| 4732 | 划面攻螺纹 | 2008-09-30 | 2008-10-01 | 4731 | 立式钻床 |
| 4733 | 洗涤 | 2008-10-01 | 2008-10-01 | 4732 | 毛刺台一 |
| 4734 | 去毛刺 | 2008-10-01 | 2008-10-02 | 4733 | 毛刺台一 |
| 4735 | 抛光R | 2008-10-02 | 2008-10-03 | 4734 | 钳工台 |
| 4736 | 洗涤 | 2008-10-03 | 2008-10-03 | 4735 | 毛刺台一 |
| 4737 | 检验 | 2008-10-04 | 2008-10-05 | 4736 | 检验 |
| 4738 | 单孔滑油冲洗 | 2008-10-07 | 2008-10-07 | 4737 | 试验间 |
| 4739 | 修研平面 | 2008-10-07 | 2008-10-08 | 4738 | 研磨台 |
| 4740 | 浸泡 | 2008-10-08 | 2008-10-08 | 4739 | 试验间 |
| 4741 | 超声波冲洗 | 2008-10-08 | 2008-10-09 | 4740 | 试验间 |
| 4742 | 油气交替冲洗 | 2008-10-09 | 2008-10-09 | 4741 | 试验间 |
| 4743 | 检验 | 2008-10-09 | 2008-10-10 | 4742 | 检验 |
| 4744 | 清洗 | 2008-10-10 | 2008-10-11 | 4743 | 毛刺台一 |
| 4745 | 壳体 | 2008-06-15 | 2008-07-19 |  |  |
| 4746 | 攻螺纹 | 2008-06-15 | 2008-06-15 |  | 钳工台 |
| 4747 | 钻铰孔 划槽 | 2008-06-15 | 2008-06-16 | 4746 | 立式钻床 |
| 4748 | 镗孔 | 2008-06-16 | 2008-06-17 | 4747 | 金刚镗床2A716 |
| 4749 | 镗孔 | 2008-06-17 | 2008-06-18 | 4748 | 一工段四轴卧加 |
| 4750 | 钻孔组合 | 2008-06-18 | 2008-06-19 | 4749 | 立式钻床 |
| 4751 | 组合铆紧 | 2008-06-19 | 2008-06-19 | 4750 | 立式钻床 [99.92%] |
| 4752 | 洗涤 | 2008-06-19 | 2008-06-20 | 4751 | 毛刺台一 |
| 4753 | 组合镗孔 | 2008-06-20 | 2008-06-25 | 4752 | 坐标镗 |
| 4754 | 车内孔和 螺纹 | 2008-06-26 | 2008-06-27 | 4753 | 中型普车 |
| 4755 | 镗孔 | 2008-06-27 | 2008-06-28 | 4754 | 金刚镗床2A716 |
| 4756 | 镗孔 | 2008-06-28 | 2008-06-29 | 4755 | 金刚镗床2A716 |
| 4757 | 洗涤 | 2008-06-29 | 2008-06-30 | 4756 | 毛刺台一 |
| 4758 | 去毛刺 | 2008-06-30 | 2008-06-30 | 4757 | 毛刺台一 |
| 4759 | 洗涤 | 2008-06-30 | 2008-07-01 | 4758 | 毛刺台一 |
| 4760 | 检验 | 2008-07-02 | 2008-07-02 | 4759 | 检验 |

| ID | Task | Start | Finish | Predecessors | Resources |
| --- | --- | --- | --- | --- | --- |
| 4761 | 洗涤 | 2008-07-03 | 2008-07-03 | 4760 | 毛刺台一 |
| 4762 | 压入堵头 | 2008-07-03 | 2008-07-03 | 4761 | 立式钻床 [100.11%] |
| 4763 | 修孔 | 2008-07-03 | 2008-07-04 | 4762 | 立式钻床 |
| 4764 | 洗涤 | 2008-07-04 | 2008-07-04 | 4763 | 毛刺台一 |
| 4765 | 单孔滑油冲洗 | 2008-07-04 | 2008-07-04 | 4764 | 试验间 |
| 4766 | 浸泡 | 2008-07-04 | 2008-07-05 | 4765 | 试验间 |
| 4767 | 超声波清洗 | 2008-07-05 | 2008-07-06 | 4766 | 试验间 |
| 4768 | 油气交替冲洗 | 2008-07-06 | 2008-07-07 | 4767 | 试验间 |
| 4769 | 上螺堵 | 2008-07-07 | 2008-07-09 | 4768 | 立式钻床 |
| 4770 | 铣螺堵 | 2008-07-09 | 2008-07-14 | 4769 | 立铣 |
| 4771 | 气密试验 | 2008-07-14 | 2008-07-14 | 4770 | 试验间 |
| 4772 | 研磨平面 | 2008-07-15 | 2008-07-16 | 4771 | 立式钻床 [100.21%] |
| 4773 | 浸泡 | 2008-07-16 | 2008-07-16 | 4772 | 试验间 |
| 4774 | 超声波清洗 | 2008-07-16 | 2008-07-17 | 4773 | 试验间 |
| 4775 | 油气交替冲洗 | 2008-07-17 | 2008-07-17 | 4774 | 试验间 |
| 4776 | 外观检验 | 2008-07-17 | 2008-07-18 | 4775 | 检验 |
| 4777 | 洗涤 | 2008-07-18 | 2008-07-19 | 4776 | 毛刺台一 |
| 4778 | 壳体 | 2008-06-15 | 2008-06-16 |  |  |
| 4779 | 外观检验 | 2008-06-15 | 2008-06-16 |  | 检验 |
| 4780 | 洗涤 | 2008-06-16 | 2008-06-16 | 4779 | 毛刺台一 |
| 4781 | 壳体 | 2008-06-14 | 2008-09-19 |  |  |
| 4782 | 铣平面 | 2008-06-14 | 2008-06-15 |  | 四轴卧加 |
| 4783 | 打毛刺 | 2008-06-16 | 2008-06-16 | 4782 | 毛刺台一 |
| 4784 | 气密实验 | 2008-06-16 | 2008-06-16 | 4783 | 试验间 |
| 4785 | 钻孔 | 2008-06-17 | 2008-06-17 | 4784 | 立式钻床 |
| 4786 | 钻孔 | 2008-06-17 | 2008-06-18 | 4785 | 立式钻床 |
| 4787 | 洗涤 | 2008-06-18 | 2008-06-19 | 4786 | 毛刺台一 |
| 4788 | 钻、镗孔、铣面 | 2008-06-19 | 2008-06-22 | 4787 | 一工段四轴卧加 |
| 4789 | 车内孔 | 2008-06-22 | 2008-06-23 | 4788 | 一工段四轴卧加 |
| 4790 | 车内孔和螺纹 | 2008-06-23 | 2008-06-28 | 4789 | 中型普车 |
| 4791 | 钻孔 | 2008-06-28 | 2008-06-29 | 4790 | 立式钻床 |
| 4792 | 钻孔攻螺纹 | 2008-06-29 | 2008-06-29 | 4791 | 立式钻床 |
| 4793 | 镗孔车螺纹 | 2008-06-29 | 2008-06-30 | 4792 | 中型普车 |
| 4794 | 镗孔 | 2008-06-30 | 2008-07-01 | 4793 | 中型普车 |
| 4795 | 划面 | 2008-07-01 | 2008-07-02 | 4794 | 立式钻床 |
| 4796 | 倒角 | 2008-07-02 | 2008-07-02 | 4795 | 立式钻床 |
| 4797 | 去毛刺 | 2008-07-02 | 2008-07-03 | 4796 | 毛刺台一 |
| 4798 | 洗涤 | 2008-07-03 | 2008-07-03 | 4797 | 毛刺台一 |
| 4799 | 钻、镗、铣孔 | 2008-07-03 | 2008-07-04 | 4798 | 一工段四轴卧加 |
| 4800 | 钻孔攻螺纹 | 2008-07-04 | 2008-07-04 | 4799 | 立式钻床 |
| 4801 | 钻孔攻螺纹 | 2008-07-04 | 2008-07-07 | 4800 | 立式钻床 |
| 4802 | 钻孔 | 2008-07-07 | 2008-07-08 | 4801 | 立式钻床 |
| 4803 | 钻孔 | 2008-07-08 | 2008-07-09 | 4802 | 立式钻床 |
| 4804 | 钻孔 | 2008-07-09 | 2008-07-09 | 4803 | 立式钻床 |
| 4805 | 钻孔 | 2008-07-09 | 2008-07-10 | 4804 | 立式钻床 |
| 4806 | 钻孔 | 2008-07-10 | 2008-07-11 | 4805 | 立式钻床 |
| 4807 | 钻孔 | 2008-07-11 | 2008-07-12 | 4806 | 立式钻床 |
| 4808 | 钻孔 | 2008-07-12 | 2008-07-13 | 4807 | 立式钻床 |
| 4809 | 钻孔 | 2008-07-13 | 2008-07-14 | 4808 | 立式钻床 |
| 4810 | 打钢印标记 | 2008-07-14 | 2008-07-14 | 4809 | 毛刺台一 |
| 4811 | 铣面 | 2008-07-14 | 2008-07-15 | 4810 | 立式钻床 |
| 4812 | 铣槽 | 2008-07-15 | 2008-07-16 | 4811 | 立式钻床 |
| 4813 | 洗涤 | 2008-07-16 | 2008-07-16 | 4812 | 毛刺台一 |
| 4814 | 去毛刺 | 2008-07-16 | 2008-07-17 | 4813 | 毛刺台一 |
| 4815 | 洗涤 | 2008-07-17 | 2008-07-17 | 4814 | 毛刺台一 |
| 4816 | 电化学去毛刺 | 2008-07-17 | 2008-07-18 | 4815 | 毛刺台一 |
| 4817 | 检验 | 2008-07-19 | 2008-07-20 | 4816 | 检验 |
| 4818 | 检验 | 2008-07-21 | 2008-07-21 | 4817 | 检验 |
| 4819 | 洗涤 | 2008-07-22 | 2008-07-22 | 4818 | 毛刺台一 |
| 4820 | 油气交替冲洗 | 2008-07-22 | 2008-07-22 | 4819 | 试验间 |
| 4821 | 洗涤 | 2008-07-23 | 2008-07-23 | 4820 | 毛刺台一 |
| 4822 | 捅油路 | 2008-07-25 | 2008-07-25 | 4821 | 立式钻床 |
| 4823 | 研磨 | 2008-07-25 | 2008-07-26 | 4822 | 研磨台 |
| 4824 | 钻铰孔 攻螺纹 | 2008-07-26 | 2008-07-28 | 4823 | 立式钻床 |
| 4825 | 钻镗铰孔 | 2008-07-28 | 2008-07-28 | 4824 | 坐标镗 |
| 4826 | 铰锥度孔 | 2008-07-29 | 2008-07-29 | 4825 | 立式钻床 |
| 4827 | 涂漆 | 2008-07-29 | 2008-07-30 | 4826 | 立式钻床 |
| 4828 | 铰孔 攻螺纹 | 2008-07-30 | 2008-07-31 | 4827 | 立式钻床 |
| 4829 | 钻孔 攻螺纹 | 2008-07-31 | 2008-08-02 | 4828 | 立式钻床 |
| 4830 | 洗涤 | 2008-08-02 | 2008-08-03 | 4829 | 毛刺台一 |

| ID | Task | Start | Finish | Predecessors | Resources |
| --- | --- | --- | --- | --- | --- |
| 4831 | 钻镗孔铣面 | 2008-08-03 | 2008-08-05 | 4830 | 一工段四轴卧加 |
| 4832 | 钻镗孔铣面 | 2008-08-05 | 2008-08-07 | 4831 | 一工段四轴卧加 |
| 4833 | 洗涤 | 2008-08-08 | 2008-08-08 | 4832 | 毛刺台一 |
| 4834 | 去毛刺 | 2008-08-08 | 2008-08-09 | 4833 | 毛刺台一 |
| 4835 | 研磨 | 2008-08-09 | 2008-08-10 | 4834 | 研磨台 |
| 4836 | 洗涤 | 2008-08-10 | 2008-08-10 | 4835 | 研磨台 |
| 4837 | 攻螺纹 | 2008-08-11 | 2008-08-11 | 4836 | 钳工台 |
| 4838 | 钻铰孔 划槽 | 2008-08-11 | 2008-08-12 | 4837 | 立式钻床 |
| 4839 | 镗孔 | 2008-08-12 | 2008-08-13 | 4838 | 金刚镗床2A716 |
| 4840 | 镗孔 | 2008-08-13 | 2008-08-14 | 4839 | 一工段四轴卧加 |
| 4841 | 钻孔组合 | 2008-08-15 | 2008-08-15 | 4840 | 立式钻床 |
| 4842 | 组合铆紧 | 2008-08-15 | 2008-08-16 | 4841 | 立式钻床 |
| 4843 | 洗涤 | 2008-08-16 | 2008-08-16 | 4842 | 毛刺台一 |
| 4844 | 组合镗孔 | 2008-08-16 | 2008-08-23 | 4843 | 坐标镗 |
| 4845 | 车内孔和 螺纹 | 2008-08-23 | 2008-08-26 | 4844 | 中型普车 |
| 4846 | 镗孔 | 2008-08-26 | 2008-08-27 | 4845 | 金刚镗床2A716 |
| 4847 | 镗孔 | 2008-08-27 | 2008-08-28 | 4846 | 金刚镗床2A716 |
| 4848 | 洗涤 | 2008-08-28 | 2008-08-28 | 4847 | 毛刺台一 |
| 4849 | 去毛刺 | 2008-08-28 | 2008-08-29 | 4848 | 毛刺台一 |
| 4850 | 洗涤 | 2008-08-29 | 2008-08-29 | 4849 | 毛刺台一 |
| 4851 | 检验 | 2008-08-30 | 2008-08-31 | 4850 | 检验 |
| 4852 | 洗涤 | 2008-08-31 | 2008-09-01 | 4851 | 毛刺台一 |
| 4853 | 压入堵头 | 2008-09-01 | 2008-09-01 | 4852 | 立式钻床 |
| 4854 | 修孔 | 2008-09-01 | 2008-09-01 | 4853 | 立式钻床 |
| 4855 | 洗涤 | 2008-09-01 | 2008-09-02 | 4854 | 毛刺台一 |
| 4856 | 单孔滑油冲洗 | 2008-09-02 | 2008-09-02 | 4855 | 试验间 |
| 4857 | 浸泡 | 2008-09-02 | 2008-09-03 | 4856 | 试验间 |
| 4858 | 超声波清洗 | 2008-09-03 | 2008-09-03 | 4857 | 试验间 |
| 4859 | 油气交替冲洗 | 2008-09-03 | 2008-09-03 | 4858 | 试验间 |
| 4860 | 上螺堵 | 2008-09-04 | 2008-09-06 | 4859 | 立式钻床 |
| 4861 | 铣螺堵 | 2008-09-06 | 2008-09-13 | 4860 | 立铣 |
| 4862 | 气密试验 | 2008-09-13 | 2008-09-14 | 4861 | 试验间 |
| 4863 | 研磨平面 | 2008-09-14 | 2008-09-16 | 4862 | 立式钻床 |
| 4864 | 浸泡 | 2008-09-16 | 2008-09-16 | 4863 | 试验间 |
| 4865 | 超声波清洗 | 2008-09-16 | 2008-09-17 | 4864 | 试验间 |
| 4866 | 油气交替冲洗 | 2008-09-17 | 2008-09-17 | 4865 | 试验间 |
| 4867 | 外观检验 | 2008-09-18 | 2008-09-18 | 4866 | 检验 |
| 4868 | 洗涤 | 2008-09-19 | 2008-09-19 | 4867 | 毛刺台一 |
| 4869 | 壳体 | 2008-06-15 | 2008-09-25 |  |  |
| 4870 | 钻扩铰孔 | 2008-06-15 | 2008-06-18 |  | 立式钻床 |
| 4871 | 镗孔 | 2008-06-18 | 2008-06-20 | 4870 | 金刚镗床2A716 |
| 4872 | 铣平面 | 2008-06-20 | 2008-06-20 | 4871 | 四轴卧加 |
| 4873 | 打毛刺 | 2008-06-21 | 2008-06-21 | 4872 | 毛刺台一 |
| 4874 | 气密实验 | 2008-06-21 | 2008-06-22 | 4873 | 试验间 |
| 4875 | 钻孔 | 2008-06-22 | 2008-06-23 | 4874 | 立式钻床 |
| 4876 | 钻孔 | 2008-06-23 | 2008-06-24 | 4875 | 立式钻床 |
| 4877 | 洗涤 | 2008-06-24 | 2008-06-25 | 4876 | 毛刺台一 |
| 4878 | 钻、镗孔、铣面 | 2008-06-25 | 2008-06-27 | 4877 | 一工段四轴卧加 |
| 4879 | 车内孔 | 2008-06-27 | 2008-06-27 | 4878 | 一工段四轴卧加 |
| 4880 | 车内孔和螺纹 | 2008-06-28 | 2008-07-03 | 4879 | 中型普车 |
| 4881 | 钻孔 | 2008-07-03 | 2008-07-04 | 4880 | 立式钻床 |
| 4882 | 钻孔攻螺纹 | 2008-07-04 | 2008-07-04 | 4881 | 立式钻床 |
| 4883 | 镗孔车螺纹 | 2008-07-04 | 2008-07-05 | 4882 | 中型普车 |
| 4884 | 镗孔 | 2008-07-05 | 2008-07-06 | 4883 | 中型普车 |
| 4885 | 划面 | 2008-07-06 | 2008-07-07 | 4884 | 立式钻床 |
| 4886 | 倒角 | 2008-07-07 | 2008-07-07 | 4885 | 立式钻床 |
| 4887 | 去毛刺 | 2008-07-07 | 2008-07-08 | 4886 | 毛刺台一 |
| 4888 | 洗涤 | 2008-07-08 | 2008-07-09 | 4887 | 毛刺台一 |
| 4889 | 钻、镗、铣孔 | 2008-07-09 | 2008-07-09 | 4888 | 一工段四轴卧加 |
| 4890 | 钻孔攻螺纹 | 2008-07-09 | 2008-07-09 | 4889 | 立式钻床 |
| 4891 | 钻孔攻螺纹 | 2008-07-10 | 2008-07-12 | 4890 | 立式钻床 |
| 4892 | 钻孔 | 2008-07-12 | 2008-07-13 | 4891 | 立式钻床 |
| 4893 | 钻孔 | 2008-07-13 | 2008-07-14 | 4892 | 立式钻床 |
| 4894 | 钻孔 | 2008-07-14 | 2008-07-15 | 4893 | 立式钻床 |
| 4895 | 钻孔 | 2008-07-15 | 2008-07-15 | 4894 | 立式钻床 |
| 4896 | 钻孔 | 2008-07-15 | 2008-07-17 | 4895 | 立式钻床 |
| 4897 | 钻孔 | 2008-07-17 | 2008-07-17 | 4896 | 立式钻床 |
| 4898 | 钻孔 | 2008-07-17 | 2008-07-18 | 4897 | 立式钻床 |
| 4899 | 钻孔 | 2008-07-18 | 2008-07-19 | 4898 | 立式钻床 |
| 4900 | 打钢印标记 | 2008-07-19 | 2008-07-20 | 4899 | 毛刺台一 |

| ID | Task | Start | Finish | Predecessors | Complete | Resources |
| --- | --- | --- | --- | --- | --- | --- |
| 4901 | 铣面 | 2008-07-20 | 2008-07-21 | 4900 |  | 立式钻床 |
| 4902 | 铣槽 | 2008-07-21 | 2008-07-21 | 4901 |  | 立式钻床 |
| 4903 | 洗涤 | 2008-07-21 | 2008-07-22 | 4902 |  | 毛刺台一 |
| 4904 | 去毛刺 | 2008-07-22 | 2008-07-22 | 4903 |  | 毛刺台一 |
| 4905 | 洗涤 | 2008-07-22 | 2008-07-23 | 4904 |  | 毛刺台一 |
| 4906 | 电化学去毛刺 | 2008-07-23 | 2008-07-24 | 4905 |  | 毛刺台一 |
| 4907 | 检验 | 2008-07-24 | 2008-07-25 | 4906 |  | 检验 |
| 4908 | 检验 | 2008-07-26 | 2008-07-27 | 4907 |  | 检验 |
| 4909 | 洗涤 | 2008-07-27 | 2008-07-28 | 4908 |  | 毛刺台一 |
| 4910 | 油气交替冲洗 | 2008-07-28 | 2008-07-28 | 4909 |  | 试验间 |
| 4911 | 洗涤 | 2008-07-28 | 2008-07-29 | 4910 |  | 毛刺台一 |
| 4912 | 捅油路 | 2008-07-31 | 2008-07-31 | 4911 |  | 立式钻床 |
| 4913 | 研磨 | 2008-07-31 | 2008-08-01 | 4912 |  | 研磨台 |
| 4914 | 钻铰孔 攻螺纹 | 2008-08-01 | 2008-08-03 | 4913 |  | 立式钻床 |
| 4915 | 钻镗铰孔 | 2008-08-03 | 2008-08-03 | 4914 |  | 坐标镗 |
| 4916 | 铰锥度孔 | 2008-08-04 | 2008-08-04 | 4915 |  | 立式钻床 |
| 4917 | 涂漆 | 2008-08-04 | 2008-08-05 | 4916 |  | 立式钻床 |
| 4918 | 铰孔 攻螺纹 | 2008-08-05 | 2008-08-06 | 4917 |  | 立式钻床 |
| 4919 | 钻孔 攻螺纹 | 2008-08-06 | 2008-08-08 | 4918 |  | 立式钻床 |
| 4920 | 洗涤 | 2008-08-08 | 2008-08-08 | 4919 |  | 毛刺台一 |
| 4921 | 钻镗孔铣面 | 2008-08-08 | 2008-08-11 | 4920 |  | 一工段四轴卧加 |
| 4922 | 钻镗孔铣面 | 2008-08-11 | 2008-08-14 | 4921 |  | 一工段四轴卧加 |
| 4923 | 洗涤 | 2008-08-14 | 2008-08-14 | 4922 |  | 毛刺台一 |
| 4924 | 去毛刺 | 2008-08-14 | 2008-08-15 | 4923 |  | 毛刺台一 |
| 4925 | 研磨 | 2008-08-15 | 2008-08-15 | 4924 |  | 研磨台 |
| 4926 | 洗涤 | 2008-08-15 | 2008-08-16 | 4925 |  | 研磨台 |
| 4927 | 攻螺纹 | 2008-08-16 | 2008-08-17 | 4926 |  | 钳工台 |
| 4928 | 钻铰孔 划槽 | 2008-08-17 | 2008-08-18 | 4927 |  | 立式钻床 |
| 4929 | 镗孔 | 2008-08-18 | 2008-08-19 | 4928 |  | 金刚镗床2A716 |
| 4930 | 镗孔 | 2008-08-19 | 2008-08-20 | 4929 |  | 一工段四轴卧加 |
| 4931 | 钻孔组合 | 2008-08-21 | 2008-08-21 | 4930 |  | 立式钻床 |
| 4932 | 组合铆紧 | 2008-08-21 | 2008-08-22 | 4931 |  | 立式钻床 |
| 4933 | 洗涤 | 2008-08-22 | 2008-08-22 | 4932 |  | 毛刺台一 |
| 4934 | 组合镗孔 | 2008-08-22 | 2008-08-29 | 4933 |  | 坐标镗 |
| 4935 | 车内孔和 螺纹 | 2008-08-29 | 2008-09-01 | 4934 |  | 中型普车 |
| 4936 | 镗孔 | 2008-09-01 | 2008-09-02 | 4935 |  | 金刚镗床2A716 |
| 4937 | 镗孔 | 2008-09-02 | 2008-09-03 | 4936 |  | 金刚镗床2A716 |
| 4938 | 洗涤 | 2008-09-03 | 2008-09-03 | 4937 |  | 毛刺台一 |
| 4939 | 去毛刺 | 2008-09-03 | 2008-09-04 | 4938 |  | 毛刺台一 |
| 4940 | 洗涤 | 2008-09-04 | 2008-09-04 | 4939 |  | 毛刺台一 |
| 4941 | 检验 | 2008-09-05 | 2008-09-05 | 4940 |  | 检验 |
| 4942 | 洗涤 | 2008-09-06 | 2008-09-06 | 4941 |  | 毛刺台一 |
| 4943 | 压入堵头 | 2008-09-06 | 2008-09-07 | 4942 |  | 立式钻床 |
| 4944 | 修孔 | 2008-09-07 | 2008-09-07 | 4943 |  | 立式钻床 |
| 4945 | 洗涤 | 2008-09-07 | 2008-09-08 | 4944 |  | 毛刺台一 |
| 4946 | 单孔滑油冲洗 | 2008-09-08 | 2008-09-08 | 4945 |  | 试验间 |
| 4947 | 浸泡 | 2008-09-08 | 2008-09-09 | 4946 |  | 试验间 |
| 4948 | 超声波清洗 | 2008-09-09 | 2008-09-09 | 4947 |  | 试验间 |
| 4949 | 油气交替冲洗 | 2008-09-09 | 2008-09-09 | 4948 |  | 试验间 |
| 4950 | 上螺堵 | 2008-09-10 | 2008-09-12 | 4949 |  | 立式钻床 |
| 4951 | 铣螺堵 | 2008-09-12 | 2008-09-19 | 4950 |  | 立铣 |
| 4952 | 气密试验 | 2008-09-19 | 2008-09-19 | 4951 |  | 试验间 |
| 4953 | 研磨平面 | 2008-09-19 | 2008-09-22 | 4952 |  | 立式钻床 |
| 4954 | 浸泡 | 2008-09-22 | 2008-09-22 | 4953 |  | 试验间 |
| 4955 | 超声波清洗 | 2008-09-22 | 2008-09-23 | 4954 |  | 试验间 |
| 4956 | 油气交替冲洗 | 2008-09-23 | 2008-09-23 | 4955 |  | 试验间 |
| 4957 | 外观检验 | 2008-09-24 | 2008-09-24 | 4956 |  | 检验 |
| 4958 | 洗涤 | 2008-09-25 | 2008-09-25 | 4957 |  | 毛刺台一 |
| 4959 | 修正器壳体及其组件 | 2008-03-25 | 2008-06-24 |  |  |  |
| 4960 | 检验 | 2008-06-15 | 2008-06-16 |  |  | 检验 |
| 4961 | 已完成任务 | 2008-03-25 | 2008-03-25 | 4960 | 100% |  |
| 4962 | 压套 | 2008-06-15 | 2008-06-15 | 4961 |  | 立式钻床 [99.94%] |
| 4963 | 已完成任务 | 2008-04-10 | 2008-04-10 | 4962 | 100% |  |
| 4964 | 试验 | 2008-06-15 | 2008-06-15 | 4963 |  | 试验间 |
| 4965 | 镗孔 | 2008-06-16 | 2008-06-16 | 4964 |  | 金刚镗床2A716 |
| 4966 | 洗涤 | 2008-06-16 | 2008-06-17 | 4965 |  | 毛刺台一 |
| 4967 | 去毛刺 | 2008-06-17 | 2008-06-18 | 4966 |  | 毛刺台一 |
| 4968 | 洗涤 | 2008-06-18 | 2008-06-18 | 4967 |  | 毛刺台一 |
| 4969 | 镗孔 | 2008-06-18 | 2008-06-20 | 4968 |  | 金刚镗床2A716 |
| 4970 | 攻螺纹 | 2008-06-20 | 2008-06-20 | 4969 |  | 立式钻床 [99.75%] |

| ID | Task | Start | Finish | Predecessors | Resources |
| --- | --- | --- | --- | --- | --- |
| 4971 | 去毛刺 | 2008-06-20 | 2008-06-21 | 4970 | 毛刺台一 |
| 4972 | 研磨平面 | 2008-06-21 | 2008-06-22 | 4971 | 研磨台 |
| 4973 | 超声清洗 | 2008-06-22 | 2008-06-23 | 4972 | 试验间 |
| 4974 | 检验 | 2008-06-23 | 2008-06-23 | 4973 | 检验 |
| 4975 | 洗涤 | 2008-06-24 | 2008-06-24 | 4974 | 毛刺台一 |
| 4976 | 修正器壳体 | 2008-06-15 | 2008-08-08 |  |  |
| 4977 | 铣槽 | 2008-06-15 | 2008-06-16 |  | 立铣 [100.08%] |
| 4978 | 划窝 | 2008-06-16 | 2008-06-17 | 4977 | 立式钻床 |
| 4979 | 钻孔 攻丝 | 2008-06-17 | 2008-06-19 | 4978 | 立式钻床 |
| 4980 | 钻孔 攻丝 | 2008-06-19 | 2008-06-21 | 4979 | 立式钻床 |
| 4981 | 钻孔 攻丝 | 2008-06-22 | 2008-06-24 | 4980 | 立式钻床 |
| 4982 | 钻孔 攻丝 | 2008-06-24 | 2008-06-26 | 4981 | 立式钻床 |
| 4983 | 铣平面 | 2008-06-26 | 2008-06-27 | 4982 | 立铣 |
| 4984 | 铣凸耳面 | 2008-06-27 | 2008-06-28 | 4983 | 立铣 [125%] |
| 4985 | 铣凸耳面 | 2008-06-28 | 2008-06-30 | 4984 | 立铣 |
| 4986 | 铣型面 | 2008-06-30 | 2008-06-30 | 4985 | 双头仿型铣 |
| 4987 | 铣平面 | 2008-07-01 | 2008-07-02 | 4986 | 立铣 |
| 4988 | 铣凸耳面 | 2008-07-02 | 2008-07-02 | 4987 | 立铣 [100.11%] |
| 4989 | 铣平面 | 2008-07-02 | 2008-07-03 | 4988 | 工具铣床 |
| 4990 | 铣平面 | 2008-07-03 | 2008-07-04 | 4989 | 双头仿型铣 |
| 4991 | 铣平面 | 2008-07-04 | 2008-07-04 | 4990 | 立铣 |
| 4992 | 铣斜面 | 2008-07-04 | 2008-07-05 | 4991 | 工具铣床 |
| 4993 | 铣平面 | 2008-07-05 | 2008-07-06 | 4992 | 工具铣床 |
| 4994 | 打号 | 2008-07-06 | 2008-07-07 | 4993 | 毛刺台一 |
| 4995 | 洗涤 | 2008-07-07 | 2008-07-07 | 4994 | 毛刺台一 |
| 4996 | 去毛刺 | 2008-07-07 | 2008-07-08 | 4995 | 毛刺台一 |
| 4997 | 洗涤 | 2008-07-08 | 2008-07-09 | 4996 | 毛刺台一 |
| 4998 | 检验 | 2008-07-09 | 2008-07-10 | 4997 | 检验 |
| 4999 | 洗涤 | 2008-07-10 | 2008-07-10 | 4998 | 毛刺台一 |
| 5000 | 字上涂漆 | 2008-07-12 | 2008-07-12 | 4999 | 钳工台 |
| 5001 | 铣平面 | 2008-07-12 | 2008-07-14 | 5000 | 立铣 |
| 5002 | 铣平面 | 2008-07-14 | 2008-07-15 | 5001 | 立铣 |
| 5003 | 铣平面 | 2008-07-15 | 2008-07-16 | 5002 | 立铣 |
| 5004 | 铣平面 | 2008-07-16 | 2008-07-18 | 5003 | 立铣 |
| 5005 | 镗销子孔 | 2008-07-18 | 2008-07-22 | 5004 | 金刚镗床2A716 |
| 5006 | 划底孔 | 2008-07-22 | 2008-07-22 | 5005 | 立式钻床 [99.93%] |
| 5007 | 镗孔 | 2008-07-22 | 2008-07-24 | 5006 | 金刚镗床2A716 |
| 5008 | 镗孔 | 2008-07-24 | 2008-07-25 | 5007 | 金刚镗床2A716 |
| 5009 | 镗孔 | 2008-07-25 | 2008-07-26 | 5008 | 金刚镗床2A716 |
| 5010 | 镗孔 | 2008-07-26 | 2008-07-27 | 5009 | 金刚镗床2A716 |
| 5011 | 镗孔 | 2008-07-27 | 2008-07-31 | 5010 | 金刚镗床2A716 |
| 5012 | 钻孔 攻丝 | 2008-07-31 | 2008-08-01 | 5011 | 立式钻床 |
| 5013 | 钻孔 攻丝 | 2008-08-01 | 2008-08-04 | 5012 | 立式钻床 |
| 5014 | 洗涤 | 2008-08-04 | 2008-08-05 | 5013 | 毛刺台一 |
| 5015 | 去毛刺 | 2008-08-05 | 2008-08-06 | 5014 | 毛刺台一 |
| 5016 | 洗涤 | 2008-08-06 | 2008-08-06 | 5015 | 毛刺台一 |
| 5017 | 检验 | 2008-08-06 | 2008-08-07 | 5016 | 检验 |
| 5018 | 洗涤 | 2008-08-07 | 2008-08-08 | 5017 | 毛刺台一 |
| 5019 | 修正器壳体 | 2008-06-15 | 2008-07-18 |  |  |
| 5020 | 铣平面 | 2008-06-15 | 2008-06-15 |  | 工具铣床 [100.06%] |
| 5021 | 打号 | 2008-06-15 | 2008-06-16 | 5020 | 毛刺台一 |
| 5022 | 洗涤 | 2008-06-16 | 2008-06-17 | 5021 | 毛刺台一 |
| 5023 | 去毛刺 | 2008-06-17 | 2008-06-17 | 5022 | 毛刺台一 |
| 5024 | 洗涤 | 2008-06-17 | 2008-06-18 | 5023 | 毛刺台一 |
| 5025 | 检验 | 2008-06-18 | 2008-06-19 | 5024 | 检验 |
| 5026 | 洗涤 | 2008-06-19 | 2008-06-20 | 5025 | 毛刺台一 |
| 5027 | 字上涂漆 | 2008-06-21 | 2008-06-22 | 5026 | 钳工台 |
| 5028 | 铣平面 | 2008-06-22 | 2008-06-23 | 5027 | 立铣 |
| 5029 | 铣平面 | 2008-06-23 | 2008-06-25 | 5028 | 立铣 |
| 5030 | 铣平面 | 2008-06-25 | 2008-06-26 | 5029 | 立铣 |
| 5031 | 铣平面 | 2008-06-26 | 2008-06-27 | 5030 | 立铣 |
| 5032 | 镗销子孔 | 2008-06-27 | 2008-07-01 | 5031 | 金刚镗床2A716 |
| 5033 | 划底孔 | 2008-07-01 | 2008-07-02 | 5032 | 立式钻床 |
| 5034 | 镗孔 | 2008-07-02 | 2008-07-03 | 5033 | 金刚镗床2A716 [100.26%] |
| 5035 | 镗孔 | 2008-07-03 | 2008-07-04 | 5034 | 金刚镗床2A716 |
| 5036 | 镗孔 | 2008-07-04 | 2008-07-05 | 5035 | 金刚镗床2A716 |
| 5037 | 镗孔 | 2008-07-05 | 2008-07-06 | 5036 | 金刚镗床2A716 |
| 5038 | 镗孔 | 2008-07-06 | 2008-07-10 | 5037 | 金刚镗床2A716 |
| 5039 | 钻孔 攻丝 | 2008-07-10 | 2008-07-11 | 5038 | 立式钻床 [100.69%] |
| 5040 | 钻孔 攻丝 | 2008-07-11 | 2008-07-14 | 5039 | 立式钻床 [100.26%] |

| ID | Task | Start | Finish | Predecessors | Resources |
| --- | --- | --- | --- | --- | --- |
| 5041 | 洗涤 | 2008-07-14 | 2008-07-15 | 5040 | 毛刺台一 |
| 5042 | 去毛刺 | 2008-07-15 | 2008-07-16 | 5041 | 毛刺台一 |
| 5043 | 洗涤 | 2008-07-16 | 2008-07-16 | 5042 | 毛刺台一 |
| 5044 | 检验 | 2008-07-16 | 2008-07-17 | 5043 | 检验 |
| 5045 | 洗涤 | 2008-07-17 | 2008-07-18 | 5044 | 毛刺台一 |
