# Projectplan_iBrams5.xml

Schedule from MS Project XML, 2009-06-02 to 2009-08-07.
iBrams

## Calendars

- Standard: Mon-Fri 08:00-12:00, 13:00-17:00; Sat-Sun off.

## Resources

| Resource |
| --- |
| Robert Gies |
| Daniel Kreuer |
| David Weichert |
| Eva Lenz |
| Oliver Philippsen |

## Schedule

| ID | WBS | Task | Duration | Start | Finish | Predecessors | Total slack | Free slack | Constraint | Resources | Work |
| --- | --- | --- | --- | --- | --- | --- | --- | --- | --- | --- | --- |
| 1 | 1 | **iBrams 5** | 49d | 2009-06-02 | 2009-08-07 |  | 0d |  |  |  | 888h |
| 2 | 1.1 | Main Konzept iBrams V5 | 9d | 2009-06-02 | 2009-06-12 |  | 40d |  | start no earlier than 2009-06-02 | Robert Gies | 72h |
| 3 | 1.2 | Deployment ToolChain SVN | 8d | 2009-06-02 | 2009-06-11 |  | 41d |  | start no earlier than 2009-06-02 | Daniel Kreuer; David Weichert; Eva Lenz | 192h |
| 4 | 1.3 | **Development Basics** | 4d | 2009-06-02 | 2009-06-05 |  | 1d | 0d |  |  | 64h |
| 5 | 1.3.1 | Development VM | 2d | 2009-06-02 | 2009-06-03 |  | 3d |  | start no earlier than 2009-06-02 | Robert Gies | 16h |
| 6 | 1.3.2 | Define Coding Styles | 2d | 2009-06-02 | 2009-06-03 |  | 1d | 0d | start no earlier than 2009-06-02 | Daniel Kreuer | 16h |
| 7 | 1.3.3 | CodeSniffer Commit Hook | 1d | 2009-06-04 | 2009-06-04 | 6 | 2d |  | start no earlier than 2009-06-04 | David Weichert | 8h |
| 8 | 1.3.4 | Implement Redmine | 1d | 2009-06-04 | 2009-06-04 | 6 | 1d |  | start no earlier than 2009-06-04 | Daniel Kreuer; Oliver Philippsen | 16h |
| 9 | 1.3.5 | SVN Commit Form | 1d | 2009-06-05 | 2009-06-05 | 8 | 1d |  | start no earlier than 2009-06-05 | Daniel Kreuer | 8h |
| 10 | 1.4 | **Codemerge V4.5 -> V5** | 15d | 2009-06-08 | 2009-06-26 | 4 | 0d |  |  |  | 336h |
| 11 | 1.4.1 | Code V4.5 nach V5 migrieren | 10d | 2009-06-08 | 2009-06-19 |  | 1d |  | start no earlier than 2009-06-08 | Daniel Kreuer; David Weichert; Robert Gies | 240h |
| 12 | 1.4.2 | Anpassungen Code an V5 | 4d | 2009-06-23 | 2009-06-26 | 11 | 0d |  | start no earlier than 2009-06-23 | David Weichert; Oliver Philippsen; Robert Gies | 96h |
| 13 | 1.5 | **Refactoring V5** | 7d | 2009-06-29 | 2009-07-07 | 10 | 0d |  |  |  | 192h |
| 14 | 1.5.1 | API non Static | 2d | 2009-06-29 | 2009-06-30 |  | 5d |  | start no earlier than 2009-06-29 | Robert Gies | 16h |
| 15 | 1.5.2 | ZEND Framework update 1.8.2 | 1d | 2009-06-29 | 2009-06-29 |  | 0d |  | start no earlier than 2009-06-29 | Daniel Kreuer | 8h |
| 16 | 1.5.3 | Migration auf PHP 5.3 | 1d | 2009-06-30 | 2009-06-30 | 15 | 0d |  | start no earlier than 2009-06-30 | Daniel Kreuer | 8h |
| 17 | 1.5.4 | Tests implementieren | 5d | 2009-07-01 | 2009-07-07 | 16 | 0d |  | start no earlier than 2009-07-01 | Daniel Kreuer; David Weichert; Oliver Philippsen; Robert Gies | 160h |
| 18 | 1.6 | **Template Engine** | 2d | 2009-07-08 | 2009-07-09 | 13 | 0d |  |  |  | 32h |
| 19 | 1.6.1 | phpTAL Version Upgrade | 2d | 2009-07-08 | 2009-07-09 |  | 0d |  | start no earlier than 2009-07-08 | Daniel Kreuer; Robert Gies | 32h |
| 20 | 1.6.2 | Implement Dojo Controls | 1d | 2009-07-08 | 2009-07-08 |  | 1d |  | start no earlier than 2009-07-08 |  |  |
| 21 | 1.6.3 | Finished Validators | 1d | 2009-07-08 | 2009-07-08 |  | 1d |  | start no earlier than 2009-07-08 |  |  |
| 22 | 1.7 | **Datenbank Modell** | 13d | 2009-07-10 | 2009-07-28 | 18 | 0d |  |  |  |  |
| 23 | 1.7.1 | Evaluierung | 4d | 2009-07-10 | 2009-07-15 |  | 0d |  | start no earlier than 2009-07-10 |  |  |
| 24 | 1.7.2 | Konzeption | 7d | 2009-07-16 | 2009-07-24 | 23 | 0d |  | start no earlier than 2009-07-16 |  |  |
| 25 | 1.7.3 | Analyse ZendDB | 1d | 2009-07-27 | 2009-07-27 | 24 | 0d |  | start no earlier than 2009-07-27 |  |  |
| 26 | 1.7.4 | ZendDB Individualisieren | 1d | 2009-07-28 | 2009-07-28 | 25 | 0d |  | start no earlier than 2009-07-28 |  |  |

Notes:
- 6: Dokumentation der Coding Styles anpassen, überarbeiten / Zentral ablegen (WIKI, ...)
- 14: ObjectManager remove static support
- 15: iBrams5_Soap Abstraktion
- 23: RG V5 ShowCase / Flow 3 / Doctrine / CouchDB / ZendDB / AdoDB / JavaBackend (Swoodoo)

| ID | WBS | Task | Duration | Start | Finish | Predecessors | Total slack | Constraint |
| --- | --- | --- | --- | --- | --- | --- | --- | --- |
| 27 | 1.8 | **Workflow Modul** | 6d | 2009-07-29 | 2009-08-05 | 22 | 0d |  |
| 28 | 1.8.1 | Konzeption | 1d | 2009-07-29 | 2009-07-29 |  | 0d | start no earlier than 2009-07-29 |
| 29 | 1.8.2 | Prototyping | 1d | 2009-07-30 | 2009-07-30 | 28 | 0d | start no earlier than 2009-07-30 |
| 30 | 1.8.3 | Evaluierung | 1d | 2009-07-31 | 2009-07-31 | 29 | 0d | start no earlier than 2009-07-31 |
| 31 | 1.8.4 | Implementation | 1d | 2009-08-03 | 2009-08-03 | 30 | 0d | start no earlier than 2009-08-03 |
| 32 | 1.8.5 | Test | 1d | 2009-08-04 | 2009-08-04 | 31 | 0d | start no earlier than 2009-08-04 |
| 33 | 1.8.6 | Dokumentation | 1d | 2009-08-05 | 2009-08-05 | 32 | 0d | start no earlier than 2009-08-05 |
| 34 | 1.9 | **CMS** | 1d | 2009-08-06 | 2009-08-06 | 27 | 0d |  |
| 35 | 1.9.1 | Konzeption | 1d | 2009-08-06 | 2009-08-06 |  | 0d | start no earlier than 2009-08-06 |
| 36 | 1.10 | **Projekt Planungstool** | 1d | 2009-08-07 | 2009-08-07 | 34 | 0d |  |
| 37 | 1.10.1 | Konzeption | 1d | 2009-08-07 | 2009-08-07 |  | 0d | start no earlier than 2009-08-07 |
