Schedule from MS Project XML, 2004-01-01 to 2004-07-22, A marks actual dates.

## Resources

| Resource |
| --- |
| 混凝土承包商 |
| 精细木工承包商 |
| 围栏承包商 |
| 砖石工程承包商 |
| 总承包商 |
| 建筑师 |
| 业主 |
| 抵押贷款放款人 |
| 检查人员 |
| 电气公司 |
| 场地挖掘承包商 |
| 电气承包商 |
| 管道工程承包商 |
| 框架工程承包商 |
| 屋顶工程承包商 |
| 取暖和空调承包商 |
| 保温承包商 |
| 干饰面内墙承包商 |
| 油漆承包商 |
| 地板承包商 |
| 器具承包商 |
| 绿化承包商 |
| 家政服务 |

## Schedule

| ID | Task | Start | Finish | Predecessors | Complete | Resources |
| --- | --- | --- | --- | --- | --- | --- |
| 1 | 住宅建设 | 2004-01-01 | 2004-07-22 |  |  |  |
| 2 | 单户住宅: 建筑师设计(280 平方米，并带有完整地下室) | 2004-01-01 | 2004-07-22 |  |  |  |
| 3 | 一般要求 | 2004-01-01 | 2004-01-29 |  |  |  |
| 4 | 最终确定计划并与业主和建筑师一起确定估计值 | 2004-01-01 A | 2004-01-28 A |  | 50% | 总承包商 [50%]; 建筑师 [50%]; 业主 [12.08%]; 抵押贷款放款人 [12.08%] |
| 5 | 签定合同和通知以继续进行 | 2004-01-29 | 2004-01-29 | 4 |  | 总承包商; 建筑师; 业主; 抵押贷款放款人 |
| 6 | 申请许可 | 2004-01-29 | 2004-01-29 |  |  |  |
| 7 | 获得地基许可 | 2004-01-29 | 2004-01-29 | 5 |  | 总承包商 |
| 8 | 获得框架许可 | 2004-01-29 | 2004-01-29 | 5 |  | 总承包商 |
| 9 | 获得电气许可 | 2004-01-29 | 2004-01-29 | 5 |  | 总承包商 |
| 10 | 获得管道许可 | 2004-01-29 | 2004-01-29 | 5 |  | 总承包商 |
| 11 | 获得取暖、通风和空调许可 | 2004-01-29 | 2004-01-29 | 5 |  | 总承包商 |
| 12 | 获得其他许可 | 2004-01-29 | 2004-01-29 | 5 |  | 总承包商 |
| 13 | 现场工作 | 2004-01-30 | 2004-02-03 |  |  |  |
| 14 | 清理和挖掘场地 | 2004-01-30 | 2004-01-30 | 7, 8, 9, 10, 12, 11 |  | 场地挖掘承包商 |
| 15 | 安装临时供电设施 | 2004-02-02 | 2004-02-02 | 14 |  | 电气公司 |
| 16 | 安装地下设施 | 2004-02-03 | 2004-02-03 | 15 |  | 电气承包商; 管道工程承包商 |
| 17 | 地基 | 2004-02-04 | 2004-03-24 |  |  |  |
| 18 | 挖掘地基 | 2004-02-04 | 2004-02-06 | 16 |  | 场地挖掘承包商 |
| 19 | 为地下室墙搭建模板 | 2004-02-09 | 2004-02-13 | 18 |  | 混凝土承包商 |
| 20 | 为地基和地下室墙浇筑混凝土 | 2004-02-16 | 2004-02-24 | 19 | 100% | 混凝土承包商 |
| 21 | 对地下室墙进行 7 天硬化 | 2004-03-04 | 2004-03-09 | 20 | 50% |  |
| 22 | 拆除地下室墙的模板 | 2004-03-09 | 2004-03-11 | 21 |  | 混凝土承包商 |
| 23 | 对地下室墙进行防水和保温处理 | 2004-03-12 | 2004-03-15 | 22 |  | 混凝土承包商 |
| 24 | 进行地基检查 | 2004-03-16 | 2004-03-16 | 23, 18 |  | 检查人员 |
| 25 | 回填地基 | 2004-03-22 | 2004-03-24 | 24 |  | 场地挖掘承包商 |
| 26 | 搭建框架 | 2004-03-24 | 2004-04-23 |  |  |  |
| 27 | 安装第一层楼板托梁 | 2004-03-24 | 2004-03-26 | 25 |  | 框架工程承包商 |
| 28 | 安装第一层楼板 | 2004-03-26 | 2004-03-30 | 27 |  | 框架工程承包商 |
| 29 | 搭建第一层墙壁的框架 | 2004-03-30 | 2004-04-05 | 28 |  | 框架工程承包商 |
| 30 | 搭建第一层转角的框架 | 2004-04-05 | 2004-04-06 | 29 |  | 框架工程承包商 |
| 31 | 安装第二层楼板托梁 | 2004-04-06 | 2004-04-08 | 30 |  | 框架工程承包商 |
| 32 | 安装第二层楼板 | 2004-04-08 | 2004-04-12 | 31 |  | 框架工程承包商 |
| 33 | 搭建第二层墙壁的框架 | 2004-04-12 | 2004-04-15 | 32 |  | 框架工程承包商 |
| 34 | 搭建第二层转角的框架 | 2004-04-15 | 2004-04-19 | 33 |  | 框架工程承包商 |
| 35 | 完成屋顶框架的搭建 | 2004-04-19 | 2004-04-22 | 34 |  | 框架工程承包商 |
| 36 | 进行框架检查 | 2004-04-22 | 2004-04-23 | 35 |  | 检查人员 |
| 37 | 干燥内部 | 2004-04-22 | 2004-05-24 |  |  |  |
| 38 | 安装第一层模板 | 2004-04-23 | 2004-04-28 | 36 |  | 框架工程承包商 |
| 39 | 安装第二层模板 | 2004-04-28 | 2004-05-03 | 38 |  | 框架工程承包商 |
| 40 | 安装屋顶盖板 | 2004-04-22 | 2004-04-27 | 35 |  | 框架工程承包商 |
| 41 | 安装油毡、遮雨板和砾石 | 2004-05-10 | 2004-05-13 | 49 |  | 屋顶工程承包商 |
| 42 | 安装第一层的户门 | 2004-05-13 | 2004-05-14 | 41 |  | 框架工程承包商 |
| 43 | 安装第一层的窗户 | 2004-05-14 | 2004-05-19 | 42 |  | 框架工程承包商 |
| 44 | 安装第二层的窗户 | 2004-05-19 | 2004-05-24 | 43 |  | 框架工程承包商 |
| 45 | 外部完成 | 2004-05-24 | 2004-06-18 |  |  |  |
| 46 | 完成外部砖墙 | 2004-05-24 | 2004-06-15 | 44 |  | 砖石工程承包商 |
| 47 | 完成外部侧线 | 2004-06-15 | 2004-06-18 | 46 |  | 框架工程承包商 |
| 48 | 工具 Rough-Ins 及完成混凝土浇注 | 2004-04-27 | 2004-05-26 |  |  |  |
| 49 | 安装管道 | 2004-05-03 | 2004-05-10 | 40, 39 |  | 管道工程承包商 |
| 50 | 对安装的管道进行检查 | 2004-05-10 | 2004-05-11 | 49 |  | 检查人员 |
| 51 | 为地下室地面浇筑混凝土 | 2004-05-11 | 2004-05-26 | 50 |  | 混凝土承包商 |
| 52 | 安装电气设备 | 2004-05-03 | 2004-05-10 | 40, 39 |  | 电气承包商 |
| 53 | 对安装的电气设备进行检查 | 2004-05-10 | 2004-05-11 | 52 |  | 检查人员 |
| 54 | 安装取暖、通风和空调设备 | 2004-05-11 | 2004-05-14 | 53 |  | 取暖和空调承包商 |
| 55 | 对安装的取暖、通风和空调设备进行检查 | 2004-05-14 | 2004-05-17 | 54 |  | 检查人员 |
| 56 | 安装通讯设备(电话、电缆、计算机和报警设备等) | 2004-04-27 | 2004-04-29 | 40 |  | 电气承包商 |
| 57 | 完成内部工作 | 2004-05-24 | 2004-07-05 |  |  |  |
| 58 | 保温 | 2004-05-24 | 2004-06-08 |  |  |  |
| 59 | 安装墙壁保温材料: 一层 | 2004-05-24 | 2004-05-25 | 38, 44, 56, 54, 52, 39 |  | 保温承包商 |
| 60 | 安装墙壁保温材料: 二层 | 2004-05-25 | 2004-05-26 | 59 |  | 保温承包商 |
| 61 | 安装屋顶保温材料: 二层 | 2004-06-04 | 2004-06-07 | 67, 60 |  | 保温承包商 |
| 62 | 进行保温检查 | 2004-06-07 | 2004-06-08 | 61 |  | 检查人员 |
| 63 | 干饰面内墙 | 2004-05-25 | 2004-06-07 |  |  |  |
| 64 | 安装干饰面内墙: 一层墙壁 | 2004-05-25 | 2004-05-27 | 59 |  | 干饰面内墙承包商 |
| 65 | 安装干饰面内墙: 一层天花板 | 2004-05-27 | 2004-05-31 | 64 |  | 干饰面内墙承包商 |
| 66 | 安装干饰面内墙: 二层墙壁 | 2004-05-31 | 2004-06-02 | 65, 60 |  | 干饰面内墙承包商 |
| 67 | 安装干饰面内墙: 二层天花板 | 2004-06-02 | 2004-06-04 | 66 |  | 干饰面内墙承包商 |
| 68 | 测量并抹平一层的干饰面内墙 | 2004-05-31 | 2004-06-01 | 65 |  | 干饰面内墙承包商 |
| 69 | 测量并抹平二层的干饰面内墙 | 2004-06-04 | 2004-06-07 | 67, 68 |  | 干饰面内墙承包商 |
| 70 | 刷油漆及贴墙纸 | 2004-06-01 | 2004-06-24 |  |  |  |

| ID | Task | Start | Finish | Predecessors | Complete | Resources |
| --- | --- | --- | --- | --- | --- | --- |
| 71 | 为一层除了入口和厨房以外的所有部分添加表面纹理 | 2004-06-01 | 2004-06-02 | 68 |  | 油漆承包商 |
| 72 | 为一层除了入口和厨房以外的所有部分刷油漆 | 2004-06-02 | 2004-06-03 | 71 |  | 油漆承包商 |
| 73 | 为一层的入口和厨房贴墙纸 | 2004-06-03 | 2004-06-04 | 72 |  | 油漆承包商 |
| 74 | 为二层的所有部分添加表面纹理 | 2004-06-02 | 2004-06-03 | 71 |  | 油漆承包商 |
| 75 | 为二层的所有部分刷油漆 | 2004-06-03 | 2004-06-04 | 74 |  | 油漆承包商 |
| 76 | 油漆外部侧线和装饰物 | 2004-06-18 | 2004-06-24 | 47 |  | 油漆承包商 |
| 77 | 橱柜 | 2004-06-04 | 2004-06-14 |  |  |  |
| 78 | 一层安装: 厨房橱柜 | 2004-06-04 | 2004-06-08 | 73 | 25% | 精细木工承包商 |
| 79 | 一层安装: 主卫生间和客人用卫生间橱柜 | 2004-06-08 | 2004-06-09 | 78 |  | 精细木工承包商 |
| 80 | 二层安装: 主卫生间和私人卫生间橱柜 | 2004-06-09 | 2004-06-10 | 79 |  | 精细木工承包商 |
| 81 | 安装护墙板、装饰线和装饰物 | 2004-06-10 | 2004-06-14 | 80 | 75% | 精细木工承包商 |
| 82 | 完成管道安装 | 2004-06-08 | 2004-06-16 |  |  |  |
| 83 | 完成一层: 厨房管道 | 2004-06-08 | 2004-06-09 | 78, 50 |  | 管道工程承包商 |
| 84 | 完成一层: 主卫生间和客人用卫生间管道 | 2004-06-09 | 2004-06-11 | 83, 79 |  | 管道工程承包商 |
| 85 | 完成二层: 主卫生间和私人卫生间管道 | 2004-06-11 | 2004-06-15 | 84, 80 |  | 管道工程承包商 |
| 86 | 进行管道安装完成后的检查 | 2004-06-15 | 2004-06-16 | 85 |  | 检查人员 |
| 87 | 完成电气安装 | 2004-06-15 | 2004-06-18 |  |  |  |
| 88 | 完成一层与维护面板间的电路 | 2004-06-15 | 2004-06-16 | 85, 53 |  | 电气承包商 |
| 89 | 完成二层与维护面板间的电路 | 2004-06-16 | 2004-06-17 | 88 |  | 电气承包商 |
| 90 | 进行电气安装完成后的检查 | 2004-06-17 | 2004-06-18 | 89 |  | 检查人员 |
| 91 | 完成通讯系统的布线(包括电话、电缆、计算机和报警系统等) | 2004-06-16 | 2004-06-18 | 86 |  | 电气承包商 |
| 92 | 完成取暖、通风和空调系统的安装 | 2004-06-18 | 2004-06-23 |  |  |  |
| 93 | 完成一层安装: 区域 1 的取暖、通风和空调系统 | 2004-06-18 | 2004-06-21 | 91, 55 |  | 取暖和空调承包商 |
| 94 | 完成二层安装: 区域 2 的取暖、通风和空调系统 | 2004-06-21 | 2004-06-22 | 93 |  | 取暖和空调承包商 |
| 95 | 对取暖、通风和空调系统进行检查 | 2004-06-22 | 2004-06-23 | 94 |  | 检查人员 |
| 96 | 地毯、磁砖和器具 | 2004-06-23 | 2004-07-05 |  |  |  |
| 97 | 入口、厨房和卫生间 | 2004-06-23 | 2004-06-28 | 90, 95 |  | 地板承包商 |
| 98 | 铺一层的地毯 | 2004-06-28 | 2004-06-30 | 97 |  | 地板承包商 |
| 99 | 铺二层的地毯 | 2004-06-30 | 2004-07-02 | 98 |  | 地板承包商 |
| 100 | 安装器具 | 2004-07-02 | 2004-07-05 | 99 |  | 器具承包商 |
| 101 | 绿化和土方工作 | 2004-06-24 | 2004-07-12 |  |  |  |
| 102 | 浇注混凝土车道和人行道 | 2004-06-24 | 2004-06-28 | 76 |  | 混凝土承包商 |
| 103 | 安装后院围栏 | 2004-07-05 | 2004-07-07 | 100, 102 |  | 围栏承包商 |
| 104 | 铺草皮和完成绿化工作: 前院 | 2004-07-07 | 2004-07-09 | 103 |  | 绿化承包商 |
| 105 | 铺草皮和完成绿化工作: 后院 | 2004-07-09 | 2004-07-12 | 104 |  | 绿化承包商 |
| 106 | 最终认可 | 2004-07-12 | 2004-07-22 |  |  |  |
| 107 | 为获得居住许可进行最后的检查 | 2004-07-12 | 2004-07-13 | 105, 95, 90, 86, 62, 81, 51 |  | 检查人员 |
| 108 | 进行清理以便入住 | 2004-07-13 | 2004-07-14 | 100, 107 |  | 家政服务 |
| 109 | 进行最后的浏览检查 | 2004-07-14 | 2004-07-15 | 108 |  | 业主 |
| 110 | 完成逐项检查清单 | 2004-07-15 | 2004-07-22 | 109 |  | 总承包商 |
